# Rembrandt1.5Schedule_04-26-2006

Schedule from MS Project, 2006-06-05 to 2006-11-24, A marks actual dates.
SAIC

## Calendars

- Standard: Mon-Fri 08:00-12:00, 13:00-17:00; Sat-Sun off.

## Resources

| Resource |
| --- |
| JiangHo |
| GuruswamiS |
| SahniH |
| ZhangD |
| BhatturR |
| MadhavaS |
| LiuH |
| LandyR |
| RossoK |
| HarrisMA |
| LongY |
| BasuA |
| ChenHA |

## Schedule

| ID | WBS | Task | Type | Duration | Start | Finish | Predecessors | Complete | Remaining | Baseline start | Baseline finish | Baseline duration | Total slack | Constraint | Resources | Work | Actual work | Text1 |
| --- | --- | --- | --- | --- | --- | --- | --- | --- | --- | --- | --- | --- | --- | --- | --- | --- | --- | --- |
| 1 | 1 | **Rembrandt 1.5 Release** |  | 124.5d | 2006-06-05 A | 2006-11-24 |  | 30% | 87.02d | 2006-06-05 | 2006-10-25 | 103d | 0d |  |  | 3084h | 907.2h |  |
| 2 | 1.1 | **Rembrandt 1.5 Bug Fixes/ Feature Enchacements** |  | 124.5d | 2006-06-05 A | 2006-11-24 |  | 30% | 87.02d | 2006-06-05 | 2006-10-25 | 103d | 0d |  |  | 3084h | 907.2h |  |
| 3 | 1.1.1 | **Project Management and Control** |  | 80d | 2006-06-07 | 2006-09-26 |  |  |  | 2006-06-07 | 2006-09-26 | 80d | 42.5d |  |  | 1280h |  |  |
| 4 | 1.1.1.1 | Project Management |  | 80d | 2006-06-07 | 2006-09-26 |  |  |  | 2006-06-07 | 2006-09-26 | 80d | 22.5d | start no earlier than 2006-06-07 | GuruswamiS | 640h |  |  |
| 5 | 1.1.1.2 | Project Control |  | 80d | 2006-06-07 | 2006-09-26 |  |  |  | 2006-06-07 | 2006-09-26 | 80d | 22.5d | start no earlier than 2006-06-07 | GuruswamiS | 640h |  |  |
| 6 | 1.1.2 | **Inception Phase** |  | 24d | 2006-06-05 A | 2006-07-06 |  | 99% | 0d | 2006-06-05 | 2006-07-06 | 24d | 100.5d |  |  | 208h | 208h |  |
| 7 | 1.1.2.1 | **Requirements Gathering** |  | 5d | 2006-06-07 A | 2006-06-13 A |  | 100% |  | 2006-06-07 | 2006-06-13 | 5d |  |  |  |  |  |  |
| 8 | 1.1.2.1.1 | Determine General Requirements |  | 1d | 2006-06-07 A | 2006-06-07 A |  | 100% |  | 2006-06-07 | 2006-06-07 | 1d |  | start no earlier than 2006-06-07 |  |  |  |  |
| 9 | 1.1.2.1.2 | Determine Basic Use Cases |  | 3d | 2006-06-08 A | 2006-06-12 A | 8 | 100% |  | 2006-06-08 | 2006-06-12 | 3d |  | start no earlier than 2006-06-07 |  |  |  |  |
| 10 | 1.1.2.1.3 | Prioritize Use Cases |  | 1d | 2006-06-13 A | 2006-06-13 A | 8, 9 | 100% |  | 2006-06-13 | 2006-06-13 | 1d |  | start no earlier than 2006-06-05 |  |  |  |  |
| 11 | 1.1.2.2 | **Documentation** |  | 24d | 2006-06-05 A | 2006-07-06 A |  | 100% |  | 2006-06-05 | 2006-07-06 | 24d |  |  |  | 208h | 208h |  |
| 12 | 1.1.2.2.1 | Draft Project Plan |  | 5d | 2006-06-05 A | 2006-06-09 A |  | 100% |  | 2006-06-05 | 2006-06-09 | 5d |  | start no earlier than 2006-06-05 | SahniH | 40h | 40h |  |
| 13 | 1.1.2.2.2 | Add Feature Requests/Bugs into TestTrack | milestone | 0d | 2006-06-05 A | 2006-06-05 A |  | 100% |  | 2006-06-05 | 2006-06-06 | 2d |  | start no earlier than 2006-06-05 | LongY |  |  |  |
| 14 | 1.1.2.2.3 | Draft Requirements Specification Document |  | 3d | 2006-06-14 A | 2006-06-16 A | 10, 13 | 100% |  | 2006-06-14 | 2006-06-16 | 3d |  |  | SahniH | 24h | 24h |  |
| 15 | 1.1.2.2.4 | Draft Design Document |  | 4d | 2006-06-19 A | 2006-06-22 A | 14 | 100% |  | 2006-06-19 | 2006-06-22 | 4d |  |  | SahniH | 32h | 32h |  |
| 16 | 1.1.2.2.5 | Draft Test Plan |  | 4d | 2006-06-19 A | 2006-06-22 A | 14 | 100% |  | 2006-06-19 | 2006-06-22 | 4d |  |  | LongY | 32h | 32h |  |
| 17 | 1.1.2.2.6 | Draft Test Cases |  | 10d | 2006-06-23 A | 2006-07-06 A | 16 | 100% |  | 2006-06-23 | 2006-07-06 | 10d |  |  | LongY | 80h | 80h |  |
| 18 | 1.1.2.3 | Milestone: General Requirements Captured & Priortized | milestone | 0d | 2006-06-16 | 2006-06-16 | 14 |  |  | 2006-06-16 | 2006-06-16 | 0d | 94.5d |  | MadhavaS |  |  |  |
| 19 | 1.1.3 | **Elaboration Phase** |  | 114.5d | 2006-06-19 A | 2006-11-24 |  | 41% | 67.41d | 2006-06-19 | 2006-10-25 | 93d | 0d |  |  | 1596h | 699.2h |  |
| 20 | 1.1.3.1 | **Itreration 1 (Bug Fixes)** |  | 25d | 2006-06-19 A | 2006-07-21 | 14 | 99% | 0.33d | 2006-06-19 | 2006-07-21 | 25d | 89.5d |  |  | 348h | 343.2h |  |
| 21 | 1.1.3.1.1 | **design** |  | 4d | 2006-06-19 A | 2006-06-22 A |  | 100% |  | 2006-06-19 | 2006-06-22 | 4d |  |  |  | 48h | 48h |  |
| 22 | 1.1.3.1.1.1 | List Management |  | 2d | 2006-06-19 A | 2006-06-20 A |  | 100% |  | 2006-06-19 | 2006-06-20 | 2d |  |  | RossoK | 16h | 16h |  |
| 23 | 1.1.3.1.1.2 | Add option to download data in BRB tool format |  | 4d | 2006-06-19 A | 2006-06-22 A |  | 100% |  | 2006-06-19 | 2006-06-22 | 4d |  |  | LiuH | 32h | 32h |  |
| 24 | 1.1.3.1.2 | **Code** |  | 16d | 2006-06-19 A | 2006-07-10 |  | 98% | 0.32d | 2006-06-19 | 2006-07-10 | 16d | 98.5d |  |  | 220h | 215.2h |  |
| 25 | 1.1.3.1.2.1 | Fix bug associated with Advance Option |  | 3d | 2006-06-21 A | 2006-06-23 A | 22 | 100% |  | 2006-06-21 | 2006-06-23 | 3d |  | start no earlier than 2005-05-16 | RossoK | 24h | 24h |  |
| 26 | 1.1.3.1.2.2 | Allow multiple disease selection for advanced queries |  | 3d | 2006-06-26 A | 2006-06-28 | 25 | 80% | 0.6d | 2006-06-26 | 2006-06-28 | 3d | 86.5d |  | RossoK | 24h | 19.2h |  |
| 27 | 1.1.3.1.2.3 | Look into save queries as they do not seem to be saving properly |  | 2d | 2006-06-19 A | 2006-06-20 A |  | 100% |  | 2006-06-19 | 2006-06-20 | 2d |  | start no earlier than 2005-04-18 | SahniH | 16h | 16h |  |
| 28 | 1.1.3.1.2.4 | Refactor cache to use the caIntegrator commons cache |  | 2d | 2006-06-21 A | 2006-06-22 A | 27 | 100% |  | 2006-06-21 | 2006-06-22 | 2d |  |  | SahniH | 16h | 16h |  |
| 29 | 1.1.3.1.2.5 | Refactor Analysis server client manager |  | 3d | 2006-06-23 A | 2006-06-27 A | 28 | 100% |  | 2006-06-23 | 2006-06-27 | 3d |  |  | HarrisMA | 24h | 24h |  |
| 30 | 1.1.3.1.2.6 | Investigate sample upload using JC’s file |  | 1d | 2006-06-19 A | 2006-06-19 A |  | 100% |  | 2006-06-19 | 2006-06-19 | 1d |  | start no earlier than 2006-04-10 | LongY | 8h | 8h | Low |
| 31 | 1.1.3.1.2.7 | Change Search Pathway to caBIO v3.1 |  | 5d | 2006-06-19 A | 2006-06-23 A |  | 100% |  | 2006-06-19 | 2006-06-23 | 5d |  | start no earlier than 2005-05-16 | ZhangD [50%] | 20h | 20h |  |
| 32 | 1.1.3.1.2.8 | Abstracting common code UI to app. Commons module |  | 3d | 2006-06-26 A | 2006-06-28 A | 25 | 100% |  | 2006-06-26 | 2006-06-28 | 3d |  |  | LandyR | 24h | 24h |  |
| 33 | 1.1.3.1.2.9 | List Management Implementation |  | 8d | 2006-06-29 A | 2006-07-10 A | 32 | 100% |  | 2006-06-29 | 2006-07-10 | 8d |  | start no earlier than 2005-05-23 | RossoK [60%]; LandyR [40%] | 64h | 64h |  |
| 34 | 1.1.3.1.3 | Deployment to Dev | milestone | 0d | 2006-07-10 A | 2006-07-10 A | 24 | 100% |  | 2006-07-10 | 2006-07-10 | 0d |  |  |  |  |  |  |

| ID | WBS | Task | Type | Duration | Start | Finish | Predecessors | Complete | Baseline start | Baseline finish | Baseline duration | Resources | Work | Actual work | Text1 |
| --- | --- | --- | --- | --- | --- | --- | --- | --- | --- | --- | --- | --- | --- | --- | --- |
| 35 | 1.1.3.1.4 | **Test** |  | 8d | 2006-07-11 A | 2006-07-20 A |  | 100% | 2006-07-11 | 2006-07-20 | 8d |  | 64h | 64h |  |
| 36 | 1.1.3.1.4.1 | Unit Test |  | 3d | 2006-07-11 A | 2006-07-13 A | 24 | 100% | 2006-07-11 | 2006-07-13 | 3d | SahniH | 24h | 24h |  |
| 37 | 1.1.3.1.4.2 | Integration Test (Dev) |  | 5d | 2006-07-14 A | 2006-07-20 A | 36 | 100% | 2006-07-14 | 2006-07-20 | 5d | LongY | 40h | 40h |  |
| 38 | 1.1.3.1.5 | Milestone: Test Build on Dev Completed | milestone | 0d | 2006-07-20 A | 2006-07-20 A | 37 | 100% | 2006-07-20 | 2006-07-20 | 0d |  |  |  |  |
| 39 | 1.1.3.1.6 | **MileStone Draft Documents:** |  | 1d | 2006-07-20 A | 2006-07-21 A | 37 | 100% | 2006-07-20 | 2006-07-21 | 1d |  | 16h | 16h |  |
| 40 | 1.1.3.1.6.1 | Draft Iteration 1 Design Doc Completed | milestone | 0d | 2006-07-20 A | 2006-07-20 A |  | 100% | 2006-07-20 | 2006-07-20 | 0d | SahniH |  |  |  |
| 41 | 1.1.3.1.6.2 | Draft Iteration 1 Test Cases Completed |  | 1d | 2006-07-21 A | 2006-07-21 A |  | 100% | 2006-07-21 | 2006-07-21 | 1d | LongY | 8h | 8h |  |
| 42 | 1.1.3.1.6.3 | Draft Test Plan Completed |  | 1d | 2006-07-21 A | 2006-07-21 A |  | 100% | 2006-07-21 | 2006-07-21 | 1d | LongY | 8h | 8h |  |
| 43 | 1.1.3.2 | **Itreration 2 (Enchanced Functionality)** |  | 32d | 2006-07-24 A | 2006-09-05 A | 20 | 100% | 2006-07-24 | 2006-08-29 | 27d |  | 264h | 264h |  |
| 44 | 1.1.3.2.1 | **code** |  | 14d | 2006-07-24 A | 2006-08-10 A |  | 100% | 2006-07-24 | 2006-08-14 | 16d |  | 216h | 216h |  |
| 45 | 1.1.3.2.1.1 | **Advanced Search/Reports** |  | 14d | 2006-07-24 A | 2006-08-10 A |  | 100% | 2006-07-24 | 2006-08-10 | 14d |  | 160h | 160h |  |
| 46 | 1.1.3.2.1.1.1 | Allow persistence of complex queries |  | 2w | 2006-07-24 A | 2006-08-04 A |  | 100% | 2006-07-24 | 2006-07-28 | 1w | SahniH [50%] | 40h | 40h | Med |
| 47 | 1.1.3.2.1.1.2 | Allow users to save samples where one or more rows are highlighted. |  | 6d | 2006-07-24 A | 2006-07-31 A | 37 | 100% | 2006-07-24 | 2006-07-31 | 6d | LandyR | 48h | 48h |  |
| 48 | 1.1.3.2.1.1.3 | “Check All” should select All items on All pages, not just the current page |  | 5d | 2006-08-01 A | 2006-08-07 A | 47 | 100% | 2006-08-01 | 2006-08-07 | 5d | LandyR | 40h | 40h |  |
| 49 | 1.1.3.2.1.1.4 | when viewing copy number report, add button toggle that lets user see the clinical report of the data |  | 3d | 2006-08-08 A | 2006-08-10 A | 48 | 100% | 2006-08-08 | 2006-08-10 | 3d | LandyR | 24h | 24h |  |
| 50 | 1.1.3.2.1.1.5 | Bug Fix: filter for p-value on the result page |  | 1d | 2006-07-24 A | 2006-07-24 A | 33 | 100% | 2006-07-24 | 2006-07-24 | 1d | LandyR | 8h | 8h |  |
| 51 | 1.1.3.2.1.2 | **HOA** |  | 9d | 2006-07-24 A | 2006-08-03 A | 33 | 100% | 2006-07-24 | 2006-08-03 | 9d |  | 56h | 56h |  |
| 52 | 1.1.3.2.1.2.1 | Make the Select Samples a single click for PCA |  | 1d | 2006-07-24 A | 2006-07-24 A | 33 | 100% | 2006-07-24 | 2006-07-24 | 1d | RossoK | 8h | 8h |  |
| 53 | 1.1.3.2.1.2.2 | Allow selection of groups by double click (same feature through out the application) |  | 1d | 2006-07-27 A | 2006-07-27 A | 52 | 100% | 2006-07-27 | 2006-07-27 | 1d | RossoK | 8h | 8h |  |
| 54 | 1.1.3.2.1.2.3 | Allow option to remove colors and shapes on view “raw” graphs |  | 3d | 2006-07-28 A | 2006-08-01 A | 53 | 100% | 2006-07-28 | 2006-08-01 | 3d | LandyR | 24h | 24h |  |
| 55 | 1.1.3.2.1.2.4 | Normal samples should not display survival length shapes, but be designated as Normal |  | 2d | 2006-08-02 A | 2006-08-03 A | 54 | 100% | 2006-08-02 | 2006-08-03 | 2d | LandyR | 16h | 16h |  |
| 56 | 1.1.3.2.2 | Deployment to Dev | milestone | 0d | 2006-08-21 A | 2006-08-21 A | 44 | 100% | 2006-08-14 | 2006-08-14 | 0d |  |  |  |  |
| 57 | 1.1.3.2.3 | **Test** |  | 10d | 2006-08-22 A | 2006-09-04 A |  | 100% | 2006-08-15 | 2006-08-29 | 11d |  | 48h | 48h |  |
| 58 | 1.1.3.2.3.1 | Integration Test (Dev) |  | 10d | 2006-08-22 A | 2006-09-04 A | 56 | 100% | 2006-08-15 | 2006-08-29 | 11d | LongY | 48h | 48h |  |
| 59 | 1.1.3.2.4 | Milestone: Test on Dev Completed | milestone | 0d | 2006-09-05 A | 2006-09-05 A | 57 | 100% | 2006-08-29 | 2006-08-29 | 0d | LongY |  |  |  |

| ID | WBS | Task | Type | Duration | Start | Finish | Predecessors | Complete | Remaining | Baseline start | Baseline finish | Baseline duration | Total slack | Free slack | Constraint | Resources | Work | Actual work | Text1 |
| --- | --- | --- | --- | --- | --- | --- | --- | --- | --- | --- | --- | --- | --- | --- | --- | --- | --- | --- | --- |
| 60 | 1.1.3.2.5 | **MileStone Draft Documents:** |  | 0d | 2006-09-05 A | 2006-09-05 A | 57 | 100% |  | 2006-08-29 | 2006-08-29 | 0d |  |  |  |  |  |  |  |
| 61 | 1.1.3.2.5.1 | Draft Iteration 2 Design Doc Completed | milestone | 0d | 2006-09-05 A | 2006-09-05 A |  | 100% |  | 2006-08-29 | 2006-08-29 | 0d |  |  |  | SahniH |  |  |  |
| 62 | 1.1.3.2.5.2 | Draft Iteration 2 Test Cases Completed | milestone | 0d | 2006-09-05 A | 2006-09-05 A |  | 100% |  | 2006-08-29 | 2006-08-29 | 0d |  |  |  | LongY |  |  |  |
| 63 | 1.1.3.3 | **Iteration 3: (New Features)** |  | 29.5d | 2006-08-30 A | 2006-10-10 | 43 | 10% | 26.59d | 2006-08-30 | 2006-09-26 | 20d | 0d |  |  |  | 832h | 92h |  |
| 64 | 1.1.3.3.1 | **Design** |  | 15d | 2006-08-30 A | 2006-09-19 |  | 35% | 9.78d | 2006-08-30 | 2006-09-12 | 10d | 14.5d |  |  |  | 160h | 64h |  |
| 65 | 1.1.3.3.1.1 | ANOVA multi-group comparison to class comparison |  | 3d | 2006-09-06 A | 2006-09-08 A | 56 | 100% |  | 2006-08-30 | 2006-09-01 | 3d |  |  |  | LiuH | 24h | 24h |  |
| 66 | 1.1.3.3.1.2 | CDNA Data for HLA, data processsing |  | 2w | 2006-09-06 | 2006-09-19 | 56 |  |  | 2006-08-30 | 2006-09-12 | 2w | 0.5d | 0d | finish no earlier than 2005-03-11 | LiuH | 80h |  |  |
| 67 | 1.1.3.3.1.3 | Incorporate KEGG metabolic pathway; search & retrieval |  | 5d | 2006-09-06 | 2006-09-12 |  |  |  | 2006-08-30 | 2006-09-05 | 5d | 15.5d |  |  | ZhangD | 16h |  |  |
| 68 | 1.1.3.3.1.4 | Design of the Box&Whisker and Coin plots |  | 5d | 2006-08-30 A | 2006-09-05 A |  | 100% |  | 2006-08-30 | 2006-09-05 | 5d |  |  |  | LiuH | 40h | 40h |  |
| 69 | 1.1.3.3.2 | **Code** |  | 24.5d | 2006-09-06 A | 2006-10-10 |  | 4% | 23.45d | 2006-08-30 | 2006-09-26 | 20d | 0d |  |  |  | 576h | 28h |  |
| 70 | 1.1.3.3.2.1 | **Webgenome** |  | 12d | 2006-09-06 | 2006-09-21 |  |  |  | 2006-08-04 | 2006-08-14 | 7d | 12.5d |  |  |  | 112h |  |  |
| 71 | 1.1.3.3.2.1.1 | API Design for providing Webgenome with LOH data |  | 2d | 2006-09-06 | 2006-09-07 |  |  |  | 2006-08-04 | 2006-08-07 | 2d | 8.5d | 0d |  | BhatturR | 16h |  |  |
| 72 | 1.1.3.3.2.1.2 | Implement API that provides Webgenome with LOH data |  | 2w | 2006-09-08 | 2006-09-21 | 71 |  |  | 2006-08-08 | 2006-08-14 | 1w | 8.5d |  |  | BhatturR | 80h |  |  |
| 73 | 1.1.3.3.2.1.3 | Hardware configuration & HLA for Webgenome |  | 2d | 2006-09-06 | 2006-09-07 |  |  |  | 2006-08-04 | 2006-08-07 | 2d | 18.5d |  |  | HarrisMA | 16h |  |  |
| 74 | 1.1.3.3.2.2 | Implementation of persistence of complex queries |  | 3d | 2006-09-06 | 2006-09-08 | 56 |  |  | 2006-08-30 | 2006-09-01 | 3d | 9.5d | 0d |  | SahniH | 24h |  |  |
| 75 | 1.1.3.3.2.3 | persisting user lists |  | 4d | 2006-09-06 | 2006-09-11 | 55 |  |  | 2006-08-30 | 2006-09-04 | 4d | 23.5d |  |  | LandyR | 32h |  |  |
| 76 | 1.1.3.3.2.4 | **Implement analysis server modules (ANOVA) for multi-group comparisons & CDNA data** |  | 7d | 2006-09-20 | 2006-09-28 | 66 |  |  | 2006-09-13 | 2006-09-21 | 7d | 4.5d | 0d |  |  | 112h |  |  |
| 77 | 1.1.3.3.2.4.1 | UI, DTO and middleware changes |  | 7d | 2006-09-20 | 2006-09-28 |  |  |  | 2006-09-13 | 2006-09-21 | 7d | 0.5d |  |  | ZhangD | 32h |  |  |
| 78 | 1.1.3.3.2.4.2 | R Server module implementation |  | 4d | 2006-09-20 | 2006-09-25 |  |  |  | 2006-09-13 | 2006-09-18 | 4d | 3.5d |  |  | LiuH | 32h |  |  |
| 79 | 1.1.3.3.2.4.3 | Analysis server implementation |  | 6d | 2006-09-20 | 2006-09-27 |  |  |  | 2006-09-13 | 2006-09-20 | 6d | 1.5d |  |  | GuruswamiS | 48h |  |  |
| 80 | 1.1.3.3.2.5 | Add option to download data in BRB tool format |  | 3d | 2006-09-11 | 2006-09-13 | 74 |  |  | 2006-09-04 | 2006-09-06 | 3d | 9.5d | 0d |  | SahniH | 24h |  |  |
| 81 | 1.1.3.3.2.6 | Implement class comparisons for disease groups |  | 5d | 2006-09-11 | 2006-09-15 | 74 |  |  | 2006-09-04 | 2006-09-08 | 5d | 10.5d | 0d |  | SahniH | 40h |  |  |
| 82 | 1.1.3.3.2.7 | Add compound request capability for HLA in the analysis server |  | 3d | 2006-09-29 | 2006-10-03 | 76 |  |  | 2006-09-22 | 2006-09-26 | 3d | 0.5d |  |  | HarrisMA | 24h |  |  |
| 83 | 1.1.3.3.2.8 | Implement search & retrieval of KEGG metabolic pathway data |  | 8d | 2006-09-06 | 2006-09-15 | 56 |  |  | 2006-08-30 | 2006-09-08 | 8d | 6.5d | 0d |  | ZhangD; JiangHo [50%] | 60h |  |  |
| 84 | 1.1.3.3.2.9 | Externalize properties and modify build scripts |  | 2d | 2006-09-18 | 2006-09-19 | 81 |  |  | 2006-09-11 | 2006-09-12 | 2d | 10.5d |  |  | SahniH | 16h |  |  |
| 85 | 1.1.3.3.2.10 | Allow all queries to be filtered by Institutions |  | 3d | 2006-09-14 | 2006-09-18 | 80 |  |  | 2006-09-07 | 2006-09-11 | 3d | 18.5d |  | start no earlier than 2006-04-10 | LandyR | 24h |  | Low/Med |
| 86 | 1.1.3.3.2.11 | LOAN TO CGEMS |  | 3d | 2006-09-19 | 2006-09-21 | 85 |  |  |  |  |  | 12.5d |  |  | LandyR | 24h |  |  |
| 87 | 1.1.3.3.2.12 | Add Disease Groups for KM plots |  | 3d | 2006-09-19 A | 2006-09-21 A | 86 | 100% |  | 2006-09-12 | 2006-09-14 | 3d |  |  |  | LandyR | 24h | 24h |  |
| 88 | 1.1.3.3.2.13 | Integrate new plots into Rembrandt |  | 4d | 2006-09-22 | 2006-09-27 | 87 |  |  | 2006-09-15 | 2006-09-18 | 2d | 0d |  |  | LandyR | 16h |  |  |
| 89 | 1.1.3.3.2.14 | Bug Fix: Mouse over on bar graph should display p-value instead of foldchange |  | 3d | 2006-09-28 | 2006-10-02 | 88 |  |  | 2006-09-19 | 2006-09-19 | 1d | 0d |  |  | LandyR | 8h |  |  |
| 90 | 1.1.3.3.2.15 | Bug Fix:Disease sub-types in advanced search-> GE Analysis |  | 0.5d | 2006-10-03 | 2006-10-03 | 89 |  |  |  |  |  | 0d |  |  | LandyR | 4h |  |  |
| 91 | 1.1.3.3.2.16 | Feature Request:Allow Filter by Insitution for Adv Queries |  | 0.5d | 2006-09-06 A | 2006-09-06 A |  | 100% |  |  |  |  |  |  |  | ChenHA | 4h | 4h |  |
| 92 | 1.1.3.3.2.17 | Bug Fix:Access to user guide and tutorials upon successful login |  | 0.5d | 2006-10-03 | 2006-10-03 | 89 |  |  |  |  |  | 5d |  |  | LandyR | 4h |  |  |
| 93 | 1.1.3.3.2.18 | Feature Requests: Feedback from iteration 2 |  | 5d | 2006-10-03 | 2006-10-10 | 90 |  |  |  |  |  | 0d |  |  | LandyR | 24h |  |  |

| ID | WBS | Task | Type | Duration | Start | Finish | Predecessors | Baseline start | Baseline finish | Baseline duration | Total slack | Free slack | Constraint | Resources | Work |
| --- | --- | --- | --- | --- | --- | --- | --- | --- | --- | --- | --- | --- | --- | --- | --- |
| 94 | 1.1.3.3.3 | **Data Refresh** |  | 6d | 2006-09-18 | 2006-09-25 | 83 | 2006-09-11 | 2006-09-18 | 6d | 10.5d |  |  |  | 48h |
| 95 | 1.1.3.3.3.1 | Create R binary file |  | 3d | 2006-09-18 | 2006-09-20 |  | 2006-09-11 | 2006-09-13 | 3d | 10.5d | 0d |  | LiuH | 24h |
| 96 | 1.1.3.3.3.2 | Database refresh |  | 3d | 2006-09-21 | 2006-09-25 | 95 | 2006-09-14 | 2006-09-18 | 3d | 10.5d |  |  | JiangHo | 24h |
| 97 | 1.1.3.3.4 | **Test** |  | 6d | 2006-09-06 | 2006-09-13 |  | 2006-08-30 | 2006-09-06 | 6d | 18.5d | 0d |  |  | 48h |
| 98 | 1.1.3.3.4.1 | Integration Test (Dev Server) |  | 6d | 2006-09-06 | 2006-09-13 |  | 2006-08-30 | 2006-09-06 | 6d | 18.5d |  |  | LongY | 48h |
| 99 | 1.1.3.4 | Milestone: Iteration 3 complete | milestone | 0d | 2006-09-13 | 2006-09-13 | 97 | 2006-09-06 | 2006-09-06 | 0d | 18.5d |  |  | LongY |  |
| 100 | 1.1.3.5 | **MileStone Draft Documents:** |  | 0d | 2006-09-13 | 2006-09-13 |  | 2006-09-06 | 2006-09-06 | 0d | 51.5d |  |  |  |  |
| 101 | 1.1.3.5.1 | Draft Iteration 3 Design Doc Completed | milestone | 0d | 2006-09-13 | 2006-09-13 | 97 | 2006-09-06 | 2006-09-06 | 0d | 51.5d |  |  | BasuA |  |
| 102 | 1.1.3.5.2 | Draft Iteration 3 Test Cases Completed | milestone | 0d | 2006-09-13 | 2006-09-13 | 97 | 2006-09-06 | 2006-09-06 | 0d | 51.5d |  |  | BasuA |  |
| 103 | 1.1.3.6 | **Transition Phase** |  | 33d | 2006-10-10 | 2006-11-24 | 63 | 2006-09-27 | 2006-10-25 | 21d | 0d |  |  |  | 152h |
| 104 | 1.1.3.6.1 | **QA** |  | 3d | 2006-10-10 | 2006-10-13 |  | 2006-09-27 | 2006-09-29 | 3d | 14d |  |  |  | 24h |
| 105 | 1.1.3.6.1.1 | Finalize Testplan |  | 2d | 2006-10-10 | 2006-10-12 | 99 | 2006-09-27 | 2006-09-28 | 2d | 14d | 0d |  | LongY | 16h |
| 106 | 1.1.3.6.1.2 | Finalize Test Cases |  | 1d | 2006-10-12 | 2006-10-13 | 105 | 2006-09-29 | 2006-09-29 | 1d | 30d |  |  | LongY | 8h |
| 107 | 1.1.3.6.2 | **Deploy** |  | 33d | 2006-10-10 | 2006-11-24 |  | 2006-09-27 | 2006-10-25 | 21d | 0d |  |  |  | 128h |
| 108 | 1.1.3.6.2.1 | **QA Server Deployment** |  | 10d | 2006-10-10 | 2006-10-24 |  | 2006-09-27 | 2006-10-12 | 12d | 0d |  |  |  | 80h |
| 109 | 1.1.3.6.2.1.1 | QA Testing |  | 10d | 2006-10-10 | 2006-10-24 | 99 | 2006-09-27 | 2006-10-12 | 12d | 0d |  | start no earlier than 2005-06-28 | LongY | 80h |
| 110 | 1.1.3.6.2.2 | **Staging Server Deployment** |  | 22d | 2006-10-24 | 2006-11-23 |  | 2006-10-13 | 2006-10-24 | 8d | 0d |  |  |  | 48h |
| 111 | 1.1.3.6.2.2.1 | Staging Testing |  | 22d | 2006-10-24 | 2006-11-23 | 109 | 2006-10-13 | 2006-10-24 | 8d | 0d |  |  | LongY | 48h |
| 112 | 1.1.3.6.2.3 | **Production Server Deployment** |  | 1d | 2006-11-23 | 2006-11-24 |  | 2006-10-25 | 2006-10-25 | 1d | 0d |  |  |  |  |
| 113 | 1.1.3.6.2.3.1 | Production Verification |  | 1d | 2006-11-23 | 2006-11-24 | 111 | 2006-10-25 | 2006-10-25 | 1d | 0d |  | start no earlier than 2005-06-13 | LongY |  |
| 114 | 1.1.3.7 | Milestone: Release complete | milestone | 0d | 2006-11-24 | 2006-11-24 | 113 | 2006-10-25 | 2006-10-25 | 0d | 0d |  |  | SahniH |  |
| 115 | 1.1.3.8 | **MileStone Draft Documents:** |  | 0d | 2006-11-24 | 2006-11-24 |  | 2006-10-25 | 2006-10-25 | 0d | 0d |  |  |  |  |
| 116 | 1.1.3.8.1 | Draft Design Doc Completed | milestone | 0d | 2006-11-24 | 2006-11-24 | 113 | 2006-10-25 | 2006-10-25 | 0d | 0d |  |  | SahniH |  |
| 117 | 1.1.3.8.2 | Draft Test Cases Completed | milestone | 0d | 2006-11-24 | 2006-11-24 | 113 | 2006-10-25 | 2006-10-25 | 0d | 0d |  |  | LongY |  |
| 118 | 1.1.3.8.3 | Draft Test Plan Completed | milestone | 0d | 2006-11-24 | 2006-11-24 | 113 | 2006-10-25 | 2006-10-25 | 0d | 0d |  |  | LongY |  |

| ID | WBS | Task | Type | Duration | Start | Finish | Predecessors | Baseline start | Baseline finish | Baseline duration | Total slack | Constraint | Resources | Text1 |
| --- | --- | --- | --- | --- | --- | --- | --- | --- | --- | --- | --- | --- | --- | --- |
| 119 | 1.2 | **Rembrandt Post 1.5 Features** |  | 0d | 2006-11-24 | 2006-11-24 | 2 | 2006-10-25 | 2006-10-25 | 0d | 0d |  |  |  |
| 120 | 1.2.1 | Use the new dynamic tables for the reports so that we don’t have pagination | milestone | 0d | 2006-11-24 | 2006-11-24 |  | 2006-10-25 | 2006-10-25 | 0d | 0d | start no earlier than 2006-04-10 |  | Med |
| 121 | 1.2.2 | **Add new caCORE GO Browser** |  | 0d | 2006-11-24 | 2006-11-24 | 24 | 2006-10-25 | 2006-10-25 | 0d | 0d |  |  |  |
| 122 | 1.2.2.1 | Add new caCORE GO Browser | milestone | 0d | 2006-11-24 | 2006-11-24 | 83 | 2006-10-25 | 2006-10-25 | 0d | 0d |  | ZhangD |  |
| 123 | 1.2.3 | **HOA** |  | 0d | 2006-11-24 | 2006-11-24 |  | 2006-10-25 | 2006-10-25 | 0d | 0d |  |  |  |
| 124 | 1.2.3.1 | Add PAM to HOA | milestone | 0d | 2006-11-24 | 2006-11-24 |  | 2006-10-25 | 2006-10-25 | 0d | 0d | start no earlier than 2006-04-10 |  | low |
| 125 | 1.2.3.2 | For every custom sample group, create an NOT group that excludes the selected samples. Need to find a good name for this feature. | milestone | 0d | 2006-11-24 | 2006-11-24 |  | 2006-10-25 | 2006-10-25 | 0d | 0d | start no earlier than 2006-04-10 |  | Med |
| 126 | 1.2.3.3 | Implement “Cox model” to identify most significantly expressed genes associated with survival | milestone | 0d | 2006-11-24 | 2006-11-24 |  | 2006-10-25 | 2006-10-25 | 0d | 0d | start no earlier than 2006-04-10 |  | Low |
| 127 | 1.2.4 | **PCA** |  | 0d | 2006-11-24 | 2006-11-24 |  | 2006-10-25 | 2006-10-25 | 0d | 0d |  |  |  |
| 128 | 1.2.4.1 | Look into providing the 3D PCA plot (visualize only) | milestone | 0d | 2006-11-24 | 2006-11-24 |  | 2006-10-25 | 2006-10-25 | 0d | 0d | start no earlier than 2006-04-10 |  | Low/Med |
| 129 | 1.2.4.2 | Allow users to color by custom groups with overlapping samples in a neutral color. (Shapes are fine as they are.) | milestone | 0d | 2006-11-24 | 2006-11-24 |  | 2006-10-25 | 2006-10-25 | 0d | 0d | start no earlier than 2006-04-10 |  | Med |
| 130 | 1.2.5 | **Advance Queries** |  | 0d | 2006-11-24 | 2006-11-24 |  | 2006-10-25 | 2006-10-25 | 0d | 0d |  |  |  |
| 131 | 1.2.5.1 | CSV download does not work for large datasets where the number of samples is greater than 256 | milestone | 0d | 2006-11-24 | 2006-11-24 |  | 2006-10-25 | 2006-10-25 | 0d | 0d | start no earlier than 2006-04-10 |  | Low |
| 132 | 1.2.6 | **Misc. Features** |  | 0d | 2006-11-24 | 2006-11-24 |  | 2006-10-25 | 2006-10-25 | 0d | 0d |  |  |  |
| 133 | 1.2.6.1 | Add class comparison analysis for copy number data | milestone | 0d | 2006-11-24 | 2006-11-24 |  | 2006-10-25 | 2006-10-25 | 0d | 0d | start no earlier than 2006-04-10 |  | Low |
| 134 | 1.2.6.2 | Enhance hierarchical clustering report to allow for selection of samples/reporters from the graphic | milestone | 0d | 2006-11-24 | 2006-11-24 |  | 2006-10-25 | 2006-10-25 | 0d | 0d | start no earlier than 2006-04-10 |  | Low |
| 135 | 1.2.6.3 | Change the way hierarchical clustering is displayed so that the image is rendered by the app and not by R | milestone | 0d | 2006-11-24 | 2006-11-24 |  | 2006-10-25 | 2006-10-25 | 0d | 0d | start no earlier than 2006-04-10 |  | Low |
| 136 | 1.2.6.4 | Sharing queries/sample lists/etc among users | milestone | 0d | 2006-11-24 | 2006-11-24 |  | 2006-10-25 | 2006-10-25 | 0d | 0d | start no earlier than 2006-04-10 |  | Med |
| 137 | 1.2.6.5 | Look into added functionality of sending emails to user when a query is finished for inbox. This may be out of scope until we have many more samples. | milestone | 0d | 2006-11-24 | 2006-11-24 |  | 2006-10-25 | 2006-10-25 | 0d | 0d | start no earlier than 2006-04-10 |  | Med |
