# caIntegrator-DRAFT

Schedule from MS Project, 2006-03-28 to 2006-10-24, A marks actual dates.
NCI

## Calendars

- Standard: Mon-Fri 08:00-12:00, 13:00-17:00; Sat-Sun off.

## Resources

| Resource |
| --- |
| JiangHo |
| GuruswamiS |
| SahniH |
| ZhangD |
| BhatturR |
| NCICB |
| MadhavaS |
| GeorgeDa |
| NCICB/CGEMS team |

## Schedule

| ID | WBS | Task | Type | Duration | Start | Finish | Predecessors | Complete | Remaining | Baseline start | Baseline finish | Baseline duration | Total slack | Free slack | Resources | Work | Actual work |
| --- | --- | --- | --- | --- | --- | --- | --- | --- | --- | --- | --- | --- | --- | --- | --- | --- | --- |
| 1 | 1 | **caIntegrator** |  | 150.57d? | 2006-03-28 A | 2006-10-24 |  | 55% | 67.76d? | 2006-03-28 | 2006-10-24 | 150.57d? | 0d |  |  | 3312h | 1825.6h |
| 2 | 1.1 | **Project Management and Control** |  | 50d | 2006-05-25 | 2006-08-02 |  |  |  | 2006-05-25 | 2006-08-02 | 50d | 58.57d |  |  | 800h |  |
| 3 | 1.1.1 | Project Management |  | 50d | 2006-05-25 | 2006-08-02 |  |  |  | 2006-05-25 | 2006-08-02 | 50d | 58.57d |  | GuruswamiS | 400h |  |
| 4 | 1.1.2 | Project Control |  | 50d | 2006-05-25 | 2006-08-02 |  |  |  | 2006-05-25 | 2006-08-02 | 50d | 58.57d |  | GuruswamiS | 400h |  |
| 5 | 1.2 | **Inception Phase** |  | 47d | 2006-03-28 A | 2006-05-31 |  | 17% | 38.94d | 2006-03-28 | 2006-05-31 | 47d | 103.57d |  |  | 16h | 9.6h |
| 6 | 1.2.1 | **Requirements Gathering** |  | 3d | 2006-03-28 A | 2006-03-30 A |  | 100% |  | 2006-03-28 | 2006-03-30 | 3d |  |  |  |  |  |
| 7 | 1.2.1.1 | Determine General Requirements | milestone | 0d | 2006-03-28 A | 2006-03-28 A |  | 100% |  | 2006-03-28 | 2006-03-28 | 0d |  |  | SahniH |  |  |
| 8 | 1.2.1.2 | Determine Basic Use Cases | milestone | 0d | 2006-03-29 A | 2006-03-29 A | 7 | 100% |  | 2006-03-29 | 2006-03-29 | 0d |  |  | SahniH |  |  |
| 9 | 1.2.1.3 | Prioritize Use Cases | milestone | 0d | 2006-03-30 A | 2006-03-30 A | 7, 8 | 100% |  | 2006-03-30 | 2006-03-30 | 0d |  |  | MadhavaS |  |  |
| 10 | 1.2.1.4 | Milestone: General Requirements Captured | milestone | 0d | 2006-03-30 A | 2006-03-30 A | 9 | 100% |  | 2006-03-30 | 2006-03-30 | 0d |  |  |  |  |  |
| 11 | 1.2.2 | **Project Management** |  | 41d | 2006-04-05 A | 2006-05-31 |  | 17% | 33.97d | 2006-04-05 | 2006-05-31 | 41d | 103.57d |  |  | 16h | 9.6h |
| 12 | 1.2.2.1 | Draft Project Plan |  | 2d | 2006-04-05 A | 2006-04-06 |  | 60% | 0.8d | 2006-04-05 | 2006-04-06 | 2d | 142.57d |  | GuruswamiS | 16h | 9.6h |
| 13 | 1.2.2.2 | Add Feature Requests/Bugs into TestTrack |  | 2d | 2006-05-25 | 2006-05-26 |  |  |  | 2006-05-25 | 2006-05-26 | 2d | 103.57d | 0d |  |  |  |
| 14 | 1.2.2.3 | Draft Requirements Specification Document |  | 3d | 2006-05-29 | 2006-05-31 | 13 |  |  | 2006-05-29 | 2006-05-31 | 3d | 103.57d |  |  |  |  |
| 15 | 1.3 | **Evolution Cycle 1: Elaboration & Construction** |  | 150.57d? | 2006-03-28 A | 2006-10-24 |  | 70% | 44.78d? | 2006-03-28 | 2006-10-24 | 150.57d? | 0d |  |  | 2496h | 1816h |
| 16 | 1.3.1 | **Iteration 1 - Prototype** |  | 90d | 2006-03-28 A | 2006-07-31 A |  | 100% |  | 2006-03-28 | 2006-07-31 | 90d |  |  |  | 440h | 440h |
| 17 | 1.3.1.1 | **Architecture** |  | 84d | 2006-03-28 A | 2006-07-21 A |  | 100% |  | 2006-03-28 | 2006-07-21 | 84d |  |  |  |  |  |
| 18 | 1.3.1.1.1 | Initial Draft of Architecture |  | 2w | 2006-03-28 A | 2006-04-10 A |  | 100% |  | 2006-03-28 | 2006-04-10 | 2w |  |  |  |  |  |
| 19 | 1.3.1.1.2 | Internal review with caIntegrator Team |  | 1d | 2006-03-28 A | 2006-03-28 A | 18 | 100% |  | 2006-03-28 | 2006-03-28 | 1d |  |  |  |  |  |
| 20 | 1.3.1.1.3 | Incorporate Comments/Feedback from the team review |  | 2d | 2006-07-13 A | 2006-07-17 A | 19 | 100% |  | 2006-07-13 | 2006-07-17 | 2d |  |  |  |  |  |
| 21 | 1.3.1.1.4 | Draft design document (caBIG template) |  | 1w | 2006-07-17 A | 2006-07-21 A | 20 | 100% |  | 2006-07-17 | 2006-07-21 | 1w |  |  |  |  |  |
| 22 | 1.3.1.1.5 | Milestone: Completed Design document | milestone | 0d | 2006-05-25 A | 2006-05-25 A |  | 100% |  | 2006-05-25 | 2006-05-25 | 0d |  |  |  |  |  |
| 23 | 1.3.1.2 | **Registeration of CDEs in caDSR - 1.0 OM** |  | 49d | 2006-05-09 A | 2006-07-14 A |  | 100% |  | 2006-05-09 | 2006-07-14 | 49d |  |  |  | 280h | 280h |
| 24 | 1.3.1.2.1 | Establish baseline documentation and prepare submission package |  | 1d | 2006-05-25 A | 2006-05-25 A |  | 100% |  | 2006-05-25 | 2006-05-25 | 1d |  |  | ZhangD | 8h | 8h |
| 25 | 1.3.1.2.2 | Annotate UML model with well formed names and definitions |  | 9d | 2006-05-09 A | 2006-06-12 A |  | 100% |  | 2006-05-09 | 2006-06-12 | 9d |  |  | ZhangD | 72h | 72h |
| 26 | 1.3.1.2.3 | Review UML Model using SIW |  | 10d | 2006-05-22 A | 2006-06-02 A | 25 | 100% |  | 2006-05-22 | 2006-06-02 | 10d |  |  | ZhangD | 80h | 80h |
| 27 | 1.3.1.2.4 | Register CDEs in caDSR |  | 15d | 2006-06-13 A | 2006-07-14 A | 26 | 100% |  | 2006-06-13 | 2006-07-14 | 15d |  |  | NCICB | 120h | 120h |

| ID | WBS | Task | Type | Duration | Start | Finish | Predecessors | Complete | Baseline start | Baseline finish | Baseline duration | Constraint | Resources | Work | Actual work |
| --- | --- | --- | --- | --- | --- | --- | --- | --- | --- | --- | --- | --- | --- | --- | --- |
| 28 | 1.3.1.3 | **API Development - caCORE SDK** |  | 44d | 2006-05-31 A | 2006-07-31 A |  | 100% | 2006-05-31 | 2006-07-31 | 44d |  |  | 72h | 72h |
| 29 | 1.3.1.3.1 | Draft design document (caBIG template) |  | 23d | 2006-05-31 A | 2006-07-31 A |  | 100% | 2006-05-31 | 2006-07-31 | 23d |  | SahniH | 40h | 40h |
| 30 | 1.3.1.3.2 | Implement hibernate mappings for FISH |  | 2d | 2006-07-13 A | 2006-07-17 A | 29 | 100% | 2006-07-13 | 2006-07-17 | 2d |  | SahniH | 16h | 16h |
| 31 | 1.3.1.3.3 | Develop Unit test cases |  | 2d | 2006-06-06 A | 2006-06-07 A | 30 | 100% | 2006-06-06 | 2006-06-07 | 2d |  | SahniH | 16h | 16h |
| 32 | 1.3.1.4 | **API Development - QBC** |  | 13d | 2006-05-25 A | 2006-06-12 A |  | 100% | 2006-05-25 | 2006-06-12 | 13d |  |  | 72h | 72h |
| 33 | 1.3.1.4.1 | Draft design document (caBIG template) |  | 1w | 2006-05-31 A | 2006-06-12 A |  | 100% | 2006-05-31 | 2006-06-12 | 1w |  | BhatturR | 40h | 40h |
| 34 | 1.3.1.4.2 | Implement hibernate mappings for FISH |  | 1d | 2006-05-25 A | 2006-05-25 A |  | 100% | 2006-05-25 | 2006-05-25 | 1d |  | BhatturR | 8h | 8h |
| 35 | 1.3.1.4.3 | Implement QBC API for FISH |  | 2d | 2006-05-25 A | 2006-05-26 A |  | 100% | 2006-05-25 | 2006-05-26 | 2d |  | BhatturR | 16h | 16h |
| 36 | 1.3.1.4.4 | Implement Junit test suite and perform unit test |  | 1d | 2006-05-25 A | 2006-05-25 A |  | 100% | 2006-05-25 | 2006-05-25 | 1d |  | BhatturR | 8h | 8h |
| 37 | 1.3.1.4.5 | Milestone: Completed Design document | milestone | 0d | 2006-05-25 A | 2006-05-25 A |  | 100% | 2006-05-25 | 2006-05-25 | 0d |  | BhatturR |  |  |
| 38 | 1.3.1.5 | **Database development** |  | 1d | 2006-05-25 A | 2006-05-25 A |  | 100% | 2006-05-25 | 2006-05-25 | 1d |  |  | 16h | 16h |
| 39 | 1.3.1.5.1 | Incorporate FISH into caIntegrator database schema |  | 1d | 2006-05-25 A | 2006-05-25 A |  | 100% | 2006-05-25 | 2006-05-25 | 1d |  | JiangHo | 8h | 8h |
| 40 | 1.3.1.5.2 | Complete database schema development & data migration |  | 1d | 2006-05-25 A | 2006-05-25 A |  | 100% | 2006-05-25 | 2006-05-25 | 1d |  | JiangHo | 8h | 8h |
| 41 | 1.3.1.6 | Deploy iteration to DEV Server |  | 1d | 2006-05-25 A | 2006-05-25 A |  | 100% | 2006-05-25 | 2006-05-25 | 1d |  |  |  |  |
| 42 | 1.3.2 | **Itreration 2a: CGEMS using caCORE-SDK** |  | 40d | 2006-06-12 A | 2006-08-04 A |  | 100% | 2006-06-12 | 2006-08-04 | 40d |  |  | 704h | 704h |
| 43 | 1.3.2.1 | Harmonize CGEMS UML model with caIntegrator |  | 7d | 2006-06-12 A | 2006-06-20 A |  | 100% | 2006-06-12 | 2006-06-20 | 7d | finish no earlier than 2006-06-20 | SahniH | 56h | 56h |
| 44 | 1.3.2.2 | Harmozine CGEMS OM with CG-OM |  | 7d | 2006-06-12 A | 2006-06-21 A | 43 | 100% | 2006-06-12 | 2006-06-21 | 7d | start no earlier than 2006-06-12 |  | 56h | 56h |
| 45 | 1.3.2.3 | Review Model with CGEMS stake holders | milestone | 0d | 2006-06-20 A | 2006-06-20 A | 43 | 100% | 2006-06-20 | 2006-06-20 | 0d |  | NCICB/CGEMS team |  |  |
| 46 | 1.3.2.4 | Incorporate FeedBack |  | 2d | 2006-06-21 A | 2006-06-22 A | 45 | 100% | 2006-06-21 | 2006-06-22 | 2d |  | SahniH | 16h | 16h |
| 47 | 1.3.2.5 | MileStone: Finalize model with CGEMS stake holders | milestone | 0d | 2006-06-22 A | 2006-06-22 A | 46 | 100% | 2006-06-22 | 2006-06-22 | 0d |  | SahniH |  |  |
| 48 | 1.3.2.4 | MileStone: Finalize CG-OM w/CGEMS model | milestone | 0d | 2006-06-22 A | 2006-06-22 A | 47 | 100% | 2006-06-22 | 2006-06-22 | 0d |  |  |  |  |
| 49 | 1.3.2.8 | MileStone: Generate API using caCORE SDK | milestone | 0d | 2006-07-26 A | 2006-07-26 A | 50 | 100% | 2006-07-26 | 2006-07-26 | 0d |  |  |  |  |
| 50 | 1.3.2.8 | **Generate API using caCORE-SDK** |  | 18d | 2006-07-03 A | 2006-07-26 A | 43 | 100% | 2006-07-03 | 2006-07-26 | 18d |  |  | 144h | 144h |
| 51 | 1.3.2.8.1 | Generate API using caCORE SDK |  | 2w | 2006-07-03 A | 2006-07-17 A |  | 100% | 2006-07-03 | 2006-07-17 | 2w |  | GuruswamiS | 80h | 80h |

| ID | WBS | Task | Type | Duration | Start | Finish | Predecessors | Complete | Remaining | Baseline start | Baseline finish | Baseline duration | Total slack | Constraint | Resources | Work | Actual work |
| --- | --- | --- | --- | --- | --- | --- | --- | --- | --- | --- | --- | --- | --- | --- | --- | --- | --- |
| 52 | 1.3.2.8.2 | **Test** |  | 8d | 2006-07-17 A | 2006-07-26 A | 51 | 100% |  | 2006-07-17 | 2006-07-26 | 8d |  |  |  | 64h | 64h |
| 53 | 1.3.2.8.2.1 | Unit Test |  | 3d | 2006-07-17 A | 2006-07-19 A |  | 100% |  | 2006-07-17 | 2006-07-19 | 3d |  |  | GuruswamiS | 24h | 24h |
| 54 | 1.3.2.8.2.2 | Integration Test & Fixes (Dev) |  | 5d | 2006-07-20 A | 2006-07-26 A | 53 | 100% |  | 2006-07-20 | 2006-07-26 | 5d |  |  | GuruswamiS | 40h | 40h |
| 55 | 1.3.2.8.2.3 | Milestone: Test Fixes on Dev | milestone | 0d | 2006-07-26 A | 2006-07-26 A | 54 | 100% |  | 2006-07-26 | 2006-07-26 | 0d |  |  | GuruswamiS |  |  |
| 56 | 1.3.2.6 | MileStone: Dev database ready | milestone | 0d | 2006-07-19 | 2006-07-19 | 57 |  |  | 2006-07-19 | 2006-07-19 | 0d | 11d |  |  |  |  |
| 57 | 1.3.2.10 | **Database design and implementation** |  | 7d | 2006-07-11 A | 2006-07-19 A |  | 100% |  | 2006-07-11 | 2006-07-19 | 7d |  |  |  | 104h | 104h |
| 58 | 1.3.2.10.1 | Create Db schema |  | 4d | 2006-07-11 A | 2006-07-17 A | 43 | 100% |  | 2006-07-11 | 2006-07-17 | 4d |  |  | JiangHo [250%] | 80h | 80h |
| 59 | 1.3.2.10.2 | Populate data (GenotypeFinding & SNPAssay) |  | 3d | 2006-07-17 A | 2006-07-19 A | 58 | 100% |  | 2006-07-17 | 2006-07-19 | 3d |  |  | JiangHo | 24h | 24h |
| 60 | 1.3.3.2 | MileStone: Completed middle-tier implementation | milestone | 0d | 2006-08-04 | 2006-08-04 | 61 |  |  | 2006-08-04 | 2006-08-04 | 0d | 30d |  |  |  |  |
| 61 | 1.3.2.12 | **Middle-tier implementation** |  | 20d | 2006-07-10 A | 2006-08-04 A |  | 100% |  | 2006-07-10 | 2006-08-04 | 20d |  |  |  | 160h | 160h |
| 62 | 1.3.2.12.1 | Draft middleware design document - CGEMS |  | 1w | 2006-07-10 A | 2006-07-17 A | 47 | 100% |  | 2006-07-10 | 2006-07-17 | 1w |  |  | BhatturR | 40h | 40h |
| 63 | 1.3.2.12.2 | Implement CGEMS DTO and service middletier |  | 3w | 2006-07-17 A | 2006-08-04 A | 62 | 100% |  | 2006-07-17 | 2006-08-04 | 3w |  |  | BhatturR | 120h | 120h |
| 64 | 1.3.2.13 | **caBIG Compliance & caGRID** |  | 28d | 2006-06-21 A | 2006-07-28 A |  | 100% |  | 2006-06-21 | 2006-07-28 | 28d |  |  |  | 224h | 224h |
| 65 | 1.3.2.13.1 | Fully Annotate Model |  | 2w | 2006-06-21 A | 2006-07-04 A | 43 | 100% |  | 2006-06-21 | 2006-07-04 | 2w |  |  | ZhangD | 80h | 80h |
| 66 | 1.3.2.13.2 | Process Model thru SIW |  | 8d | 2006-07-05 A | 2006-07-14 A | 65 | 100% |  | 2006-07-05 | 2006-07-14 | 8d |  |  | ZhangD | 64h | 64h |
| 67 | 1.3.2.13.3 | Register Model in caDSR |  | 2w | 2006-07-17 A | 2006-07-28 A | 66 | 100% |  | 2006-07-17 | 2006-07-28 | 2w |  |  | NCICB | 80h | 80h |
| 68 | 1.3.3 | **Iteration 2b - I-SPY Findings** |  | 85.57d | 2006-06-27 A | 2006-10-24 |  | 51% | 41.58d | 2006-06-27 | 2006-10-24 | 85.57d | 0d |  |  | 1352h | 672h |
| 69 | 1.5.5.3.2 | Milestone: Clinical Object Model Supports Clinical Queries | milestone | 0d | 2006-09-27 | 2006-09-27 | 70 |  |  | 2006-09-14 | 2006-09-14 | 0d | 4d |  |  |  |  |
| 70 | 1.3.3.2 | **CG - Model with I-SPY Finding Pkgs** |  | 16d | 2006-06-27 A | 2006-07-18 A |  | 100% |  | 2006-06-27 | 2006-07-18 | 16d |  |  |  | 128h | 128h |
| 71 | 1.3.3.2.1 | Design CG OM packages |  | 14d | 2006-06-27 A | 2006-07-17 A |  | 100% |  | 2006-06-27 | 2006-07-17 | 14d |  | start no earlier than 2006-06-15 | GeorgeDa | 112h | 112h |
| 72 | 1.3.3.2.2 | Review OM with the caIntegrator team |  | 1d | 2006-07-17 A | 2006-07-17 A | 71 | 100% |  | 2006-07-17 | 2006-07-17 | 1d |  |  | GeorgeDa | 8h | 8h |
| 73 | 1.3.3.2.3 | Milestone: Complete CG - OM | milestone | 0d | 2006-07-17 A | 2006-07-17 A | 72 | 100% |  | 2006-07-17 | 2006-07-17 | 0d |  |  | GeorgeDa |  |  |
| 74 | 1.3.3.2.4 | Refactor FISH into the CG OM package |  | 1d | 2006-07-18 A | 2006-07-18 A | 72 | 100% |  | 2006-07-18 | 2006-07-18 | 1d |  |  | GeorgeDa | 8h | 8h |
| 75 | 1.3.3.3 | **Generate API using caCORE-SDK** |  | 28d | 2006-07-19 A | 2006-08-25 A | 70 | 100% |  | 2006-07-19 | 2006-08-25 | 28d |  |  |  | 144h | 144h |
| 76 | 1.3.3.3.1 | Generate API using caCORE SDK |  | 4w | 2006-07-19 A | 2006-08-15 A |  | 100% |  | 2006-07-19 | 2006-08-15 | 4w |  |  | GeorgeDa [50%] | 80h | 80h |

| ID | WBS | Task | Type | Duration | Start | Finish | Predecessors | Complete | Remaining | Baseline start | Baseline finish | Baseline duration | Total slack | Free slack | Resources | Work | Actual work |
| --- | --- | --- | --- | --- | --- | --- | --- | --- | --- | --- | --- | --- | --- | --- | --- | --- | --- |
| 77 | 1.3.3.3.2 | **Test** |  | 8d | 2006-08-16 A | 2006-08-25 A | 76 | 100% |  | 2006-08-16 | 2006-08-25 | 8d |  |  |  | 64h | 64h |
| 78 | 1.3.3.3.2.1 | Unit Test |  | 3d | 2006-08-16 A | 2006-08-18 A |  | 100% |  | 2006-08-16 | 2006-08-18 | 3d |  |  | GeorgeDa | 24h | 24h |
| 79 | 1.3.3.3.2.2 | Integration Test & Fixes (Dev) |  | 5d | 2006-08-21 A | 2006-08-25 A | 78 | 100% |  | 2006-08-21 | 2006-08-25 | 5d |  |  | GeorgeDa | 40h | 40h |
| 80 | 1.3.3.3.2.3 | Milestone: Test Fixes on Dev | milestone | 0d | 2006-08-25 A | 2006-08-25 A | 79 | 100% |  | 2006-08-25 | 2006-08-25 | 0d |  |  | GeorgeDa |  |  |
| 81 | 1.3.3.4 | **Database design and implementation** |  | 37d | 2006-07-20 A | 2006-09-11 A | 70, 57 | 100% |  | 2006-07-20 | 2006-08-16 | 20d |  |  |  | 160h | 160h |
| 82 | 1.3.3.4.1 | Create Db schema |  | 2w | 2006-07-20 A | 2006-08-02 A |  | 100% |  | 2006-07-20 | 2006-08-02 | 2w |  |  | JiangHo | 80h | 80h |
| 83 | 1.3.3.4.2 | Load data |  | 2w | 2006-08-03 A | 2006-09-11 A | 82 | 100% |  | 2006-08-03 | 2006-08-16 | 2w |  |  | JiangHo | 80h | 80h |
| 84 | 1.3.3.5 | **Middle-tier Implementation** |  | 56.57d | 2006-08-07 A | 2006-10-24 | 63 | 7% | 52.45d | 2006-08-07 | 2006-10-24 | 56.57d | 0d |  |  | 480h | 40h |
| 85 | 1.3.3.5.1 | Draft design document (caBIG template) for ISPY |  | 1w | 2006-08-07 A | 2006-08-11 A |  | 100% |  | 2006-08-07 | 2006-08-11 | 1w |  |  | BhatturR | 40h | 40h |
| 86 | 1.3.3.5.2 | Implement Query Service Layer |  | 5.71w | 2006-08-14 | 2006-09-21 | 85 |  |  | 2006-08-14 | 2006-09-21 | 5.71w | 0d |  | BhatturR [70%] | 160h |  |
| 87 | 1.3.3.5.3 | Implement Middle Tier code to support FISH |  | 8d | 2006-09-21 | 2006-10-03 | 86 |  |  | 2006-09-21 | 2006-10-03 | 8d | 0d |  | BhatturR | 64h |  |
| 88 | 1.5.5.4.3 | MileStone: Middle-tier for FISH completed | milestone | 0d | 2006-10-03 | 2006-10-03 | 87 |  |  | 2006-10-03 | 2006-10-03 | 0d | 1d |  |  |  |  |
| 89 | 1.3.3.5.5 | Implement Middle Tier Code to support IHC |  | 8d | 2006-10-03 | 2006-10-13 | 87 |  |  | 2006-10-03 | 2006-10-13 | 8d | 1.18d | 0d | GeorgeDa | 64h |  |
| 90 | 1.5.5.5.3 | MileStone: Middle-tier for IHC completed | milestone | 0d | 2006-10-13 | 2006-10-13 | 89 |  |  | 2006-10-13 | 2006-10-13 | 0d | 4.18d |  |  |  |  |
| 91 | 1.3.3.5.7 | Implement Middle Tier Code to support P53 |  | 4d | 2006-10-13 | 2006-10-19 | 89 |  |  | 2006-10-13 | 2006-10-19 | 4d | 1.18d | 0.18d | GeorgeDa | 32h |  |
| 92 | 1.5.5.6.3 | MileStone: Middle-tier for P53 completed | milestone | 0d | 2006-10-19 | 2006-10-19 | 91 |  |  | 2006-10-19 | 2006-10-19 | 0d | 1d |  |  |  |  |
| 93 | 1.3.3.5.9 | Implement Middle Tier Code to support GE |  | 8d | 2006-10-03 | 2006-10-13 | 87 |  |  | 2006-10-03 | 2006-10-13 | 8d | 0d |  | BhatturR | 64h |  |
| 94 | 1.5.5.7.3 | MileStone: Middle-tier for GE completed | milestone | 0d | 2006-10-13 | 2006-10-13 | 93 |  |  | 2006-10-13 | 2006-10-13 | 0d | 5.18d |  |  |  |  |
| 95 | 1.3.3.5.11 | Implement Junit test suite and perform unit test |  | 1w | 2006-10-13 | 2006-10-20 | 93 |  |  | 2006-10-13 | 2006-10-20 | 1w | 0d |  | BhatturR | 40h |  |
| 96 | 1.3.3.5.12 | Milestone: Completed Design document |  | 2d | 2006-10-20 | 2006-10-24 | 95 |  |  | 2006-10-20 | 2006-10-24 | 2d | 0d |  | BhatturR | 16h |  |
| 97 | 1.3.3.6 | **caBIG compliance & caGRID** |  | 50d | 2006-07-31 A | 2006-10-06 | 73, 64 | 50% | 25d | 2006-07-31 | 2006-10-06 | 50d | 11.57d |  |  | 440h | 200h |
| 98 | 1.3.3.6.1 | **Registeration of CDEs in caDSR - 2.0 OM** |  | 45d | 2006-07-31 A | 2006-09-29 |  | 55% | 20.45d | 2006-07-31 | 2006-09-29 | 45d | 16.57d |  |  | 400h | 200h |
| 99 | 1.3.3.6.1.1 | Fully Annotate Model |  | 3w | 2006-07-31 A | 2006-08-18 A |  | 100% |  | 2006-07-31 | 2006-08-18 | 3w |  |  | ZhangD | 120h | 120h |
| 100 | 1.3.3.6.1.2 | Process Model thru SIW |  | 3w | 2006-08-21 A | 2006-09-08 A | 99 | 100% |  | 2006-08-21 | 2006-09-08 | 3w |  |  | ZhangD | 80h | 80h |
| 101 | 1.3.3.6.1.3 | Register Model in caDSR |  | 2w | 2006-09-11 | 2006-09-22 | 100 |  |  | 2006-09-11 | 2006-09-22 | 2w | 21.57d |  | NCICB | 80h |  |
| 102 | 1.3.3.6.1.4 | Register CGOM 2.0 with caGRID |  | 2w | 2006-09-11 | 2006-09-22 | 100 |  |  | 2006-09-11 | 2006-09-22 | 2w | 11.57d | 0d | SahniH | 80h |  |
| 103 | 1.3.3.6.1.5 | Curate additional metadata |  | 1w | 2006-09-25 | 2006-09-29 | 102 |  |  | 2006-09-25 | 2006-09-29 | 1w | 11.57d | 0d | NCICB | 40h |  |
| 104 | 1.3.3.6.2 | Establish documentation for VCDE & Arch. Review |  | 1w | 2006-10-02 | 2006-10-06 | 103 |  |  | 2006-10-02 | 2006-10-06 | 1w | 11.57d | 0d | ZhangD | 40h |  |
| 105 | 1.3.3.6.3 | MileStone: caBIG VCDE & Arch. Review presentation | milestone | 0d | 2006-10-06 | 2006-10-06 | 104 |  |  | 2006-10-06 | 2006-10-06 | 0d | 11.57d |  | ZhangD |  |  |

| ID | WBS | Task | Type | Duration | Start | Finish | Predecessors | Remaining | Baseline start | Baseline finish | Baseline duration | Total slack | Free slack | Resources |
| --- | --- | --- | --- | --- | --- | --- | --- | --- | --- | --- | --- | --- | --- | --- |
| 106 | 1.3.4 | **Iteration 3** |  | 47d? | 2006-03-28 A | 2006-05-31 |  | 47d? | 2006-03-28 | 2006-05-31 | 47d? | 103.57d |  |  |
| 107 | 1.3.4.1 | **caIntegratorVista (ETL status portal)** |  | 43d? | 2006-03-28 A | 2006-05-25 |  | 43d? | 2006-03-28 | 2006-05-25 | 43d? | 107.57d |  |  |
| 108 | 1.3.4.1.1 | **Requirements Gathering** |  | 3d | 2006-03-28 A | 2006-03-30 |  | 3d | 2006-03-28 | 2006-03-30 | 3d | 147.57d |  |  |
| 109 | 1.3.4.1.1.1 | Determine Requirements |  | 1d | 2006-03-28 A | 2006-03-28 |  | 1d | 2006-03-28 | 2006-03-28 | 1d | 0d |  | SahniH |
| 110 | 1.3.4.1.1.2 | Determine Basic Use Cases |  | 1d | 2006-03-29 A | 2006-03-29 | 109 | 1d | 2006-03-29 | 2006-03-29 | 1d | 0d |  | SahniH |
| 111 | 1.3.4.1.1.3 | Prioritize Use Cases |  | 1d | 2006-03-30 A | 2006-03-30 | 109, 110 | 1d | 2006-03-30 | 2006-03-30 | 1d | 147.57d | 0d | MadhavaS |
| 112 | 1.3.4.1.1.4 | Milestone: General Requirements Captured | milestone | 0d | 2006-03-30 | 2006-03-30 | 111 |  | 2006-03-30 | 2006-03-30 | 0d | 147.57d |  |  |
| 113 | 1.3.4.1.2 | **Implementation** |  | 1d? | 2006-05-25 | 2006-05-25 |  |  | 2006-05-25 | 2006-05-25 | 1d? | 107.57d |  |  |
| 114 | 1.3.4.1.2.1 | Draft Design document for Study Gateway |  | 1d? | 2006-05-25 | 2006-05-25 |  |  | 2006-05-25 | 2006-05-25 | 1d? | 107.57d |  |  |
| 115 | 1.3.4.1.2.2 | Implement Study gateway module |  | 1d? | 2006-05-25 | 2006-05-25 |  |  | 2006-05-25 | 2006-05-25 | 1d? | 107.57d |  |  |
| 116 | 1.3.4.1.2.3 | Develop Unit test and perform testing |  | 1d? | 2006-05-25 | 2006-05-25 |  |  | 2006-05-25 | 2006-05-25 | 1d? | 107.57d |  |  |
| 117 | 1.3.4.1.2.4 | MileStone: Complete Design Document & study gateway module |  | 1d? | 2006-05-25 | 2006-05-25 |  |  | 2006-05-25 | 2006-05-25 | 1d? | 107.57d |  |  |
| 118 | 1.3.4.2 | **API Development - caCORE SDK** |  | 5d? | 2006-05-25 | 2006-05-31 |  |  | 2006-05-25 | 2006-05-31 | 5d? | 103.57d |  |  |
| 119 | 1.3.4.2.1 | Implement hibernate mappings |  | 1d? | 2006-05-25 | 2006-05-25 |  |  | 2006-05-25 | 2006-05-25 | 1d? | 107.57d |  |  |
| 120 | 1.3.4.2.2 | Update design document |  | 1w | 2006-05-25 | 2006-05-31 |  |  | 2006-05-25 | 2006-05-31 | 1w | 103.57d |  |  |
| 121 | 1.3.4.3 | **Middle-tier implementation** |  | 1d? | 2006-05-25 | 2006-05-25 |  |  | 2006-05-25 | 2006-05-25 | 1d? | 107.57d |  |  |
| 122 | 1.3.4.3.1 | Implement hibernate mappings |  | 1d? | 2006-05-25 | 2006-05-25 |  |  | 2006-05-25 | 2006-05-25 | 1d? | 107.57d |  |  |
| 123 | 1.3.4.3.2 | Implement Service layer |  | 1d? | 2006-05-25 | 2006-05-25 |  |  | 2006-05-25 | 2006-05-25 | 1d? | 107.57d |  |  |
| 124 | 1.3.4.3.3 | Implement Junit test suite and perform unit test |  | 1d? | 2006-05-25 | 2006-05-25 |  |  | 2006-05-25 | 2006-05-25 | 1d? | 107.57d |  |  |
| 125 | 1.3.4.3.4 | Milestone: Updated Design document | milestone | 0d | 2006-05-25 | 2006-05-25 |  |  | 2006-05-25 | 2006-05-25 | 0d | 108.57d |  |  |
| 126 | 1.3.4.4 | **Database development** |  | 1d? | 2006-05-25 | 2006-05-25 |  |  | 2006-05-25 | 2006-05-25 | 1d? | 107.57d |  |  |
| 127 | 1.3.4.4.1 | Develop table creation scripts and data migration |  | 1d? | 2006-05-25 | 2006-05-25 |  |  | 2006-05-25 | 2006-05-25 | 1d? | 107.57d |  |  |
| 128 | 1.3.4.4.2 | Complete database schema development & data migration |  | 1d? | 2006-05-25 | 2006-05-25 |  |  | 2006-05-25 | 2006-05-25 | 1d? | 107.57d |  |  |
| 129 | 1.3.4.5 | **Technical guide** |  | 1d? | 2006-05-25 | 2006-05-25 |  |  | 2006-05-25 | 2006-05-25 | 1d? | 107.57d |  |  |
| 130 | 1.3.4.5.1 | Draft technical guide |  | 1d? | 2006-05-25 | 2006-05-25 |  |  | 2006-05-25 | 2006-05-25 | 1d? | 107.57d |  |  |
| 131 | 1.3.4.5.2 | Review technical guide with Tech. writer & caIntegrator team |  | 1d? | 2006-05-25 | 2006-05-25 |  |  | 2006-05-25 | 2006-05-25 | 1d? | 107.57d |  |  |
| 132 | 1.3.4.5.3 | Milestone: Completed technical guide |  | 1d? | 2006-05-25 | 2006-05-25 |  |  | 2006-05-25 | 2006-05-25 | 1d? | 107.57d |  |  |
| 133 | 1.3.4.6 | Deploy iteration to DEV Server |  | 1d? | 2006-05-25 | 2006-05-25 |  |  | 2006-05-25 | 2006-05-25 | 1d? | 107.57d |  |  |

| ID | WBS | Task | Type | Duration | Start | Finish | Baseline start | Baseline finish | Baseline duration | Total slack |
| --- | --- | --- | --- | --- | --- | --- | --- | --- | --- | --- |
| 134 | 1.4 | **Transition** |  | 1d? | 2006-05-25 | 2006-05-25 | 2006-05-25 | 2006-05-25 | 1d? | 107.57d |
| 135 | 1.4.1 | Implement API Integration test suite |  | 1d? | 2006-05-25 | 2006-05-25 | 2006-05-25 | 2006-05-25 | 1d? | 107.57d |
| 136 | 1.4.2 | Test all service layer APIs |  | 1d? | 2006-05-25 | 2006-05-25 | 2006-05-25 | 2006-05-25 | 1d? | 107.57d |
| 137 | 1.4.3 | Milestone: Completed CGOM 2.0 & Service Layer APIs | milestone | 0d | 2006-05-25 | 2006-05-25 | 2006-05-25 | 2006-05-25 | 0d | 108.57d |
| 138 | 1.5 | **Evolutionary Cycle 2:** |  | 1d? | 2006-05-25 | 2006-05-25 | 2006-05-25 | 2006-05-25 | 1d? | 107.57d |
| 139 | 1.5.1 | Iteration 1 |  | 1d? | 2006-05-25 | 2006-05-25 | 2006-05-25 | 2006-05-25 | 1d? | 107.57d |
