# CGEMS_download

Schedule from MS Project, 2006-10-18 to 2006-11-29, A marks actual dates.
NCI

## Calendars

- Standard: Mon-Fri 08:00-12:00, 13:00-17:00; Sat-Sun off.

## Resources

| Resource |
| --- |
| Dana Zhang |
| Himanso Sanhi |
| Srini Guruswami |
| Himanso Sahni |
| Alex Jiang |
| Long |
| Ying |
| Jenny Glenn |
| Ye Wu |
| Ying Long |
| Terp systems |
| QA |
| Jenny Glenn/Doc |
| Dana Zhang / Himanso Sahni |
| Systems |
| Doc team /Jenny Glenn |
| Doc Team |
| Jill Hatfield |
| Carolyn |
| Carolyn Klinger |
| Himanso Sanhi/ Guruswami |

## Schedule

| ID | WBS | Task | Type | Duration | Start | Finish | Predecessors | Complete | Remaining | Total slack | Free slack | Resources | Work | Actual work |
| --- | --- | --- | --- | --- | --- | --- | --- | --- | --- | --- | --- | --- | --- | --- |
| 1 | 1 | **CGEMS download release** |  | 31d | 2006-10-18 A | 2006-11-29 |  | 25% | 23.2d | 0d |  |  | 800h | 347.2h |
| 2 | 1.1 | **set up cgems API locally** |  | 10d | 2006-10-18 A | 2006-10-31 |  | 91% | 0.9d | 21d |  | Dana Zhang; Himanso Sanhi; Srini Guruswami | 304h | 275.2h |
| 3 | 1.1.1 | modified ant script |  | 2d | 2006-10-18 A | 2006-10-19 A |  | 100% |  |  |  |  |  |  |
| 4 | 1.1.2 | add copy hbm files from caintegrator-spec src folder |  | 1d | 2006-10-20 A | 2006-10-20 A | 3 | 100% |  |  |  | Dana Zhang | 8h | 8h |
| 5 | 1.1.3 | write ank tast to remove .bean from all hbm files copied |  | 2d | 2006-10-23 A | 2006-10-24 A | 4 | 100% |  |  |  | Dana Zhang | 16h | 16h |
| 6 | 1.1.4 | add unit test as a ant target |  | 3d | 2006-10-25 A | 2006-10-27 | 5 | 70% | 0.9d | 23d |  | Himanso Sahni | 24h | 16.8h |
| 7 | 1.1.5 | create cgems database synonym to the cgems dev db, filter out two tables: GENOTYPE_FACT & STUDY_PARTICIPANT |  | 2d | 2006-10-30 A | 2006-10-31 A | 6 | 100% |  |  |  | Alex Jiang | 16h | 16h |
| 8 | 1.2 | **CGEMS Object Query & Deployment** |  | 31d | 2006-10-18 A | 2006-11-29 |  | 13% | 26.85d | 0d |  |  | 496h | 72h |
| 9 | 1.2.1 | **Test the API locally** |  | 4d | 2006-10-30 A | 2006-11-02 A |  | 100% |  |  |  |  | 48h | 48h |
| 10 | 1.2.1.1 | Test Happy.jsp |  | 2d | 2006-10-30 A | 2006-10-31 A | 6 | 100% |  |  |  | Dana Zhang | 16h | 16h |
| 11 | 1.2.1.2 | test client jar to perform unit testing |  | 2d | 2006-11-01 A | 2006-11-02 A | 10 | 100% |  |  |  | Dana Zhang; Himanso Sahni | 32h | 32h |
| 12 | 1.2.2 | **Deploy to dev serve** |  | 2d | 2006-11-03 A | 2006-11-06 A |  | 100% |  |  |  |  |  |  |
| 13 | 1.2.2.1 | move the API to the dev server, and test the api |  | 2d | 2006-11-03 A | 2006-11-06 A | 11 | 100% |  |  |  |  |  |  |
| 14 | 1.2.3 | **Documentation Support** |  | 11d | 2006-10-25 A | 2006-11-08 |  | 17% | 9.17d | 15d |  |  | 96h | 24h |
| 15 | 1.2.3.1 | Document deployment/app configuration instructions |  | 3d | 2006-11-03 | 2006-11-07 | 11 |  |  | 15d | 0d | Himanso Sanhi/ Guruswami | 24h |  |
| 16 | 1.2.3.2 | Add Liceanse |  | 1d | 2006-11-08 | 2006-11-08 | 15 |  |  | 15d |  | Srini Guruswami | 8h |  |
| 17 | 1.2.3.3 | CGEMS Tech Guide Edits |  | 3d | 2006-10-25 A | 2006-10-27 | 5 | 50% | 1.5d | 21d | 0d | Himanso Sahni; Dana Zhang | 48h | 24h |
| 18 | 1.2.3.4 | Java Docs/ EA Docs |  | 2d | 2006-10-30 | 2006-10-31 | 17 |  |  | 21d |  | Dana Zhang | 16h |  |
| 19 | 1.2.4 | **Create Test Plan/Install Guide** |  | 20d | 2006-10-18 | 2006-11-14 |  |  |  | 0d |  |  | 160h |  |
| 20 | 1.2.4.1 | write test plan |  | 10d | 2006-10-18 | 2006-10-31 |  |  |  | 0d |  | Jenny Glenn | 80h |  |
| 21 | 1.2.4.2 | Edit install guide / Tech guide |  | 5d | 2006-11-01 | 2006-11-07 | 20 |  |  | 0d |  | Jenny Glenn | 40h |  |
| 22 | 1.2.4.3 | Tech Guide |  | 5d | 2006-11-08 | 2006-11-14 | 21, 17 |  |  | 0d |  | Carolyn Klinger | 40h |  |
| 23 | 1.2.5 | **Deploy to QA** |  | 22d | 2006-10-18 | 2006-11-16 |  |  |  | 9d |  |  | 120h |  |
| 24 | 1.2.5.1 | send the request in for QA deployment |  | 3d | 2006-11-07 | 2006-11-09 | 13 |  |  | 11d | 0d | Ye Wu | 24h |  |
| 25 | 1.2.5.2 | Test Client jar/ Happy.jsp on QA |  | 3d | 2006-11-10 | 2006-11-14 | 24 |  |  | 11d |  | Jenny Glenn | 24h |  |
| 26 | 1.2.5.3 | Update Download Page/Bundle Zip files |  | 3d | 2006-10-18 | 2006-10-20 |  |  |  | 28d |  | Dana Zhang; Himanso Sahni | 48h |  |
| 27 | 1.2.5.4 | Release Notes |  | 1d | 2006-10-18 | 2006-10-18 |  |  |  | 30d |  | Himanso Sahni | 8h |  |
| 28 | 1.2.5.5 | CGEMS install guide/ Tech Guide Final | milestone | 0d | 2006-11-14 | 2006-11-14 | 22 |  |  | 0d |  | Jill Hatfield; Carolyn Klinger |  |  |
| 29 | 1.2.5.6 | Test Download Bundle/Zip File/ Java Docs |  | 2d | 2006-11-15 | 2006-11-16 | 28 |  |  | 0d |  | Jenny Glenn | 16h |  |

| ID | WBS | Task | Duration | Start | Finish | Predecessors | Total slack | Resources | Work |
| --- | --- | --- | --- | --- | --- | --- | --- | --- | --- |
| 30 | 1.2.6 | **Deploy to Stage** | 7d | 2006-11-17 | 2006-11-27 |  | 0d |  | 56h |
| 31 | 1.2.6.1 | send the request in for staging deployment | 3d | 2006-11-17 | 2006-11-21 | 29 | 0d | Systems | 24h |
| 32 | 1.2.6.2 | Test Client jar/ Happy.jsp on staging | 2d | 2006-11-22 | 2006-11-23 | 31 | 0d | Jenny Glenn | 16h |
| 33 | 1.2.6.3 | Test Download Bundle/Zip File/ Java Docs | 2d | 2006-11-24 | 2006-11-27 | 32 | 0d | Jenny Glenn | 16h |
| 34 | 1.2.7 | **Deploy To Production** | 2d | 2006-11-28 | 2006-11-29 |  | 0d |  | 16h |
| 35 | 1.2.7.1 | move the cgmes download package to the prodution site | 2d | 2006-11-28 | 2006-11-29 | 33 | 0d | Systems | 16h |
