# CSP

Schedule from MS Project, 2006-08-07 to 2006-11-24.
SAIC

## Calendars

- Standard: Mon-Fri 08:00-12:00, 13:00-17:00; Sat-Sun off. Exceptions (off unless hours are given): 2006-10-09.

## Resources

| Resource |
| --- |
| LiuH |
| GuruswamiS |
| LongY |
| LandyR |
| MujuS |
| NCICB |
| JiangHo |
| MadhavaS |
| ChenHa |
| BhattarR |

## Schedule

| ID | WBS | Task | Type | Duration | Start | Finish | Predecessors | Baseline start | Baseline finish | Baseline duration | Total slack | Free slack | Resources | Work |
| --- | --- | --- | --- | --- | --- | --- | --- | --- | --- | --- | --- | --- | --- | --- |
| 1 | 1 | **CSP 1.0 Release** |  | 79d | 2006-08-07 | 2006-11-24 |  | 2006-08-07 | 2006-11-06 | 66d | 0d |  |  | 1136h |
| 2 | 1.1 | **Project Management and Control** |  | 60d | 2006-08-07 | 2006-10-30 |  | 2006-08-07 | 2006-10-27 | 60d | 19d |  |  | 96h |
| 3 | 1.1.1 | Project Management |  | 60d | 2006-08-07 | 2006-10-30 |  | 2006-08-07 | 2006-10-27 | 60d | 10d |  | GuruswamiS [10%] | 48h |
| 4 | 1.1.2 | Project Control |  | 60d | 2006-08-07 | 2006-10-30 |  | 2006-08-07 | 2006-10-27 | 60d | 10d |  | GuruswamiS [10%] | 48h |
| 5 | 1.2 | **Inception Phase** |  | 36d | 2006-08-07 | 2006-09-25 |  | 2006-08-07 | 2006-09-25 | 36d | 0d |  |  | 296h |
| 6 | 1.2.1 | **Requirements Gathering** |  | 19d | 2006-08-07 | 2006-08-31 |  | 2006-08-07 | 2006-08-31 | 19d | 0d |  |  | 152h |
| 7 | 1.2.1.1 | Determine General Requirements |  | 2d | 2006-08-07 | 2006-08-08 |  | 2006-08-07 | 2006-08-08 | 2d | 0d |  | GuruswamiS | 16h |
| 8 | 1.2.1.2 | Draft Wireframes |  | 2w | 2006-08-09 | 2006-08-22 | 7 | 2006-08-09 | 2006-08-22 | 2w | 0d |  | GuruswamiS | 80h |
| 9 | 1.2.1.3 | Review Wireframes with NHGRI/Broad/Wash U/JCVI |  | 1d | 2006-08-23 | 2006-08-23 | 8 | 2006-08-23 | 2006-08-23 | 1d | 0d |  | NCICB | 8h |
| 10 | 1.2.1.4 | Determine Basic Use Cases |  | 1w | 2006-08-24 | 2006-08-30 | 9 | 2006-08-24 | 2006-08-30 | 1w | 0d |  | MujuS | 40h |
| 11 | 1.2.1.5 | Prioritize Use Cases |  | 1d | 2006-08-31 | 2006-08-31 | 7, 10 | 2006-08-31 | 2006-08-31 | 1d | 0d |  | MadhavaS | 8h |
| 12 | 1.2.2 | **Documentation** |  | 17d | 2006-09-01 | 2006-09-25 |  | 2006-09-01 | 2006-09-25 | 17d | 0d |  |  | 144h |
| 13 | 1.2.2.1 | Draft Project Plan |  | 1d | 2006-09-01 | 2006-09-01 | 11 | 2006-09-01 | 2006-09-01 | 1d | 50d |  | GuruswamiS | 8h |
| 14 | 1.2.2.2 | Draft Requirements Specification Document |  | 1w | 2006-09-01 | 2006-09-07 | 11 | 2006-09-01 | 2006-09-07 | 1w | 0d |  | MujuS | 40h |
| 15 | 1.2.2.3 | Draft Design Document |  | 2d | 2006-09-08 | 2006-09-11 | 14 | 2006-09-08 | 2006-09-11 | 2d | 34d | 0d | MujuS | 16h |
| 16 | 1.2.2.4 | Draft Test Plan |  | 1w | 2006-09-12 | 2006-09-18 | 15 | 2006-09-12 | 2006-09-18 | 1w | 34d | 0d | LongY | 40h |
| 17 | 1.2.2.5 | Draft Test Cases |  | 1w | 2006-09-19 | 2006-09-25 | 16 | 2006-09-19 | 2006-09-25 | 1w | 34d |  | LongY | 40h |
| 18 | 1.2.3 | Milestone: General Requirements Captured & Priortized | milestone | 0d | 2006-09-07 | 2006-09-07 | 14 | 2006-09-07 | 2006-09-07 | 0d | 30d | 0d |  |  |
| 19 | 1.3 | **Elaboration Phase** |  | 48d | 2006-09-08 | 2006-11-15 |  | 2006-09-08 | 2006-10-26 | 35d | 3d |  |  | 672h |
| 20 | 1.3.1 | **Architecture** |  | 23d | 2006-09-08 | 2006-10-11 |  | 2006-09-08 | 2006-09-25 | 12d | 32d |  |  | 48h |
| 21 | 1.3.1.1 | Initial Draft of Architecture |  | 2d | 2006-09-08 | 2006-09-11 | 18 | 2006-09-08 | 2006-09-11 | 2d | 34d | 0d | MujuS [50%] | 8h |
| 22 | 1.3.1.2 | Internal review with caIntegrator Team |  | 2d | 2006-09-12 | 2006-09-13 | 21 | 2006-09-12 | 2006-09-13 | 2d | 34d | 0d | MujuS [50%] | 8h |
| 23 | 1.3.1.3 | Incorporate Comments/Feedback from the team review |  | 2d | 2006-09-14 | 2006-09-15 | 22 | 2006-09-14 | 2006-09-15 | 2d | 34d | 0d | MujuS [50%] | 8h |
| 24 | 1.3.1.4 | Review architecture with the "Review Board" |  | 1d | 2006-09-18 | 2006-09-18 | 23 | 2006-09-18 | 2006-09-18 | 1d | 34d | 0d | MujuS [50%] | 4h |
| 25 | 1.3.1.5 | Draft design document (caBIG template) |  | 1w | 2006-09-19 | 2006-10-11 | 24 | 2006-09-19 | 2006-09-25 | 1w | 23d | 0d | MujuS [50%] | 20h |
| 26 | 1.3.1.6 | Milestone: Completed Design document | milestone | 0d | 2006-10-11 | 2006-10-11 | 25 | 2006-09-25 | 2006-09-25 | 0d | 27d |  |  |  |

| ID | WBS | Task | Type | Duration | Start | Finish | Predecessors | Baseline start | Baseline finish | Baseline duration | Total slack | Free slack | Resources | Work |
| --- | --- | --- | --- | --- | --- | --- | --- | --- | --- | --- | --- | --- | --- | --- |
| 27 | 1.3.2 | **Itreration 1a: FTP Site** |  | 2d | 2006-09-08 | 2006-09-11 | 14 | 2006-09-08 | 2006-09-11 | 2d | 53d |  |  | 16h |
| 28 | 1.3.2.1 | Develop CSP website to support bulk downloads |  | 1d | 2006-09-08 | 2006-09-08 |  | 2006-09-08 | 2006-09-08 | 1d | 44d | 0d | MujuS | 8h |
| 29 | 1.3.2.2 | Test bulk downloads via secure FTP |  | 1d | 2006-09-11 | 2006-09-11 | 28 | 2006-09-11 | 2006-09-11 | 1d | 44d |  | MujuS | 8h |
| 30 | 1.3.3 | **Iteration 1b: Prototype Development** |  | 22d | 2006-09-13 | 2006-10-13 | 14FS+3d |  |  |  | 0d |  |  | 96h |
| 31 | 1.3.3.1 | Develop backend (model, DTOs, API) for simple search (use case 1) |  | 1w | 2006-09-13 | 2006-09-19 |  |  |  |  | 0d |  | MujuS | 40h |
| 32 | 1.3.3.2 | Database design |  | 2d | 2006-09-20 | 2006-09-21 | 31 | 2006-09-12 | 2006-09-13 | 2d | 0d |  | JiangHo | 16h |
| 33 | 1.3.3.3 | Database implementation |  | 2d | 2006-09-22 | 2006-09-25 | 32 | 2006-09-14 | 2006-09-15 | 2d | 0d |  | JiangHo | 16h |
| 34 | 1.3.3.4 | Unit Test prototype use case |  | 13d | 2006-09-26 | 2006-10-13 | 33 |  |  |  | 0d |  | MujuS | 24h |
| 35 | 1.3.3.5 | Milestone: Completed backend prototype | milestone | 0d | 2006-10-13 | 2006-10-13 | 34 | 2006-09-25 | 2006-09-25 | 0d | 0d |  | MujuS |  |
| 36 | 1.3.4 | **Iteration 1c: Development** |  | 21d | 2006-10-16 | 2006-11-13 | 30 | 2006-09-08 | 2006-10-13 | 26d | 0d |  |  | 360h |
| 37 | 1.3.4.1 | **Requirements Analysis** |  | 2d | 2006-10-16 | 2006-10-17 |  | 2006-09-08 | 2006-09-11 | 2d | 0d |  |  | 16h |
| 38 | 1.3.4.1.1 | Requirements Outline |  | 1d | 2006-10-16 | 2006-10-16 |  | 2006-09-08 | 2006-09-08 | 1d | 0d |  | MujuS | 8h |
| 39 | 1.3.4.1.2 | Complete Requirements Analysis |  | 1d | 2006-10-17 | 2006-10-17 | 38 | 2006-09-11 | 2006-09-11 | 1d | 0d |  | MujuS | 8h |
| 40 | 1.3.4.2 | Design (cgom, service layer, middleware etc.) |  | 2d | 2006-10-18 | 2006-10-19 | 37 | 2006-09-12 | 2006-09-18 | 1w | 0d |  | MujuS | 16h |
| 41 | 1.3.4.3 | Finalize Database design |  | 1d | 2006-10-18 | 2006-10-18 | 37 | 2006-09-12 | 2006-09-13 | 2d | 17d | 0d | JiangHo | 8h |
| 42 | 1.3.4.4 | Finalize Database implementation |  | 1d | 2006-10-19 | 2006-10-19 | 41 | 2006-09-14 | 2006-09-15 | 2d | 17d |  | JiangHo | 8h |
| 43 | 1.3.4.5 | Code |  | 10d | 2006-10-20 | 2006-11-02 | 40 | 2006-09-19 | 2006-10-02 | 2w | 0d |  | MujuS | 80h |
| 44 | 1.3.4.6 | Unit Test |  | 2d | 2006-11-03 | 2006-11-06 | 43 |  |  |  | 5d |  |  |  |
| 45 | 1.3.4.7 | **User Interface Design** |  | 20d | 2006-10-16 | 2006-11-10 |  | 2006-09-08 | 2006-09-22 | 11d | 1d |  |  | 160h |
| 46 | 1.3.4.7.1 | Draft User Interface Components |  | 12d | 2006-10-16 | 2006-10-31 |  | 2006-09-08 | 2006-09-14 | 1w | 1d | 0d | LandyR | 96h |
| 47 | 1.3.4.7.2 | Internal Review of Draft UI components |  | 1d | 2006-11-01 | 2006-11-01 | 46 | 2006-09-15 | 2006-09-15 | 1d | 1d | 0d | LandyR | 8h |
| 48 | 1.3.4.7.3 | Incorporate comments/Feedback |  | 3d | 2006-11-02 | 2006-11-06 | 47 | 2006-09-18 | 2006-09-19 | 2d | 1d | 0d | LandyR | 24h |
| 49 | 1.3.4.7.4 | Incorporate icons, banners from Graphics Artist |  | 1d | 2006-11-07 | 2006-11-07 | 48 | 2006-09-20 | 2006-09-20 | 1d | 1d | 0d | LandyR | 8h |
| 50 | 1.3.4.7.5 | Incorporate comments/feedback from NHGRI |  | 3d | 2006-11-08 | 2006-11-10 | 49 | 2006-09-21 | 2006-09-22 | 2d | 1d | 0d | LandyR | 24h |
| 51 | 1.3.4.7.6 | Milestone: Completed UI Design | milestone | 0d | 2006-11-10 | 2006-11-10 | 50 | 2006-09-22 | 2006-09-22 | 0d | 1d |  |  |  |

| ID | WBS | Task | Type | Duration | Start | Finish | Predecessors | Baseline start | Baseline finish | Baseline duration | Total slack | Free slack | Resources | Work |
| --- | --- | --- | --- | --- | --- | --- | --- | --- | --- | --- | --- | --- | --- | --- |
| 52 | 1.3.4.8 | **Test** |  | 7d | 2006-11-03 | 2006-11-13 |  | 2006-10-03 | 2006-10-13 | 9d | 0d |  |  | 72h |
| 53 | 1.3.4.8.1 | Unit Test |  | 2d | 2006-11-03 | 2006-11-06 | 43 | 2006-10-03 | 2006-10-06 | 4d | 0d |  | MujuS; LandyR | 32h |
| 54 | 1.3.4.8.2 | Integration Test (Dev) |  | 5d | 2006-11-07 | 2006-11-13 | 53 | 2006-10-09 | 2006-10-13 | 5d | 0d |  | LongY | 40h |
| 55 | 1.3.4.8.3 | Milestone: Test Fixes on Dev | milestone | 0d | 2006-11-13 | 2006-11-13 | 54 | 2006-10-13 | 2006-10-13 | 0d | 0d |  |  |  |
| 56 | 1.3.5 | **Itreration 2a: Incorporate Security features (CSM)** |  | 2d | 2006-11-14 | 2006-11-15 | 36 | 2006-10-16 | 2006-10-26 | 9d | 0d |  |  | 32h |
| 57 | 1.3.5.1 | **Security (CSM) Requirements Analysis** |  | 1d | 2006-11-14 | 2006-11-14 |  | 2006-10-16 | 2006-10-16 | 1d | 7d | 0d |  | 8h |
| 58 | 1.3.5.1.1 | Complete Requirements Analysis |  | 1d | 2006-11-14 | 2006-11-14 |  | 2006-10-16 | 2006-10-16 | 1d | 7d |  | MujuS | 8h |
| 59 | 1.3.5.2 | Design |  | 0.5d | 2006-11-15 | 2006-11-15 | 57 | 2006-10-17 | 2006-10-17 | 1d | 7d | 0d | MujuS | 4h |
| 60 | 1.3.5.3 | Code |  | 0.5d | 2006-11-15 | 2006-11-15 | 59 | 2006-10-18 | 2006-10-18 | 1d | 7d |  | LandyR | 4h |
| 61 | 1.3.5.4 | **Test** |  | 2d | 2006-11-14 | 2006-11-15 |  | 2006-10-16 | 2006-10-26 | 9d | 0d |  |  | 16h |
| 62 | 1.3.5.4.1 | Unit Test |  | 1d | 2006-11-14 | 2006-11-14 |  | 2006-10-16 | 2006-10-19 | 4d | 0d |  | MujuS | 8h |
| 63 | 1.3.5.4.2 | Integration Test (Dev) |  | 1d | 2006-11-15 | 2006-11-15 | 62 | 2006-10-20 | 2006-10-26 | 5d | 0d |  | LongY | 8h |
| 64 | 1.3.5.4.3 | Milestone: Test Fixes on Dev | milestone | 0d | 2006-11-15 | 2006-11-15 | 63 | 2006-10-26 | 2006-10-26 | 0d | 0d |  | LongY |  |
| 65 | 1.3.6 | **Itreration 2b: Webgenome Integration** |  | 9d | 2006-10-16 | 2006-10-26 | 30 | 2006-10-16 | 2006-10-26 | 9d | 14d |  |  | 120h |
| 66 | 1.3.6.1 | **Requirements Analysis** |  | 1d | 2006-10-16 | 2006-10-16 |  | 2006-10-16 | 2006-10-16 | 1d | 17d | 0d |  | 8h |
| 67 | 1.3.6.1.1 | Complete Requirements Analysis |  | 1d | 2006-10-16 | 2006-10-16 |  | 2006-10-16 | 2006-10-16 | 1d | 17d |  | BhattarR | 8h |
| 68 | 1.3.6.2 | Design |  | 2d | 2006-10-17 | 2006-10-18 | 66 | 2006-10-17 | 2006-10-18 | 2d | 17d | 0d | BhattarR | 16h |
| 69 | 1.3.6.3 | Code |  | 3d | 2006-10-19 | 2006-10-23 | 68 | 2006-10-19 | 2006-10-23 | 3d | 17d |  | LandyR | 24h |
| 70 | 1.3.6.4 | **Test** |  | 9d | 2006-10-16 | 2006-10-26 |  | 2006-10-16 | 2006-10-26 | 9d | 14d |  |  | 72h |
| 71 | 1.3.6.4.1 | Unit Test |  | 4d | 2006-10-16 | 2006-10-19 |  | 2006-10-16 | 2006-10-19 | 4d | 14d | 0d | MujuS | 32h |
| 72 | 1.3.6.4.2 | Integration Test (Dev) |  | 5d | 2006-10-20 | 2006-10-26 | 71 | 2006-10-20 | 2006-10-26 | 5d | 14d | 0d | LongY | 40h |
| 73 | 1.3.6.4.3 | Milestone: Test Fixes on Dev | milestone | 0d | 2006-10-26 | 2006-10-26 | 72 | 2006-10-26 | 2006-10-26 | 0d | 14d |  | LongY |  |
| 74 | 1.4 | **Transition Phase** |  | 7d | 2006-11-16 | 2006-11-24 | 64, 55, 65 | 2006-10-27 | 2006-11-06 | 7d | 0d |  |  | 72h |
| 75 | 1.4.1 | **QA** |  | 2d | 2006-11-16 | 2006-11-17 |  | 2006-10-27 | 2006-10-30 | 2d | 5d |  |  | 16h |
| 76 | 1.4.1.1 | Finalize Testplan |  | 1d | 2006-11-16 | 2006-11-16 |  | 2006-10-27 | 2006-10-27 | 1d | 5d | 0d | LongY | 8h |
| 77 | 1.4.1.2 | Finalize Test Cases |  | 1d | 2006-11-17 | 2006-11-17 | 76 | 2006-10-30 | 2006-10-30 | 1d | 5d |  | LongY | 8h |

| ID | WBS | Task | Duration | Start | Finish | Predecessors | Baseline start | Baseline finish | Baseline duration | Total slack | Resources | Work |
| --- | --- | --- | --- | --- | --- | --- | --- | --- | --- | --- | --- | --- |
| 78 | 1.4.2 | **Deploy** | 7d | 2006-11-16 | 2006-11-24 |  | 2006-10-27 | 2006-11-06 | 7d | 0d |  | 56h |
| 79 | 1.4.2.1 | **QA Server Deployment** | 3d | 2006-11-16 | 2006-11-20 |  | 2006-10-27 | 2006-10-31 | 3d | 0d |  | 24h |
| 80 | 1.4.2.1.1 | QA Testing | 3d | 2006-11-16 | 2006-11-20 |  | 2006-10-27 | 2006-10-31 | 3d | 0d | LongY | 24h |
| 81 | 1.4.2.2 | **Staging Server Deployment** | 3d | 2006-11-21 | 2006-11-23 |  | 2006-11-01 | 2006-11-03 | 3d | 0d |  | 24h |
| 82 | 1.4.2.2.1 | Staging Testing | 3d | 2006-11-21 | 2006-11-23 | 80 | 2006-11-01 | 2006-11-03 | 3d | 0d | LongY | 24h |
| 83 | 1.4.2.3 | **Production Server Deployment** | 1d | 2006-11-24 | 2006-11-24 |  | 2006-11-06 | 2006-11-06 | 1d | 0d |  | 8h |
| 84 | 1.4.2.3.1 | Production Verification | 1d | 2006-11-24 | 2006-11-24 | 82 | 2006-11-06 | 2006-11-06 | 1d | 0d | LongY | 8h |
