# CGEMS

Schedule from MS Project, 2006-04-04 to 2006-09-15, A marks actual dates.
SAIC

## Calendars

- Standard: Mon-Fri 08:00-12:00, 13:00-17:00; Sat-Sun off.

## Resources

| Resource |
| --- |
| JiangHo |
| GuruswamiS |
| SahniH |
| NCICB |
| NCICB/CGEMS team |
| LongY |
| BasuA |

## Schedule

| ID | WBS | Task | Type | Duration | Start | Finish | Predecessors | Complete | Remaining | Total slack | Free slack | Constraint | Resources | Work | Actual work |
| --- | --- | --- | --- | --- | --- | --- | --- | --- | --- | --- | --- | --- | --- | --- | --- |
| 1 | 1 | **CGEMS 1.0 Release** |  | 119d | 2006-04-04 A | 2006-09-15 |  | 40% | 71.7d | 0d |  |  |  | 2136h | 648h |
| 2 | 1.1 | **Project Management and Control** |  | 80d | 2006-05-29 | 2006-09-15 |  |  |  | 0d |  |  |  | 1280h |  |
| 3 | 1.1.1 | Project Management |  | 80d | 2006-05-29 | 2006-09-15 |  |  |  | 0d |  | must finish on 2006-09-15 | GuruswamiS | 640h |  |
| 4 | 1.1.2 | Project Control |  | 80d | 2006-05-29 | 2006-09-15 |  |  |  | 0d |  | finish no earlier than 2006-09-15 | GuruswamiS | 640h |  |
| 5 | 1.2 | **Inception Phase** |  | 56d | 2006-04-04 A | 2006-06-20 A |  | 100% |  |  |  |  |  | 528h | 528h |
| 6 | 1.2.1 | **Requirements Gathering** |  | 51d | 2006-04-04 A | 2006-06-13 A |  | 100% |  |  |  |  |  | 328h | 328h |
| 7 | 1.2.1.1 | NCICB/CGEMS team |  | 8w | 2006-04-04 A | 2006-05-29 A |  | 100% |  |  |  | start no earlier than 2006-04-04 | NCICB/CGEMS team | 320h | 320h |
| 8 | 1.2.1.2 | Determine Basic Use Cases |  | 8w | 2006-04-04 A | 2006-05-29 A |  | 100% |  |  |  | start no earlier than 2006-04-04 |  |  |  |
| 9 | 1.2.1.3 | Prioritize Use Cases |  | 1d | 2006-06-13 A | 2006-06-13 A | 7, 8 | 100% |  |  |  | start no earlier than 2006-06-13 | NCICB | 8h | 8h |
| 10 | 1.2.2 | **Documentation** |  | 12d | 2006-06-05 A | 2006-06-20 A |  | 100% |  |  |  |  |  | 200h | 200h |
| 11 | 1.2.2.1 | Draft Project Plan |  | 5d | 2006-06-05 A | 2006-06-09 A |  | 100% |  |  |  | start no earlier than 2006-06-05 | GuruswamiS | 40h | 40h |
| 12 | 1.2.2.2 | Draft Requirements Specification Document |  | 5d | 2006-06-14 A | 2006-06-20 A | 9 | 100% |  |  |  |  |  |  |  |
| 13 | 1.2.2.3 | Draft Test Plan |  | 10d | 2006-06-05 A | 2006-06-16 A |  | 100% |  |  |  |  | LongY | 80h | 80h |
| 14 | 1.2.2.4 | Draft Test Cases |  | 10d | 2006-06-05 A | 2006-06-16 A |  | 100% |  |  |  |  | LongY | 80h | 80h |
| 15 | 1.2.3 | Milestone: General Requirements Captured & Priortized | milestone | 0d | 2006-06-20 A | 2006-06-20 A | 12 | 100% |  |  |  |  |  |  |  |
| 16 | 1.3 | **Elaboration Phase** |  | 40d | 2006-06-12 A | 2006-08-04 |  | 99% | 0d | 30d |  |  |  | 120h | 120h |
| 17 | 1.3.1 | **Architecture** |  | 8d | 2006-06-21 A | 2006-06-30 A |  | 100% |  |  |  |  |  | 64h | 64h |
| 18 | 1.3.1.1 | Initial Draft of Architecture |  | 1w | 2006-06-21 A | 2006-06-27 A | 12 | 100% |  |  |  |  | SahniH | 40h | 40h |
| 19 | 1.3.1.2 | Internal review with caIntegrator Team | milestone | 0d | 2006-06-27 A | 2006-06-27 A | 18 | 100% |  |  |  |  | SahniH |  |  |
| 20 | 1.3.1.3 | Incorporate Comments/Feedback from the team review |  | 1d | 2006-06-28 A | 2006-06-28 A | 19 | 100% |  |  |  |  | SahniH | 8h | 8h |
| 21 | 1.3.1.4 | Review architecture with the "Review Board" | milestone | 0d | 2006-06-28 A | 2006-06-28 A | 20 | 100% |  |  |  | start no earlier than 2005-06-01 | SahniH |  |  |
| 22 | 1.3.1.5 | Draft design document (caBIG template) |  | 0.4w | 2006-06-29 A | 2006-06-30 A | 21 | 100% |  |  |  |  | SahniH | 16h | 16h |
| 23 | 1.3.1.6 | Milestone: Completed Design document | milestone | 0d | 2006-06-30 A | 2006-06-30 A | 22 | 100% |  |  |  |  | BasuA |  |  |
| 24 | 1.3.2 | **Itreration 1: Generate caCORE-SDK API** |  | 33d | 2006-06-12 A | 2006-07-26 |  | 99% | 0d | 6d | 0d |  |  | 56h | 56h |
| 25 | 1.3.2.1 | Harmonize CGEMS UML model with caIntegrator |  | 7d | 2006-06-12 A | 2006-06-20 A |  | 100% |  |  |  | finish no earlier than 2006-06-20 |  | 56h | 56h |
| 26 | 1.3.2.2 | Harmozine CGEMS OM with CG-OM |  | 7d | 2006-06-12 A | 2006-06-21 A | 25 | 100% |  |  |  | start no earlier than 2006-06-12 | SahniH | 56h | 56h |
| 27 | 1.3.2.5 | MileStone: Finalize model with CGEMS stake holders | milestone | 0d | 2006-06-22 A | 2006-06-22 A |  | 100% |  |  |  |  |  |  |  |
| 28 | 1.3.2.4 | MileStone: Finalize CG-OM w/CGEMS model | milestone | 0d | 2006-06-22 A | 2006-06-22 A | 27 | 100% |  |  |  |  | SahniH |  |  |
| 29 | 1.3.2.10 | Database design and implementation |  | 7d | 2006-07-11 A | 2006-07-19 A |  | 100% |  |  |  |  |  | 104h | 104h |
| 30 | 1.3.2.6 | MileStone: Dev database ready | milestone | 0d | 2006-07-19 | 2006-07-19 | 29 |  |  | 11d |  |  | JiangHo |  |  |
| 31 | 1.3.2.8 | Generate API using caCORE-SDK |  | 18d | 2006-07-03 A | 2006-07-26 |  | 66% | 6.2d | 63.57d |  |  |  | 144h | 94.4h |
| 32 | 1.3.2.8 | MileStone: Generate API using caCORE SDK | milestone | 0d | 2006-07-26 A | 2006-07-26 A | 31 | 100% |  |  |  |  | GuruswamiS |  |  |

| ID | WBS | Task | Type | Duration | Start | Finish | Predecessors | Complete | Remaining | Total slack | Free slack | Constraint | Resources | Work | Actual work |
| --- | --- | --- | --- | --- | --- | --- | --- | --- | --- | --- | --- | --- | --- | --- | --- |
| 33 | 1.3.3 | **Iteration 1b: Middle-tier implementation** |  | 0d | 2006-08-04 | 2006-08-04 |  |  |  | 30d |  |  |  |  |  |
| 34 | 1.3.2.12 | Middle-tier implementation |  | 20d | 2006-07-10 A | 2006-08-04 |  | 25% | 15d | 0d |  |  |  | 160h | 40h |
| 35 | 1.3.3.2 | MileStone: Completed middle-tier implementation | milestone | 0d | 2006-08-04 | 2006-08-04 | 34 |  |  | 30d |  |  |  |  |  |
| 36 | 1.4 | Milestone: Demo caCORE and DTO APIs using Test Data Sets | milestone | 0d | 2006-07-26 | 2006-07-26 | 24 |  |  | 37d |  |  |  |  |  |
| 37 | 1.5 | **Transition Phase** |  | 26d | 2006-07-27 | 2006-08-31 | 24 |  |  | 6d |  |  |  | 208h |  |
| 38 | 1.5.1 | **QA** |  | 5d | 2006-07-27 | 2006-08-02 |  |  |  | 6d | 0d |  |  | 80h |  |
| 39 | 1.5.1.1 | Finalize Testplan |  | 5d | 2006-07-27 | 2006-08-02 |  |  |  | 6d |  |  | LongY | 40h |  |
| 40 | 1.5.1.2 | Finalize Test Cases |  | 5d | 2006-07-27 | 2006-08-02 |  |  |  | 6d |  |  | LongY | 40h |  |
| 41 | 1.5.2 | **Deploy** |  | 21d | 2006-08-03 | 2006-08-31 | 38 |  |  | 6d |  |  |  | 128h |  |
| 42 | 1.5.2.1 | **QA Server Deployment** |  | 10d | 2006-08-03 | 2006-08-16 |  |  |  | 6d |  |  |  | 80h |  |
| 43 | 1.5.2.1.1 | QA Testing |  | 10d | 2006-08-03 | 2006-08-16 |  |  |  | 6d | 0d | start no earlier than 2005-06-28 | LongY | 80h |  |
| 44 | 1.5.2.2 | **Staging Server Deployment** |  | 10d | 2006-08-17 | 2006-08-30 |  |  |  | 11d |  |  |  | 40h |  |
| 45 | 1.5.2.2.1 | Staging Testing |  | 10d | 2006-08-17 | 2006-08-30 | 43 |  |  | 11d | 0d |  | LongY | 40h |  |
| 46 | 1.5.2.3 | **Production Server Deployment** |  | 1d | 2006-08-31 | 2006-08-31 |  |  |  | 11d |  |  |  | 8h |  |
| 47 | 1.5.2.3.1 | Production Verification |  | 1d | 2006-08-31 | 2006-08-31 | 45 |  |  | 11d |  | start no earlier than 2005-06-13 | LongY | 8h |  |
