# EAGLE

Schedule from MS Project, 2006-05-29 to 2007-03-02.
SAIC

## Calendars

- Standard: Mon-Fri 08:00-12:00, 13:00-17:00; Sat-Sun off.

## Resources

| Resource |
| --- |
| LiuH |
| GuruswamiS |
| LongY |
| LandyR |
| GeorgeDa |
| NCICB |
| JiangHo |

## Schedule

| ID | WBS | Task | Type | Duration | Start | Finish | Predecessors | Total slack | Free slack | Constraint | Resources | Work |
| --- | --- | --- | --- | --- | --- | --- | --- | --- | --- | --- | --- | --- |
| 1 | 1 | **EAGLE 1.0 Release** |  | 200d | 2006-05-29 | 2007-03-02 |  | 0d |  |  |  | 5064h |
| 2 | 1.1 | **Project Management and Control** |  | 80d | 2006-05-29 | 2006-09-15 |  | 0d |  |  |  | 1280h |
| 3 | 1.1.1 | Project Management |  | 80d | 2006-05-29 | 2006-09-15 |  | 0d |  | must finish on 2006-09-15 | GuruswamiS | 640h |
| 4 | 1.1.2 | Project Control |  | 80d | 2006-05-29 | 2006-09-15 |  | 84d |  | finish no earlier than 2006-09-15 | GuruswamiS | 640h |
| 5 | 1.2 | **Inception Phase** |  | 66d | 2006-06-05 | 2006-09-04 |  | 5d |  |  |  | 528h |
| 6 | 1.2.1 | **Requirements Gathering** |  | 16d | 2006-06-12 | 2006-07-03 |  | 0d |  |  |  | 128h |
| 7 | 1.2.1.1 | Determine General Requirements |  | 1d | 2006-06-12 | 2006-06-12 |  | 0d |  | start no earlier than 2006-06-12 | GuruswamiS | 8h |
| 8 | 1.2.1.2 | Draft Wireframes |  | 2w | 2006-06-13 | 2006-06-26 | 7 | 0d |  |  | LandyR | 80h |
| 9 | 1.2.1.3 | Review Wireframes with DCEG Group |  | 1d | 2006-06-27 | 2006-06-27 | 8 | 0d |  |  | LandyR | 8h |
| 10 | 1.2.1.4 | Determine Basic Use Cases |  | 3d | 2006-06-28 | 2006-06-30 | 9 | 0d |  | start no earlier than 2006-06-05 | GeorgeDa | 24h |
| 11 | 1.2.1.5 | Prioritize Use Cases |  | 1d | 2006-07-03 | 2006-07-03 | 7, 10 | 0d |  | start no earlier than 2006-06-05 | NCICB | 8h |
| 12 | 1.2.2 | **Documentation** |  | 66d | 2006-06-05 | 2006-09-04 |  | 21d |  |  |  | 400h |
| 13 | 1.2.2.1 | Draft Project Plan |  | 5d | 2006-06-05 | 2006-06-09 |  | 154d |  | start no earlier than 2006-06-05 | GuruswamiS | 40h |
| 14 | 1.2.2.2 | Draft Requirements Specification Document |  | 10d | 2006-07-04 | 2006-07-17 | 11 | 0d |  |  | GeorgeDa | 80h |
| 15 | 1.2.2.3 | Draft Design Document |  | 15d | 2006-07-18 | 2006-08-07 | 14 | 93d | 0d |  | GeorgeDa | 120h |
| 16 | 1.2.2.4 | Draft Test Plan |  | 10d | 2006-08-08 | 2006-08-21 | 15 | 93d | 0d |  | LongY | 80h |
| 17 | 1.2.2.5 | Draft Test Cases |  | 10d | 2006-08-22 | 2006-09-04 | 16 | 93d |  |  | LongY | 80h |
| 18 | 1.2.3 | Milestone: General Requirements Captured & Priortized | milestone | 0d | 2006-07-17 | 2006-07-17 | 14 | 79d | 0d |  |  |  |
| 19 | 1.3 | **Elaboration Phase** |  | 148d | 2006-07-18 | 2007-02-08 |  | 0d |  |  |  | 3048h |
| 20 | 1.3.1 | **Architecture** |  | 19d | 2006-07-18 | 2006-08-11 |  | 145d |  |  |  | 152h |
| 21 | 1.3.1.1 | Initial Draft of Architecture |  | 2w | 2006-07-18 | 2006-07-31 | 18 | 94d | 0d |  | GeorgeDa | 80h |
| 22 | 1.3.1.2 | Internal review with caIntegrator Team |  | 1d | 2006-08-01 | 2006-08-01 | 21 | 94d | 0d |  | GeorgeDa | 8h |
| 23 | 1.3.1.3 | Incorporate Comments/Feedback from the team review |  | 2d | 2006-08-02 | 2006-08-03 | 22 | 94d | 0d |  | GeorgeDa | 16h |
| 24 | 1.3.1.4 | Review architecture with the "Review Board" |  | 1d | 2006-08-04 | 2006-08-04 | 23 | 94d | 0d | start no earlier than 2005-06-01 | GeorgeDa | 8h |
| 25 | 1.3.1.5 | Draft design document (caBIG template) |  | 1w | 2006-08-07 | 2006-08-11 | 24 | 94d | 0d |  | GeorgeDa | 40h |
| 26 | 1.3.1.6 | Milestone: Completed Design document | milestone | 0d | 2006-08-11 | 2006-08-11 | 25 | 94d |  |  |  |  |

| ID | WBS | Task | Type | Duration | Start | Finish | Predecessors | Total slack | Free slack | Constraint | Resources | Work |
| --- | --- | --- | --- | --- | --- | --- | --- | --- | --- | --- | --- | --- |
| 27 | 1.3.2 | **User Interface Design** |  | 34d | 2006-07-18 | 2006-09-01 |  | 130d |  |  |  | 272h |
| 28 | 1.3.2.1 | Draft User Interface Components |  | 2w | 2006-07-18 | 2006-07-31 | 18 | 79d | 0d | start no earlier than 2006-06-12 | LandyR | 80h |
| 29 | 1.3.2.2 | Internal Review of Draft UI components |  | 2d | 2006-08-01 | 2006-08-02 | 28 | 79d | 0d |  | GeorgeDa | 16h |
| 30 | 1.3.2.3 | Incorporate comments/Feedback |  | 3d | 2006-08-03 | 2006-08-07 | 29 | 79d | 0d |  | LandyR | 24h |
| 31 | 1.3.2.4 | Incorporate icons, banners from Graphics Artist |  | 1d | 2006-08-08 | 2006-08-08 | 30 | 79d | 0d |  | LandyR | 8h |
| 32 | 1.3.2.5 | Review Draft User Interface, including DCEG members |  | 10d | 2006-08-09 | 2006-08-22 | 31 | 79d | 0d |  | GeorgeDa | 80h |
| 33 | 1.3.2.6 | Incorporate comments/feedback from DCEG |  | 2d | 2006-08-23 | 2006-08-24 | 32 | 79d | 0d |  | LandyR | 16h |
| 34 | 1.3.2.7 | Incorporate template in MVC framework |  | 6d | 2006-08-25 | 2006-09-01 | 33 | 79d | 0d |  | LandyR | 48h |
| 35 | 1.3.2.8 | Milestone: Completed wireframes | milestone | 0d | 2006-09-01 | 2006-09-01 | 34 | 79d |  |  |  |  |
| 36 | 1.3.3 | **Itreration 1: Prototype** |  | 73d | 2006-07-18 | 2006-10-26 | 14 | 0d |  |  |  | 784h |
| 37 | 1.3.3.1 | **Requirements Analysis** |  | 12d | 2006-07-18 | 2006-08-02 |  | 0d |  |  |  | 96h |
| 38 | 1.3.3.1.1 | Requirements Outline |  | 6d | 2006-07-18 | 2006-07-25 |  | 0d |  |  | GeorgeDa | 48h |
| 39 | 1.3.3.1.2 | Complete Requirements Analysis |  | 6d | 2006-07-26 | 2006-08-02 | 38 | 61d |  |  | GeorgeDa | 48h |
| 40 | 1.3.3.2 | Design |  | 6w | 2006-07-26 | 2006-09-05 | 38 | 0d |  |  | GeorgeDa | 240h |
| 41 | 1.3.3.3 | Database design |  | 10d | 2006-09-06 | 2006-09-19 | 40 | 0d |  |  | JiangHo | 80h |
| 42 | 1.3.3.4 | Database implementation |  | 3d | 2006-09-20 | 2006-09-22 | 41 | 0d |  |  | JiangHo | 24h |
| 43 | 1.3.3.5 | Code |  | 3w | 2006-09-25 | 2006-10-13 | 42 | 0d |  |  | GeorgeDa; LandyR | 240h |
| 44 | 1.3.3.6 | **Test** |  | 9d | 2006-10-16 | 2006-10-26 |  | 0d |  |  |  | 104h |
| 45 | 1.3.3.6.1 | Unit Test |  | 4d | 2006-10-16 | 2006-10-19 | 43 | 0d |  |  | GeorgeDa; LandyR | 64h |
| 46 | 1.3.3.6.2 | Integration Test (Dev) |  | 5d | 2006-10-20 | 2006-10-26 | 45 | 0d |  |  | LongY | 40h |
| 47 | 1.3.3.6.3 | Milestone: Test Fixes on Dev | milestone | 0d | 2006-10-26 | 2006-10-26 | 46 | 0d |  |  |  |  |
| 48 | 1.3.4 | **Iteration 2a: Advanced Search & HLA** |  | 75d | 2006-10-27 | 2007-02-08 | 36 | 0d |  |  |  | 936h |
| 49 | 1.3.4.1 | **Requirements Analysis** |  | 21d | 2006-10-27 | 2006-11-24 |  | 0d |  |  |  | 168h |
| 50 | 1.3.4.1.1 | Requirements Outline |  | 14d | 2006-10-27 | 2006-11-15 |  | 0d |  |  | GeorgeDa | 112h |
| 51 | 1.3.4.1.2 | Complete Requirements Analysis |  | 7d | 2006-11-16 | 2006-11-24 | 50 | 0d |  |  | GeorgeDa | 56h |
| 52 | 1.3.4.2 | Design |  | 4w | 2006-11-27 | 2006-12-22 | 49 | 0d |  |  | GeorgeDa | 160h |
| 53 | 1.3.4.3 | Database design |  | 10d | 2006-12-25 | 2007-01-05 | 52 | 37d | 0d |  | JiangHo | 80h |
| 54 | 1.3.4.4 | Database implementation |  | 3d | 2007-01-08 | 2007-01-10 | 53 | 37d |  |  | JiangHo | 24h |
| 55 | 1.3.4.5 | Code |  | 5w | 2006-12-25 | 2007-01-26 | 52 | 0d |  |  | GeorgeDa; LandyR | 400h |

| ID | WBS | Task | Type | Duration | Start | Finish | Predecessors | Total slack | Free slack | Constraint | Resources | Work |
| --- | --- | --- | --- | --- | --- | --- | --- | --- | --- | --- | --- | --- |
| 56 | 1.3.4.6 | **Test** |  | 9d | 2007-01-29 | 2007-02-08 |  | 0d |  |  |  | 104h |
| 57 | 1.3.4.6.1 | Unit Test |  | 4d | 2007-01-29 | 2007-02-01 | 55 | 0d |  |  | GeorgeDa; LandyR | 64h |
| 58 | 1.3.4.6.2 | Integration Test (Dev) |  | 5d | 2007-02-02 | 2007-02-08 | 57 | 0d |  |  | LongY | 40h |
| 59 | 1.3.4.6.3 | Milestone: Test Fixes on Dev | milestone | 0d | 2007-02-08 | 2007-02-08 | 58 | 0d |  |  |  |  |
| 60 | 1.3.5 | **Itreration 2b: Epidemiology database UML Model** |  | 66d | 2006-10-27 | 2007-01-26 | 36 | 25d |  |  |  | 904h |
| 61 | 1.3.5.1 | **Requirements Analysis** |  | 21d | 2006-10-27 | 2006-11-24 |  | 25d | 0d |  |  | 168h |
| 62 | 1.3.5.1.1 | Requirements Outline |  | 14d | 2006-10-27 | 2006-11-15 |  | 25d | 0d |  | GeorgeDa | 112h |
| 63 | 1.3.5.1.2 | Complete Requirements Analysis |  | 7d | 2006-11-16 | 2006-11-24 | 62 | 25d |  |  | GeorgeDa | 56h |
| 64 | 1.3.5.2 | Design |  | 4w | 2006-11-27 | 2006-12-22 | 61 | 25d | 0d |  | GeorgeDa | 160h |
| 65 | 1.3.5.3 | Database design |  | 10d | 2006-12-25 | 2007-01-05 | 64 | 37d | 0d |  | JiangHo | 80h |
| 66 | 1.3.5.4 | Database implementation |  | 3d | 2007-01-08 | 2007-01-10 | 65 | 37d |  |  | JiangHo | 24h |
| 67 | 1.3.5.5 | Code |  | 5w | 2006-12-25 | 2007-01-26 | 64 | 25d |  |  | GeorgeDa; LandyR | 400h |
| 68 | 1.3.5.6 | **Test** |  | 9d | 2006-10-27 | 2006-11-08 |  | 66d |  |  |  | 72h |
| 69 | 1.3.5.6.1 | Unit Test |  | 4d | 2006-10-27 | 2006-11-01 |  | 66d | 0d |  | GeorgeDa | 32h |
| 70 | 1.3.5.6.2 | Integration Test (Dev) |  | 5d | 2006-11-02 | 2006-11-08 | 69 | 66d | 0d |  | LiuH | 40h |
| 71 | 1.3.5.6.3 | Milestone: Test Fixes on Dev | milestone | 0d | 2006-11-08 | 2006-11-08 | 70 | 66d |  |  | LiuH |  |
| 72 | 1.4 | **Transition Phase** |  | 16d | 2007-02-09 | 2007-03-02 | 71, 59 | 0d |  |  |  | 208h |
| 73 | 1.4.1 | **QA** |  | 5d | 2007-02-09 | 2007-02-15 |  | 11d |  |  |  | 80h |
| 74 | 1.4.1.1 | Finalize Testplan |  | 5d | 2007-02-09 | 2007-02-15 |  | 11d |  |  | LongY | 40h |
| 75 | 1.4.1.2 | Finalize Test Cases |  | 5d | 2007-02-09 | 2007-02-15 |  | 11d |  |  | LongY | 40h |
| 76 | 1.4.2 | **Deploy** |  | 16d | 2007-02-09 | 2007-03-02 |  | 0d |  |  |  | 128h |
| 77 | 1.4.2.1 | **QA Server Deployment** |  | 10d | 2007-02-09 | 2007-02-22 |  | 0d |  |  |  | 80h |
| 78 | 1.4.2.1.1 | QA Testing |  | 10d | 2007-02-09 | 2007-02-22 |  | 0d |  | start no earlier than 2005-06-28 | LongY | 80h |
| 79 | 1.4.2.2 | **Staging Server Deployment** |  | 5d | 2007-02-23 | 2007-03-01 |  | 0d |  |  |  | 40h |
| 80 | 1.4.2.2.1 | Staging Testing |  | 5d | 2007-02-23 | 2007-03-01 | 78 | 0d |  |  | LongY | 40h |

| ID | WBS | Task | Duration | Start | Finish | Predecessors | Total slack | Constraint | Resources | Work |
| --- | --- | --- | --- | --- | --- | --- | --- | --- | --- | --- |
| 81 | 1.4.2.3 | **Production Server Deployment** | 1d | 2007-03-02 | 2007-03-02 |  | 0d |  |  | 8h |
| 82 | 1.4.2.3.1 | Production Verification | 1d | 2007-03-02 | 2007-03-02 | 80 | 0d | start no earlier than 2005-06-13 | LongY | 8h |
