# ISPY

Schedule from MS Project, 2006-03-28 to 2007-01-05, A marks actual dates.
NCI

## Calendars

- Standard: Mon-Fri 08:00-12:00, 13:00-17:00; Sat-Sun off.

## Resources

| Resource |
| --- |
| JiangHo |
| GuruswamiS |
| ZhangD |
| NCICB |
| MadhavaS |
| GeorgeDa |
| LiuH |
| LandyR |
| RossoK |
| HarrisMA |
| LongY |
| QA |
| Systems |
| WuYe |
| MujuS |
| HarrisM |

## Schedule

| ID | WBS | Task | Type | Duration | Start | Finish | Predecessors | Complete | Remaining | Baseline start | Baseline finish | Baseline duration | Total slack | Free slack | Constraint | Resources | Work | Actual work |
| --- | --- | --- | --- | --- | --- | --- | --- | --- | --- | --- | --- | --- | --- | --- | --- | --- | --- | --- |
| 1 | 1 | **ISPY Analysis portal** |  | 204d? | 2006-03-28 A | 2007-01-05 |  | 34% | 134.57d? | 2006-03-28 | 2007-01-15 | 209.67d? | 0d |  |  |  | 3483.45h | 1352.65h |
| 2 | 1.1 | **Project Management and Control** |  | 50d | 2006-03-28 | 2006-06-05 |  |  |  | 2006-03-28 | 2006-06-05 | 50d | 154d |  |  |  | 800h |  |
| 3 | 1.1.1 | Project Management |  | 50d | 2006-03-28 | 2006-06-05 |  |  |  | 2006-03-28 | 2006-06-05 | 50d | 129d |  | start no earlier than 2006-03-28 | GuruswamiS | 400h |  |
| 4 | 1.1.2 | Project Control |  | 50d | 2006-03-28 | 2006-06-05 |  |  |  | 2006-03-28 | 2006-06-05 | 50d | 129d |  | finish no earlier than 2006-06-05 | GuruswamiS | 400h |  |
| 5 | 1.2 | **Inception Phase** |  | 50d | 2006-03-28 A | 2006-06-05 |  | 34% | 32.86d | 2006-03-28 | 2006-06-05 | 50d | 154d |  |  |  | 210h | 76.8h |
| 6 | 1.2.1 | **Requirements Gathering** |  | 50d | 2006-03-28 A | 2006-06-05 |  | 34% | 32.86d | 2006-03-28 | 2006-06-05 | 50d | 154d |  |  |  | 210h | 76.8h |
| 7 | 1.2.1.1 | Determine General Requirements |  | 1d | 2006-03-28 A | 2006-03-28 A |  | 100% |  | 2006-03-28 | 2006-03-28 | 1d |  |  | start no earlier than 2006-03-28 | HarrisMA | 8h | 8h |
| 8 | 1.2.1.2 | Determine Basic Use Cases |  | 1d | 2006-03-29 A | 2006-03-29 A | 7 | 100% |  | 2006-03-29 | 2006-03-29 | 1d |  |  | start no earlier than 2006-03-28 | HarrisMA | 8h | 8h |
| 9 | 1.2.1.3 | Prioritize Use Cases |  | 1d | 2006-03-30 A | 2006-03-30 A | 7, 8 | 100% |  | 2006-03-30 | 2006-03-30 | 1d |  |  |  | HarrisMA | 8h | 8h |
| 10 | 1.2.1.4 | Milestone: General Requirements Captured | milestone | 0d | 2006-03-31 A | 2006-03-31 A | 9 | 100% |  | 2006-03-31 | 2006-03-31 | 0d |  |  |  |  |  |  |
| 11 | 1.2.1.5 | **Documentation** |  | 44d | 2006-04-05 A | 2006-06-05 |  | 26% | 32.38d | 2006-04-05 | 2006-06-05 | 44d | 154d |  |  |  | 186h | 52.8h |
| 12 | 1.2.1.5.1 | Draft Project Plan |  | 2d | 2006-04-05 A | 2006-04-06 A |  | 100% |  | 2006-04-05 | 2006-04-06 | 2d |  |  | start no earlier than 2006-04-05 | GuruswamiS | 16h | 16h |
| 13 | 1.2.1.5.2 | Add Feature Requests/Bugs into TestTrack |  | 2d | 2006-05-10 | 2006-05-11 |  |  |  | 2006-05-10 | 2006-05-11 | 2d | 146d |  |  | LongY [50%] | 2h |  |
| 14 | 1.2.1.5.3 | Draft Requirements Specification Document |  | 3d | 2006-05-12 A | 2006-05-16 A | 13 | 100% |  | 2006-05-12 | 2006-05-16 | 3d |  |  |  | HarrisMA | 24h | 24h |
| 15 | 1.2.1.5.4 | Draft Design Document |  | 4d | 2006-05-17 A | 2006-05-22 | 14 | 40% | 2.4d | 2006-05-17 | 2006-05-22 | 4d | 139d |  |  | HarrisMA | 32h | 12.8h |
| 16 | 1.2.1.5.5 | Draft Test Plan |  | 4d | 2006-05-17 | 2006-05-22 | 14 |  |  | 2006-05-17 | 2006-05-22 | 4d | 116d | 0d |  | LongY | 32h |  |
| 17 | 1.2.1.5.6 | Draft Test Cases |  | 10d | 2006-05-23 | 2006-06-05 | 16 |  |  | 2006-05-23 | 2006-06-05 | 10d | 129d |  |  | LiuH | 80h |  |
| 18 | 1.3 | **Data Update Cycle** |  | 1d? | 2006-05-10 | 2006-05-10 |  |  |  | 2006-05-10 | 2006-05-10 | 1d? | 172d |  |  |  |  |  |
| 19 | 1.3.1 | Data Refresh 1 |  | 1d? | 2006-05-10 | 2006-05-10 |  |  |  | 2006-05-10 | 2006-05-10 | 1d? | 147d |  |  |  |  |  |
| 20 | 1.3.2 | Data Refresh 2 |  | 1d? | 2006-05-10 | 2006-05-10 |  |  |  | 2006-05-10 | 2006-05-10 | 1d? | 147d |  |  |  |  |  |
| 21 | 1.4 | **Evolution Cycle (June release) : Elaboration & Construction** |  | 42d | 2006-04-21 A | 2006-06-19 |  | 91% | 3.69d | 2006-04-21 | 2006-06-19 | 42d | 37.82d | 0d |  |  | 824h | 763.2h |
| 22 | 1.4.1 | **Iteration 1** |  | 29d | 2006-04-21 A | 2006-05-31 A |  | 100% |  | 2006-04-21 | 2006-05-31 | 29d |  |  |  |  | 632h | 632h |
| 23 | 1.4.1.1 | **ID Mapper Functionality** |  | 11d | 2006-05-10 A | 2006-05-24 A |  | 100% |  | 2006-05-10 | 2006-05-24 | 11d |  |  |  |  | 144h | 144h |
| 24 | 1.4.1.1.1 | Create ID Mapping Service |  | 5d | 2006-05-11 A | 2006-05-17 A | 25 | 100% |  | 2006-05-11 | 2006-05-17 | 5d |  |  |  | HarrisMA | 40h | 40h |
| 25 | 1.4.1.1.2 | Define ID Mapping File Format and create sample |  | 1d | 2006-05-10 A | 2006-05-10 A |  | 100% |  | 2006-05-10 | 2006-05-10 | 1d |  |  |  | JiangHo; HarrisMA | 16h | 16h |
| 26 | 1.4.1.1.3 | Create ID Mapping Data File |  | 2d | 2006-05-11 A | 2006-05-12 A | 25 | 100% |  | 2006-05-11 | 2006-05-12 | 2d |  |  |  | JiangHo; LiuH | 32h | 32h |
| 27 | 1.4.1.1.4 | Create ID Mapping GUI wireframe |  | 2d | 2006-05-10 A | 2006-05-11 A |  | 100% |  | 2006-05-10 | 2006-05-11 | 2d |  |  |  | LandyR | 16h | 16h |
| 28 | 1.4.1.1.5 | Create ID Mapping UI |  | 5d | 2006-05-18 A | 2006-05-24 A | 24 | 100% |  | 2006-05-18 | 2006-05-24 | 5d |  |  |  | LandyR | 40h | 40h |

| ID | WBS | Task | Type | Duration | Start | Finish | Predecessors | Complete | Remaining | Baseline start | Baseline finish | Baseline duration | Total slack | Free slack | Constraint | Resources | Work | Actual work |
| --- | --- | --- | --- | --- | --- | --- | --- | --- | --- | --- | --- | --- | --- | --- | --- | --- | --- | --- |
| 29 | 1.4.1.2 | **User List Management Functionality** |  | 15d | 2006-05-10 A | 2006-05-30 A |  | 100% |  | 2006-05-10 | 2006-05-30 | 15d |  |  |  |  | 280h | 280h |
| 30 | 1.4.1.2.1 | Create wireframes for list management GUI |  | 3d | 2006-05-10 A | 2006-05-12 A |  | 100% |  | 2006-05-10 | 2006-05-12 | 3d |  |  |  | RossoK; LandyR | 48h | 48h |
| 31 | 1.4.1.2.2 | Implement List Management GUI |  | 12d | 2006-05-15 A | 2006-05-30 A | 30 | 100% |  | 2006-05-15 | 2006-05-30 | 12d |  |  | start no earlier than 2006-04-20 | RossoK; LandyR | 192h | 192h |
| 32 | 1.4.1.2.3 | Integrate List management into the application |  | 2.5d | 2006-05-18 A | 2006-05-22 A | 24 | 100% |  | 2006-05-18 | 2006-05-22 | 2.5d |  |  | start no earlier than 2006-04-24 | HarrisMA; RossoK | 40h | 40h |
| 33 | 1.4.1.3 | **Incorporate CDNA in High Order Analysis** |  | 29d | 2006-04-21 A | 2006-05-31 A |  | 100% |  | 2006-04-21 | 2006-05-31 | 29d |  |  |  |  | 176h | 176h |
| 34 | 1.4.1.3.1 | create sample CDNA R data file |  | 1d | 2006-04-21 A | 2006-04-21 A |  | 100% |  | 2006-04-21 | 2006-04-21 | 1d |  |  | start no earlier than 2006-04-21 | LiuH | 8h | 8h |
| 35 | 1.4.1.3.2 | QA CDNA data |  | 5d | 2006-05-10 A | 2006-05-16 A |  | 100% |  | 2006-05-10 | 2006-05-16 | 5d |  |  |  | LiuH | 40h | 40h |
| 36 | 1.4.1.3.3 | Develop SOP for CDNA data normalization |  | 2d | 2006-05-10 A | 2006-05-11 A |  | 100% |  | 2006-05-10 | 2006-05-11 | 2d |  |  |  | LiuH | 16h | 16h |
| 37 | 1.4.1.3.4 | Normalize CDNA samples |  | 10d | 2006-05-17 A | 2006-05-30 A | 35, 36 | 100% |  | 2006-05-17 | 2006-05-30 | 10d |  |  | start no earlier than 2006-05-01 | LiuH | 80h | 80h |
| 38 | 1.4.1.3.5 | Create Final CDNA R data file |  | 1d | 2006-05-31 A | 2006-05-31 A | 37 | 100% |  | 2006-05-31 | 2006-05-31 | 1d |  |  |  | LiuH | 8h | 8h |
| 39 | 1.4.1.3.6 | Create CDNA annotation file |  | 3d | 2006-05-10 A | 2006-05-12 A |  | 100% |  | 2006-05-10 | 2006-05-12 | 3d |  |  |  | JiangHo | 24h | 24h |
| 40 | 1.4.1.4 | **Test** |  | 4d | 2006-05-10 A | 2006-05-16 A |  | 100% |  | 2006-05-10 | 2006-05-16 | 4d |  |  |  |  | 32h | 32h |
| 41 | 1.4.1.4.1 | Unit Test |  | 4d | 2006-05-10 A | 2006-05-15 A |  | 100% |  | 2006-05-10 | 2006-05-15 | 4d |  |  |  | LongY | 32h | 32h |
| 42 | 1.4.1.4.2 | Integration Test (Dev) | milestone | 0d | 2006-05-16 A | 2006-05-16 A | 41 | 100% |  | 2006-05-16 | 2006-05-16 | 0d |  |  |  | LiuH |  |  |
| 43 | 1.4.1.5 | Milestone: Test Fixes on Dev | milestone | 0d | 2006-05-17 A | 2006-05-17 A | 40 | 100% |  | 2006-05-17 | 2006-05-17 | 0d |  |  |  |  |  |  |
| 44 | 1.4.2 | **Iteration 2** |  | 23d | 2006-05-03 A | 2006-06-02 |  | 86% | 3.29d | 2006-05-03 | 2006-06-02 | 23d | 44.42d | 0d |  |  | 80h | 64h |
| 45 | 1.4.2.1 | **Clinical Data modification** |  | 4d | 2006-05-03 A | 2006-05-08 A |  | 100% |  | 2006-05-03 | 2006-05-08 | 4d |  |  |  |  | 32h | 32h |
| 46 | 1.4.2.1.1 | Update clinical data file with new columns |  | 2d | 2006-05-03 A | 2006-05-04 A |  | 100% |  | 2006-05-03 | 2006-05-04 | 2d |  |  | start no earlier than 2006-05-03 | JiangHo | 16h | 16h |
| 47 | 1.4.2.1.2 | Modify clinical data parser to support new columns |  | 1d | 2006-05-05 A | 2006-05-05 A | 46 | 100% |  | 2006-05-05 | 2006-05-05 | 1d |  |  |  | HarrisMA | 8h | 8h |
| 48 | 1.4.2.1.3 | Modify clinical report (PCA and HC) to handle new columns |  | 1d | 2006-05-08 A | 2006-05-08 A | 47 | 100% |  | 2006-05-08 | 2006-05-08 | 1d |  |  |  | LandyR | 8h | 8h |
| 49 | 1.4.2.2 | **General Tasks** |  | 11.25d | 2006-05-10 A | 2006-05-25 A |  | 100% |  | 2006-05-10 | 2006-05-25 | 11.25d |  |  |  |  | 24h | 24h |
| 50 | 1.4.2.2.1 | Externalize data files |  | 1d | 2006-05-23 A | 2006-05-23 A |  | 100% |  | 2006-05-23 | 2006-05-23 | 1d |  |  |  | HarrisMA | 8h | 8h |
| 51 | 1.4.2.2.2 | Externalize Properties |  | 2d | 2006-05-10 A | 2006-05-25 A | 50 | 100% |  | 2006-05-10 | 2006-05-25 | 2d |  |  |  | HarrisMA | 16h | 16h |
| 52 | 1.4.2.3 | **Test** |  | 5d | 2006-05-25 A | 2006-06-01 A | 49, 45 | 100% |  | 2006-05-25 | 2006-06-01 | 5d |  |  |  |  | 8h | 8h |
| 53 | 1.4.2.3.1 | Unit Test |  | 4d | 2006-05-25 A | 2006-05-31 A |  | 100% |  | 2006-05-25 | 2006-05-31 | 4d |  |  |  |  |  |  |
| 54 | 1.4.2.3.2 | Integration Test (Dev) |  | 1d | 2006-05-31 A | 2006-06-01 A | 53 | 100% |  | 2006-05-31 | 2006-06-01 | 1d |  |  |  | LiuH | 8h | 8h |
| 55 | 1.4.2.3.3 | Milestone: Test Fixes on Dev | milestone | 0d | 2006-06-01 A | 2006-06-01 A | 54 | 100% |  | 2006-06-01 | 2006-06-01 | 0d |  |  |  | LiuH |  |  |
| 56 | 1.4.2.4 | Update design spec. |  | 2d | 2006-06-01 | 2006-06-02 | 22 |  |  | 2006-06-01 | 2006-06-02 | 2d | 6.6d |  |  | HarrisMA | 16h |  |

| ID | WBS | Task | Type | Duration | Start | Finish | Predecessors | Complete | Remaining | Baseline start | Baseline finish | Baseline duration | Total slack | Free slack | Constraint | Resources | Work | Actual work |
| --- | --- | --- | --- | --- | --- | --- | --- | --- | --- | --- | --- | --- | --- | --- | --- | --- | --- | --- |
| 57 | 1.4.3 | **Transition** |  | 11d | 2006-06-05 A | 2006-06-19 | 44 | 60% | 4.4d | 2006-06-05 | 2006-06-19 | 11d | 37.82d |  |  |  | 112h | 67.2h |
| 58 | 1.4.3.1 | **Testing and Deployment** |  | 3d | 2006-06-05 A | 2006-06-07 |  | 97% | 0.1d | 2006-06-05 | 2006-06-07 | 3d | 45.82d |  |  |  | 24h | 23.2h |
| 59 | 1.4.3.1.1 | Modify deployment scripts |  | 1d | 2006-06-05 A | 2006-06-05 A |  | 100% |  | 2006-06-05 | 2006-06-05 | 1d |  |  |  | HarrisMA | 8h | 8h |
| 60 | 1.4.3.1.2 | Testing |  | 2d | 2006-06-06 A | 2006-06-07 | 59 | 95% | 0.1d | 2006-06-06 | 2006-06-07 | 2d | 8d |  |  | LongY | 16h | 15.2h |
| 61 | 1.4.3.2 | **Deployment** |  | 11d | 2006-06-05 A | 2006-06-19 |  | 50% | 5.5d | 2006-06-05 | 2006-06-19 | 11d | 37.82d |  |  |  | 88h | 44h |
| 62 | 1.4.3.2.1 | Deployment to QA |  | 1d | 2006-06-05 A | 2006-06-05 A | 23, 29, 33, 44 | 100% |  | 2006-06-05 | 2006-06-05 | 1d |  |  |  | QA | 8h | 8h |
| 63 | 1.4.3.2.2 | QA Testing |  | 5d | 2006-06-06 A | 2006-06-12 | 62 | 90% | 0.5d | 2006-06-06 | 2006-06-12 | 5d | 23.65d | 0d |  | LongY | 40h | 36h |
| 64 | 1.4.3.2.3 | Deployment to Staging |  | 2d | 2006-06-13 | 2006-06-14 | 63 |  |  | 2006-06-13 | 2006-06-14 | 2d | 23.65d | 0d |  | Systems | 16h |  |
| 65 | 1.4.3.2.4 | Staging Testing |  | 3d | 2006-06-15 | 2006-06-19 | 64 |  |  | 2006-06-15 | 2006-06-19 | 3d | 23.65d |  |  | LongY | 24h |  |
| 66 | 1.5 | **Evolution Cycle (1.0 Release Elaboration & Construction)** |  | 144d? | 2006-06-20 A | 2007-01-05 | 21 | 28% | 103.34d? | 2006-06-20 | 2007-01-15 | 149.67d | 0d |  |  |  | 1649.45h | 512.65h |
| 67 | 1.5.1 | Draft Project Plan |  | 2d | 2006-06-20 A | 2006-07-04 A |  | 100% |  | 2006-06-20 | 2006-07-04 | 2d |  |  |  | HarrisMA | 16h | 16h |
| 68 | 1.5.2 | **Iteration 1 - Use cases and Documentation** |  | 52d | 2006-06-20 A | 2006-08-30 A |  | 100% |  | 2006-06-20 | 2006-08-30 | 52d |  |  |  |  | 320h | 320h |
| 69 | 1.5.2.1 | **Requirements Gathering** |  | 19d | 2006-06-20 A | 2006-07-17 A |  | 100% |  | 2006-06-20 | 2006-07-17 | 19d |  |  |  |  | 144h | 144h |
| 70 | 1.5.2.1.1 | Determine General Requirements |  | 4d | 2006-06-20 A | 2006-06-23 A | 21 | 100% |  | 2006-06-20 | 2006-06-23 | 4d |  |  | start no earlier than 2006-06-05 | HarrisMA | 32h | 32h |
| 71 | 1.5.2.1.2 | Draft Wireframes |  | 4d | 2006-06-27 A | 2006-06-30 A | 70 | 100% |  | 2006-06-27 | 2006-06-30 | 4d |  |  |  | LandyR; RossoK | 64h | 64h |
| 72 | 1.5.2.1.3 | Determine Basic Use Cases |  | 2d | 2006-07-03 A | 2006-07-04 A | 71 | 100% |  | 2006-07-03 | 2006-07-04 | 2d |  |  | start no earlier than 2006-06-05 | HarrisMA | 16h | 16h |
| 73 | 1.5.2.1.4 | MileStone: Completed Requirements specification | milestone | 0d | 2006-06-30 A | 2006-06-30 A | 71 | 100% |  | 2006-06-30 | 2006-06-30 | 0d |  |  |  |  |  |  |
| 74 | 1.5.2.1.5 | Determine backend data needs. |  | 2d | 2006-07-13 A | 2006-07-17 A | 70 | 100% |  | 2006-07-13 | 2006-07-17 | 2d |  |  |  | HarrisMA; RossoK | 32h | 32h |
| 75 | 1.5.2.2 | **Documentation** |  | 43d | 2006-07-03 A | 2006-08-30 A |  | 100% |  | 2006-07-03 | 2006-08-30 | 43d |  |  |  |  | 72h | 72h |
| 76 | 1.5.2.2.1 | Draft Scope Document |  | 2d | 2006-07-03 A | 2006-07-05 A |  | 100% |  | 2006-07-03 | 2006-07-05 | 2d |  |  | start no earlier than 2006-06-26 | HarrisMA | 16h | 16h |
| 77 | 1.5.2.2.2 | Draft Usecase documents |  | 3d | 2006-07-12 A | 2006-08-07 A | 72 | 100% |  | 2006-07-12 | 2006-08-07 | 3d |  |  |  | HarrisMA | 24h | 24h |
| 78 | 1.5.2.2.3 | Draft Design Document |  | 13d | 2006-08-14 A | 2006-08-30 A | 77FS+5d | 100% |  | 2006-08-14 | 2006-08-30 | 13d |  |  |  | HarrisMA [50%] | 32h | 32h |
| 79 | 1.5.2.2.4 | Milestone: Completed Design document | milestone | 0d | 2006-08-30 A | 2006-08-30 A | 78 | 100% |  | 2006-08-30 | 2006-08-30 | 0d |  |  |  |  |  |  |
| 80 | 1.5.2.3 | Define Interfaces for front to middle tier communication |  | 1w | 2006-07-10 A | 2006-07-17 A | 74 | 100% |  | 2006-07-10 | 2006-07-17 | 1w |  |  |  | GeorgeDa | 40h | 40h |

| ID | WBS | Task | Type | Duration | Start | Finish | Predecessors | Complete | Remaining | Baseline start | Baseline finish | Baseline duration | Total slack | Constraint | Resources | Work | Actual work |
| --- | --- | --- | --- | --- | --- | --- | --- | --- | --- | --- | --- | --- | --- | --- | --- | --- | --- |
| 81 | 1.5.2.4 | **Implement Clinical Query GUI using file based service** |  | 7d | 2006-08-03 A | 2006-08-14 A | 78 | 100% |  | 2006-08-03 | 2006-08-14 | 7d |  |  |  | 64h | 64h |
| 82 | 1.5.2.4.1 | Modify file based clinical service to support GUI development |  | 1d | 2006-08-04 A | 2006-08-07 A |  | 100% |  | 2006-08-04 | 2006-08-07 | 1d |  | start no earlier than 2006-07-05 | HarrisMA | 8h | 8h |
| 83 | 1.5.2.4.2 | Implement Clinical Query GUI and report |  | 7d | 2006-08-03 A | 2006-08-14 A |  | 100% |  | 2006-08-03 | 2006-08-14 | 7d |  | start no earlier than 2006-07-11 | RossoK | 56h | 56h |
| 84 | 1.5.3 | **Iteration 2 - Integration with NCIA** |  | 41d | 2006-08-30 A | 2006-10-26 | 68 | 14% | 35.09d | 2006-08-30 | 2006-10-13 | 32d | 0d |  |  | 287.2h | 22.4h |
| 85 | 1.5.3.1 | **Requirements Gathering** |  | 7d | 2006-08-31 A | 2006-09-08 A |  | 100% |  | 2006-08-31 | 2006-09-08 | 7d |  |  |  | 22.4h | 22.4h |
| 86 | 1.5.3.1.1 | Determine General Requirements |  | 3d | 2006-08-31 A | 2006-09-04 A |  | 100% |  | 2006-08-31 | 2006-09-04 | 3d |  | start no earlier than 2006-06-05 | HarrisMA [30%] | 7.2h | 7.2h |
| 87 | 1.5.3.1.2 | Determine use of CSM / LDAP |  | 1d | 2006-09-05 A | 2006-09-05 A | 86 | 100% |  | 2006-09-05 | 2006-09-05 | 1d |  |  | MujuS | 8h | 8h |
| 88 | 1.5.3.1.3 | Determine Basic Use Cases |  | 3d | 2006-09-06 A | 2006-09-08 A | 87 | 100% |  | 2006-09-06 | 2006-09-08 | 3d |  | start no earlier than 2006-06-05 | HarrisM [30%] | 7.2h | 7.2h |
| 89 | 1.5.3.1.4 | MileStone: Completed Requirements specification | milestone | 0d | 2006-09-08 A | 2006-09-08 A | 86, 88 | 100% |  | 2006-09-08 | 2006-09-08 | 0d |  | start no earlier than 2006-06-05 |  |  |  |
| 90 | 1.5.3.2 | **Design** |  | 5d | 2006-09-11 | 2006-09-15 | 85 |  |  | 2006-09-11 | 2006-09-15 | 5d | 29d |  |  | 32.8h |  |
| 91 | 1.5.3.2.1 | Design method for mapping ids from ISPY to NCIA |  | 1w | 2006-09-11 | 2006-09-15 |  |  |  | 2006-09-11 | 2006-09-15 | 1w | 22d |  | HarrisM [30%] | 12h |  |
| 92 | 1.5.3.2.2 | Design method to display text annotation along with images |  | 2.6d | 2006-09-11 | 2006-09-13 |  |  |  | 2006-09-11 | 2006-09-12 | 2d | 2.4d |  | RossoK | 20.8h |  |
| 93 | 1.5.3.3 | **Data Submission to NCIA system** |  | 12d | 2006-08-30 A | 2006-09-15 A |  | 100% |  | 2006-08-30 | 2006-09-15 | 12d |  |  |  |  |  |
| 94 | 1.5.3.3.1 | Milestone: receive ISPY image data | milestone | 0d | 2006-09-15 A | 2006-09-15 A | 90 | 100% |  | 2006-09-15 | 2006-09-15 | 0d |  |  | MadhavaS |  |  |
| 95 | 1.5.3.3.2 | Milestone: Images available in the NCIA system | milestone | 0d | 2006-08-30 A | 2006-08-30 A |  | 100% |  | 2006-08-30 | 2006-08-30 | 0d |  |  | NCICB |  |  |
| 96 | 1.5.3.4 | **Implementation** |  | 3d | 2006-09-15 | 2006-09-20 | 93 |  |  | 2006-09-15 | 2006-09-25 | 6d | 0d |  |  | 48h |  |
| 97 | 1.5.3.4.1 | Implement deep links into NCIA system modifying the clinical report |  | 3d | 2006-09-18 | 2006-09-20 |  |  |  | 2006-09-15 | 2006-09-15 | 0d | 0d |  | RossoK | 24h |  |
| 98 | 1.5.3.4.2 | Implement CSM/LDAP authentication |  | 3d | 2006-09-18 | 2006-09-20 |  |  |  | 2006-09-18 | 2006-09-20 | 3d | 0d |  | MujuS | 24h |  |
| 99 | 1.5.3.4.3 | Milestone: Completed Design document | milestone | 0d | 2006-09-15 | 2006-09-15 |  |  |  | 2006-09-15 | 2006-09-15 | 0d | 3d |  |  |  |  |
| 100 | 1.5.3.5 | **Test** |  | 14d | 2006-09-21 | 2006-10-10 | 96 |  |  | 2006-09-26 | 2006-10-13 | 14d | 0d |  |  | 72h |  |
| 101 | 1.5.3.5.1 | Unit Test |  | 4d | 2006-09-21 | 2006-09-26 |  |  |  | 2006-09-26 | 2006-09-29 | 4d | 0d |  | HarrisMA | 32h |  |
| 102 | 1.5.3.5.2 | Integration Test (Dev) |  | 10d | 2006-09-27 | 2006-10-10 | 101 |  |  | 2006-10-02 | 2006-10-13 | 10d | 0d |  | LongY | 40h |  |
| 103 | 1.5.3.5.3 | Milestone: Test Fixes on Dev | milestone | 0d | 2006-10-10 | 2006-10-10 | 102 |  |  | 2006-10-13 | 2006-10-13 | 0d | 0d |  |  |  |  |
| 104 | 1.5.3.6 | **Transition** |  | 12d | 2006-10-11 | 2006-10-26 | 103 |  |  | 2007-01-08 | 2007-01-15 | 5d | 0d |  |  | 112h |  |
| 105 | 1.5.3.6.1 | Modify deployment scripts |  | 1d | 2006-10-11 | 2006-10-11 |  |  |  | 2007-01-08 | 2007-01-09 | 1d | 4d |  | HarrisMA | 8h |  |
| 106 | 1.5.3.6.2 | Deployment to QA (Iterations 1, 2) |  | 1d | 2006-10-11 | 2006-10-11 |  |  |  | 2007-01-08 | 2007-01-09 | 1d | 4d |  | WuYe | 8h |  |
| 107 | 1.5.3.6.3 | Testing on QA |  | 5d | 2006-10-11 | 2006-10-17 |  |  |  | 2007-01-08 | 2007-01-15 | 5d | 0d |  | LongY | 40h |  |
| 108 | 1.5.3.6.4 | Deployment to Staging (Iterations 1,2) |  | 2d | 2006-10-18 | 2006-10-19 | 107 |  |  | 2007-01-08 | 2007-01-10 | 2d | 0d |  | Systems | 16h |  |
| 109 | 1.5.3.6.5 | Testing on Staging |  | 5d | 2006-10-20 | 2006-10-26 | 108 |  |  | 2007-01-08 | 2007-01-11 | 3d | 0d |  | LongY | 40h |  |

| ID | WBS | Task | Type | Duration | Start | Finish | Predecessors | Complete | Remaining | Baseline start | Baseline finish | Baseline duration | Total slack | Free slack | Constraint | Resources | Work | Actual work |
| --- | --- | --- | --- | --- | --- | --- | --- | --- | --- | --- | --- | --- | --- | --- | --- | --- | --- | --- |
| 110 | 1.5.4 | **Iteration 3 - Data Analysis Functionality & Visualization** |  | 107d? | 2006-07-05 A | 2006-11-30 |  | 30% | 74.78d? | 2006-06-20 | 2006-07-11 | 16d | 26d |  |  |  | 394.25h | 154.25h |
| 111 | 1.5.4.1 | **Correlation Displays** |  | 85d? | 2006-07-05 A | 2006-10-31 |  | 72% | 24.07d? | 2006-06-20 | 2006-07-11 | 16d | 43d | 0d |  |  | 202.25h | 154.25h |
| 112 | 1.5.4.1.1 | Create correlation display storyboard |  | 1w | 2006-07-05 A | 2006-07-11 A |  | 100% |  | 2006-07-05 | 2006-07-11 | 1w |  |  |  | HarrisMA [50%]; LiuH | 60h | 60h |
| 113 | 1.5.4.1.2 | Present storyboard to investigators and incorporate changes |  | 1d? | 2006-08-21 A | 2006-09-08 A |  | 100% |  |  |  |  |  |  |  | HarrisMA | 8h | 8h |
| 114 | 1.5.4.1.3 | Create detailed wireframes of Correlation Input Forms |  | 4.25d | 2006-08-17 A | 2006-09-08 A |  | 100% |  |  |  |  |  |  | finish no earlier than 2006-08-23 | RossoK | 34h | 34h |
| 115 | 1.5.4.1.4 | Implement Scatter Plots with correlation specific features |  | 10d | 2006-08-09 A | 2006-09-08 A |  | 100% |  | 2006-06-20 | 2006-07-10 | 3w |  |  |  | HarrisMA [50%]; RossoK [30%] | 52.25h | 52.25h |
| 116 | 1.5.4.1.5 | Implement back end code needed to support correlation |  | 5d | 2006-09-11 | 2006-09-15 | 114 |  |  |  |  |  | 75d |  |  |  |  |  |
| 117 | 1.5.4.1.6 | Analyis server enhancement to support correlation |  | 3d | 2006-10-27 | 2006-10-31 | 109 |  |  | 2006-12-04 | 2006-12-06 | 3d | 43d |  |  | HarrisMA; LiuH | 48h |  |
| 118 | 1.5.4.2 | **Box and Wisker categoric displays** |  | 5d | 2006-11-01 | 2006-11-07 | 111 |  |  |  |  |  | 43d |  |  |  | 96h |  |
| 119 | 1.5.4.2.1 | Create detailed wireframes for input forms for box and wisker display |  | 2d | 2006-11-01 | 2006-11-02 |  |  |  |  |  |  | 46d |  |  | RossoK | 16h |  |
| 120 | 1.5.4.2.2 | Customize box and wisker plot classes to support ISPY |  | 5d | 2006-11-01 | 2006-11-07 |  |  |  |  |  |  | 43d |  |  | RossoK | 40h |  |
| 121 | 1.5.4.2.3 | Develop middle tier code to support ISPY box and wisker categoric plots |  | 5d | 2006-11-01 | 2006-11-07 |  |  |  |  |  |  | 43d |  |  | RossoK [50%]; HarrisMA [50%] | 40h |  |
| 122 | 1.5.4.3 | **Analysis Enhancements** |  | 5d | 2006-10-27 | 2006-11-02 | 84 |  |  |  |  |  | 26d | 0d |  |  | 56h |  |
| 123 | 1.5.4.3.1 | Implement paired t-test for across timepoint analysis |  | 5d | 2006-10-27 | 2006-11-02 |  |  |  |  |  |  | 26d |  |  | LiuH | 40h |  |
| 124 | 1.5.4.3.2 | Modify analysis server and messaging to support paired t-test |  | 2d | 2006-10-27 | 2006-10-30 |  |  |  |  |  |  | 29d |  |  | HarrisMA | 16h |  |
| 125 | 1.5.4.4 | **Test** |  | 20d | 2006-11-03 | 2006-11-30 | 122 |  |  | 2006-12-26 | 2007-01-08 | 9d | 26d |  |  |  | 40h |  |
| 126 | 1.5.4.4.1 | Unit Test |  | 4d | 2006-11-03 | 2006-11-08 |  |  |  | 2006-12-26 | 2007-01-01 | 4d | 26d | 0d |  | HarrisMA | 32h |  |
| 127 | 1.5.4.4.2 | Integration Test (Dev) |  | 16d | 2006-11-09 | 2006-11-30 | 126 |  |  | 2007-01-01 | 2007-01-08 | 5d | 26d | 0d |  | LongY | 8h |  |
| 128 | 1.5.4.4.3 | Milestone: Test Fixes on Dev | milestone | 0d | 2006-11-30 | 2006-11-30 | 127 |  |  | 2006-12-26 | 2006-12-26 | 0d | 26d |  |  |  |  |  |
| 129 | 1.5.5 | **Iteration 4 - Individual Data Type Query and Retrieval** |  | 51d | 2006-10-26 | 2007-01-05 | 84 |  |  | 2006-10-13 | 2006-12-01 | 35d | 0d |  |  |  | 632h |  |
| 130 | 1.5.5.1 | **Refactor App from Evolution Cycle (June release) to use new backend** |  | 10d | 2006-10-27 | 2006-11-09 |  |  |  | 2006-10-16 | 2006-10-27 | 10d | 41d |  |  |  | 80h |  |
| 131 | 1.5.5.1.1 | Convert file based annotation to use db |  | 4d | 2006-10-27 | 2006-11-01 |  |  |  | 2006-10-16 | 2006-10-19 | 4d | 41d | 0d |  | ZhangD | 32h |  |
| 132 | 1.5.5.1.2 | Convert ID lookup to use db |  | 3d | 2006-11-02 | 2006-11-06 | 131 |  |  | 2006-10-20 | 2006-10-24 | 3d | 41d | 0d |  | ZhangD | 24h |  |
| 133 | 1.5.5.1.3 | Convert clinical file based calls to use clinical object model |  | 3d | 2006-11-07 | 2006-11-09 | 132 |  |  | 2006-10-25 | 2006-10-27 | 3d | 41d |  |  | ZhangD | 24h |  |

| ID | WBS | Task | Type | Duration | Start | Finish | Predecessors | Complete | Baseline start | Baseline finish | Baseline duration | Total slack | Free slack | Resources | Work |
| --- | --- | --- | --- | --- | --- | --- | --- | --- | --- | --- | --- | --- | --- | --- | --- |
| 134 | 1.5.5.2 | **Implement ID lookup in database** |  | 5d | 2006-10-27 | 2006-11-02 |  |  | 2006-10-16 | 2006-10-20 | 5d | 46d |  |  | 40h |
| 135 | 1.5.5.2.1 | populate tables |  | 2d | 2006-10-27 | 2006-10-30 |  |  | 2006-10-16 | 2006-10-17 | 2d | 46d | 0d | JiangHo | 16h |
| 136 | 1.5.5.2.2 | develop middle tier and backend code |  | 3d | 2006-10-31 | 2006-11-02 | 135 |  | 2006-10-18 | 2006-10-20 | 3d | 46d |  | ZhangD | 24h |
| 137 | 1.5.5.3 | **Implement Clinical Query Functionality** |  | 4d | 2006-10-26 | 2006-11-01 |  |  | 2006-10-13 | 2006-10-19 | 4d | 0d |  |  | 48h |
| 138 | 1.3.3.2 | CG - Model with I-SPY Finding Pkgs |  | 16d | 2006-06-27 A | 2006-07-18 A |  | 100% | 2006-06-27 | 2006-07-18 | 16d |  |  |  |  |
| 139 | 1.5.5.3.2 | Milestone: Clinical Object Model Supports Clinical Queries | milestone | 0d | 2006-10-26 | 2006-10-26 | 138 |  | 2006-10-13 | 2006-10-13 | 0d | 4d |  |  |  |
| 140 | 1.5.5.3.3 | Implement Middle Tier code to support Clinical Queries |  | 4d | 2006-10-27 | 2006-11-01 |  |  | 2006-10-16 | 2006-10-19 | 4d | 0d |  | GeorgeDa [50%]; ZhangD [50%] | 32h |
| 141 | 1.5.5.3.4 | Populate Clinical Database tables |  | 2d | 2006-10-27 | 2006-10-30 |  |  | 2006-10-16 | 2006-10-17 | 2d | 2d |  | JiangHo | 16h |
| 142 | 1.5.5.4 | **Implement FISH Query Functionality** |  | 5d | 2006-11-01 | 2006-11-08 | 137 |  | 2006-10-19 | 2006-10-26 | 5d | 0d |  |  | 88h |
| 143 | 1.5.5.4.1 | Implement FISH Query GUI |  | 5d | 2006-11-02 | 2006-11-08 |  |  | 2006-10-20 | 2006-10-26 | 5d | 0d |  | RossoK | 40h |
| 144 | 1.3.3.5.3 | Implement Middle Tier code to support FISH |  | 8d | 2006-09-21 | 2006-10-03 |  |  | 2006-09-21 | 2006-10-03 | 8d | 0d |  |  |  |
| 145 | 1.5.5.4.3 | MileStone: Middle-tier for FISH completed | milestone | 0d | 2006-11-01 | 2006-11-01 | 144 |  | 2006-10-19 | 2006-10-19 | 0d | 1d | 0d |  |  |
| 146 | 1.5.5.4.4 | Port existing data portal FISH functionality |  | 4d | 2006-11-02 | 2006-11-07 | 145 |  | 2006-10-20 | 2006-10-25 | 4d | 1d |  | RossoK | 32h |
| 147 | 1.5.5.4.5 | Populate FISH Database tables |  | 2d | 2006-11-02 | 2006-11-03 |  |  | 2006-10-20 | 2006-10-23 | 2d | 3d |  | ZhangD | 16h |
| 148 | 1.5.5.5 | **Implement IHC Query Functionality** |  | 5d | 2006-11-01 | 2006-11-08 | 137 |  | 2006-10-19 | 2006-10-26 | 5d | 5d |  |  | 88h |
| 149 | 1.5.5.5.1 | Implement IHC Query GUI |  | 5d | 2006-11-02 | 2006-11-08 |  |  | 2006-10-20 | 2006-10-26 | 5d | 5d |  | LandyR | 40h |
| 150 | 1.3.3.5.5 | Implement Middle Tier Code to support IHC |  | 8d | 2006-10-03 | 2006-10-13 |  |  | 2006-10-03 | 2006-10-13 | 8d | 1.18d |  |  |  |
| 151 | 1.5.5.5.3 | MileStone: Middle-tier for IHC completed | milestone | 0d | 2006-11-01 | 2006-11-01 | 150 |  | 2006-10-19 | 2006-10-19 | 0d | 10d |  |  |  |
| 152 | 1.5.5.5.4 | Port existing data portal IHC functionality |  | 4d | 2006-11-02 | 2006-11-07 | 137 |  | 2006-10-20 | 2006-10-25 | 4d | 6d |  | ZhangD | 32h |
| 153 | 1.5.5.5.5 | Populate IHC Database tables |  | 2d | 2006-11-02 | 2006-11-03 |  |  | 2006-10-20 | 2006-10-23 | 2d | 8d |  | JiangHo | 16h |
| 154 | 1.5.5.6 | **Implement P53 Query Functionality** |  | 5d | 2006-11-08 | 2006-11-15 | 142 |  | 2006-10-26 | 2006-11-02 | 5d | 0d |  |  | 88h |
| 155 | 1.5.5.6.1 | Implement P53 Query GUI |  | 5d | 2006-11-09 | 2006-11-15 |  |  | 2006-10-27 | 2006-11-02 | 5d | 0d |  | RossoK | 40h |
| 156 | 1.3.3.5.7 | Implement Middle Tier Code to support P53 |  | 4d | 2006-10-13 | 2006-10-19 |  |  | 2006-10-13 | 2006-10-19 | 4d | 1.18d |  |  |  |
| 157 | 1.5.5.6.3 | MileStone: Middle-tier for P53 completed | milestone | 0d | 2006-11-08 | 2006-11-08 | 156 |  | 2006-10-26 | 2006-10-26 | 0d | 1d | 0d |  |  |
| 158 | 1.5.5.6.4 | Port existing data portal P53 functionality |  | 4d | 2006-11-09 | 2006-11-14 | 157 |  | 2006-10-27 | 2006-11-01 | 4d | 1d |  | ZhangD | 32h |
| 159 | 1.5.5.6.5 | Populate P53 Database tables |  | 2d | 2006-11-09 | 2006-11-10 |  |  | 2006-10-27 | 2006-10-30 | 2d | 3d |  | JiangHo | 16h |

| ID | WBS | Task | Type | Duration | Start | Finish | Predecessors | Baseline start | Baseline finish | Baseline duration | Total slack | Resources | Work |
| --- | --- | --- | --- | --- | --- | --- | --- | --- | --- | --- | --- | --- | --- |
| 160 | 1.5.5.7 | **Test** |  | 35d | 2006-10-27 | 2006-12-14 |  | 2006-11-03 | 2006-12-01 | 21d | 0d |  | 72h |
| 161 | 1.5.5.7.1 | Unit Test |  | 4d | 2006-10-27 | 2006-11-01 |  | 2006-11-03 | 2006-11-08 | 4d | 31d | HarrisMA | 32h |
| 162 | 1.5.5.7.2 | Integration Test (Dev) |  | 21d | 2006-11-16 | 2006-12-14 | 137, 142, 148, 154 | 2006-11-03 | 2006-12-01 | 21d | 0d | LongY | 40h |
| 163 | 1.5.5.7.3 | Milestone: Test Fixes on Dev | milestone | 0d | 2006-12-14 | 2006-12-14 | 162 | 2006-12-01 | 2006-12-01 | 0d | 0d |  |  |
| 164 | 1.5.5.8 | **Transition** |  | 16d | 2006-12-15 | 2007-01-05 | 160 | 2007-01-08 | 2007-01-15 | 5d | 0d |  | 128h |
| 165 | 1.5.5.8.1 | Modify deployment scripts |  | 1d | 2006-12-15 | 2006-12-15 |  | 2007-01-08 | 2007-01-09 | 1d | 0d | HarrisMA | 8h |
| 166 | 1.5.5.8.2 | Deployment to QA |  | 1d | 2006-12-18 | 2006-12-18 | 165 | 2007-01-08 | 2007-01-09 | 1d | 0d | WuYe | 8h |
| 167 | 1.5.5.8.3 | Testing on QA |  | 5d | 2006-12-19 | 2006-12-25 | 166 | 2007-01-08 | 2007-01-15 | 5d | 0d | LongY | 40h |
| 168 | 1.5.5.8.4 | Deployment to Staging |  | 2d | 2006-12-26 | 2006-12-27 | 167 | 2007-01-08 | 2007-01-10 | 2d | 0d | Systems | 16h |
| 169 | 1.5.5.8.5 | Testing on Staging |  | 3d | 2006-12-28 | 2007-01-01 | 168 | 2007-01-08 | 2007-01-11 | 3d | 0d | LongY | 24h |
| 170 | 1.5.5.8.6 | Deployment to Production |  | 2d | 2007-01-02 | 2007-01-03 | 169 | 2007-01-08 | 2007-01-10 | 2d | 0d | Systems | 16h |
| 171 | 1.5.5.8.7 | Testing on Production |  | 2d | 2007-01-04 | 2007-01-05 | 170 | 2007-01-08 | 2007-01-10 | 2d | 0d | LongY | 16h |
