# caIntegrator-DRAFT

Schedule from MS Project, 2006-03-28 to 2006-10-24, A marks actual dates.
NCI

## Calendars

- Standard: Mon-Fri 08:00-12:00, 13:00-17:00; Sat-Sun off.

## Resources

| Resource |
| --- |
| JiangHo |
| GuruswamiS |
| SahniH |
| ZhangD |
| BhatturR |
| NCICB |
| MadhavaS |
| GeorgeDa |
| NCICB/CGEMS team |

## Schedule

| ID | WBS | Task | Type | Duration | Start | Finish | Predecessors | Complete | Remaining | Total slack | Free slack | Resources | Work | Actual work |
| --- | --- | --- | --- | --- | --- | --- | --- | --- | --- | --- | --- | --- | --- | --- |
| 1 | 1 | **caIntegrator** |  | 150.57d? | 2006-03-28 A | 2006-10-24 |  | 32% | 102.25d? | 0d |  |  | 3312h | 1032h |
| 2 | 1.1 | **Project Management and Control** |  | 50d | 2006-05-25 | 2006-08-02 |  |  |  | 58.57d |  |  | 800h |  |
| 3 | 1.1.1 | Project Management |  | 50d | 2006-05-25 | 2006-08-02 |  |  |  | 58.57d |  | GuruswamiS | 400h |  |
| 4 | 1.1.2 | Project Control |  | 50d | 2006-05-25 | 2006-08-02 |  |  |  | 58.57d |  | GuruswamiS | 400h |  |
| 5 | 1.2 | **Inception Phase** |  | 47d | 2006-03-28 A | 2006-05-31 |  | 17% | 38.94d | 103.57d |  |  | 16h | 9.6h |
| 6 | 1.2.1 | **Requirements Gathering** |  | 3d | 2006-03-28 A | 2006-03-30 A |  | 100% |  |  |  |  |  |  |
| 7 | 1.2.1.1 | Determine General Requirements | milestone | 0d | 2006-03-28 A | 2006-03-28 A |  | 100% |  |  |  | SahniH |  |  |
| 8 | 1.2.1.2 | Determine Basic Use Cases | milestone | 0d | 2006-03-29 A | 2006-03-29 A | 7 | 100% |  |  |  | SahniH |  |  |
| 9 | 1.2.1.3 | Prioritize Use Cases | milestone | 0d | 2006-03-30 A | 2006-03-30 A | 7, 8 | 100% |  |  |  | MadhavaS |  |  |
| 10 | 1.2.1.4 | Milestone: General Requirements Captured | milestone | 0d | 2006-03-30 A | 2006-03-30 A | 9 | 100% |  |  |  |  |  |  |
| 11 | 1.2.2 | **Project Management** |  | 41d | 2006-04-05 A | 2006-05-31 |  | 17% | 33.97d | 103.57d |  |  | 16h | 9.6h |
| 12 | 1.2.2.1 | Draft Project Plan |  | 2d | 2006-04-05 A | 2006-04-06 |  | 60% | 0.8d | 142.57d |  | GuruswamiS | 16h | 9.6h |
| 13 | 1.2.2.2 | Add Feature Requests/Bugs into TestTrack |  | 2d | 2006-05-25 | 2006-05-26 |  |  |  | 103.57d | 0d |  |  |  |
| 14 | 1.2.2.3 | Draft Requirements Specification Document |  | 3d | 2006-05-29 | 2006-05-31 | 13 |  |  | 103.57d |  |  |  |  |
| 15 | 1.3 | **Evolution Cycle 1: Elaboration & Construction** |  | 150.57d? | 2006-03-28 A | 2006-10-24 |  | 41% | 89.04d? | 0d |  |  | 2496h | 1022.4h |
| 16 | 1.3.1 | **Iteration 1 - Prototype** |  | 90d | 2006-03-28 A | 2006-07-31 A |  | 100% |  |  |  |  | 440h | 440h |
| 17 | 1.3.1.1 | **Architecture** |  | 84d | 2006-03-28 A | 2006-07-21 A |  | 100% |  |  |  |  |  |  |
| 18 | 1.3.1.1.1 | Initial Draft of Architecture |  | 2w | 2006-03-28 A | 2006-04-10 A |  | 100% |  |  |  |  |  |  |
| 19 | 1.3.1.1.2 | Internal review with caIntegrator Team |  | 1d | 2006-03-28 A | 2006-03-28 A | 18 | 100% |  |  |  |  |  |  |
| 20 | 1.3.1.1.3 | Incorporate Comments/Feedback from the team review |  | 2d | 2006-07-13 A | 2006-07-17 A | 19 | 100% |  |  |  |  |  |  |
| 21 | 1.3.1.1.4 | Draft design document (caBIG template) |  | 1w | 2006-07-17 A | 2006-07-21 A | 20 | 100% |  |  |  |  |  |  |
| 22 | 1.3.1.1.5 | Milestone: Completed Design document | milestone | 0d | 2006-05-25 A | 2006-05-25 A |  | 100% |  |  |  |  |  |  |
| 23 | 1.3.1.2 | **Registeration of CDEs in caDSR - 1.0 OM** |  | 49d | 2006-05-09 A | 2006-07-14 A |  | 100% |  |  |  |  | 280h | 280h |
| 24 | 1.3.1.2.1 | Establish baseline documentation and prepare submission package |  | 1d | 2006-05-25 A | 2006-05-25 A |  | 100% |  |  |  | ZhangD | 8h | 8h |
| 25 | 1.3.1.2.2 | Annotate UML model with well formed names and definitions |  | 9d | 2006-05-09 A | 2006-06-12 A |  | 100% |  |  |  | ZhangD | 72h | 72h |
| 26 | 1.3.1.2.3 | Review UML Model using SIW |  | 10d | 2006-05-22 A | 2006-06-02 A | 25 | 100% |  |  |  | ZhangD | 80h | 80h |
| 27 | 1.3.1.2.4 | Register CDEs in caDSR |  | 15d | 2006-06-13 A | 2006-07-14 A | 26 | 100% |  |  |  | NCICB | 120h | 120h |

| ID | WBS | Task | Type | Duration | Start | Finish | Predecessors | Complete | Remaining | Total slack | Constraint | Resources | Work | Actual work |
| --- | --- | --- | --- | --- | --- | --- | --- | --- | --- | --- | --- | --- | --- | --- |
| 28 | 1.3.1.3 | **API Development - caCORE SDK** |  | 44d | 2006-05-31 A | 2006-07-31 A |  | 100% |  |  |  |  | 72h | 72h |
| 29 | 1.3.1.3.1 | Draft design document (caBIG template) |  | 23d | 2006-05-31 A | 2006-07-31 A |  | 100% |  |  |  | SahniH | 40h | 40h |
| 30 | 1.3.1.3.2 | Implement hibernate mappings for FISH |  | 2d | 2006-07-13 A | 2006-07-17 A | 29 | 100% |  |  |  | SahniH | 16h | 16h |
| 31 | 1.3.1.3.3 | Develop Unit test cases |  | 2d | 2006-06-06 A | 2006-06-07 A | 30 | 100% |  |  |  | SahniH | 16h | 16h |
| 32 | 1.3.1.4 | **API Development - QBC** |  | 13d | 2006-05-25 A | 2006-06-12 A |  | 100% |  |  |  |  | 72h | 72h |
| 33 | 1.3.1.4.1 | Draft design document (caBIG template) |  | 1w | 2006-05-31 A | 2006-06-12 A |  | 100% |  |  |  | BhatturR | 40h | 40h |
| 34 | 1.3.1.4.2 | Implement hibernate mappings for FISH |  | 1d | 2006-05-25 A | 2006-05-25 A |  | 100% |  |  |  | BhatturR | 8h | 8h |
| 35 | 1.3.1.4.3 | Implement QBC API for FISH |  | 2d | 2006-05-25 A | 2006-05-26 A |  | 100% |  |  |  | BhatturR | 16h | 16h |
| 36 | 1.3.1.4.4 | Implement Junit test suite and perform unit test |  | 1d | 2006-05-25 A | 2006-05-25 A |  | 100% |  |  |  | BhatturR | 8h | 8h |
| 37 | 1.3.1.4.5 | Milestone: Completed Design document | milestone | 0d | 2006-05-25 A | 2006-05-25 A |  | 100% |  |  |  | BhatturR |  |  |
| 38 | 1.3.1.5 | **Database development** |  | 1d | 2006-05-25 A | 2006-05-25 A |  | 100% |  |  |  |  | 16h | 16h |
| 39 | 1.3.1.5.1 | Incorporate FISH into caIntegrator database schema |  | 1d | 2006-05-25 A | 2006-05-25 A |  | 100% |  |  |  | JiangHo | 8h | 8h |
| 40 | 1.3.1.5.2 | Complete database schema development & data migration |  | 1d | 2006-05-25 A | 2006-05-25 A |  | 100% |  |  |  | JiangHo | 8h | 8h |
| 41 | 1.3.1.6 | Deploy iteration to DEV Server |  | 1d | 2006-05-25 A | 2006-05-25 A |  | 100% |  |  |  |  |  |  |
| 42 | 1.3.2 | **Itreration 2a: CGEMS using caCORE-SDK** |  | 40d | 2006-06-12 A | 2006-08-04 |  | 62% | 15.22d | 56.57d |  |  | 704h | 454.4h |
| 43 | 1.3.2.1 | Harmonize CGEMS UML model with caIntegrator |  | 7d | 2006-06-12 A | 2006-06-20 A |  | 100% |  |  | finish no earlier than 2006-06-20 | SahniH | 56h | 56h |
| 44 | 1.3.2.2 | Harmozine CGEMS OM with CG-OM |  | 7d | 2006-06-12 A | 2006-06-21 A | 43 | 100% |  |  | start no earlier than 2006-06-12 |  | 56h | 56h |
| 45 | 1.3.2.3 | Review Model with CGEMS stake holders | milestone | 0d | 2006-06-20 A | 2006-06-20 A | 43 | 100% |  |  |  | NCICB/CGEMS team |  |  |
| 46 | 1.3.2.4 | Incorporate FeedBack |  | 2d | 2006-06-21 A | 2006-06-22 A | 45 | 100% |  |  |  | SahniH | 16h | 16h |
| 47 | 1.3.2.5 | MileStone: Finalize model with CGEMS stake holders | milestone | 0d | 2006-06-22 A | 2006-06-22 A | 46 | 100% |  |  |  | SahniH |  |  |
| 48 | 1.3.2.4 | MileStone: Finalize CG-OM w/CGEMS model | milestone | 0d | 2006-06-22 A | 2006-06-22 A | 47 | 100% |  |  |  |  |  |  |
| 49 | 1.3.2.8 | MileStone: Generate API using caCORE SDK | milestone | 0d | 2006-07-26 A | 2006-07-26 A | 50 | 100% |  |  |  |  |  |  |
| 50 | 1.3.2.8 | **Generate API using caCORE-SDK** |  | 18d | 2006-07-03 A | 2006-07-26 | 43 | 66% | 6.2d | 63.57d |  |  | 144h | 94.4h |
| 51 | 1.3.2.8.1 | Generate API using caCORE SDK |  | 2w | 2006-07-03 A | 2006-07-17 A |  | 100% |  |  |  | GuruswamiS | 80h | 80h |

| ID | WBS | Task | Type | Duration | Start | Finish | Predecessors | Complete | Remaining | Total slack | Free slack | Constraint | Resources | Work | Actual work |
| --- | --- | --- | --- | --- | --- | --- | --- | --- | --- | --- | --- | --- | --- | --- | --- |
| 52 | 1.3.2.8.2 | **Test** |  | 8d | 2006-07-17 A | 2006-07-26 | 51 | 23% | 6.2d | 63.57d |  |  |  | 64h | 14.4h |
| 53 | 1.3.2.8.2.1 | Unit Test |  | 3d | 2006-07-17 A | 2006-07-19 |  | 60% | 1.2d | 63.57d | 0d |  | GuruswamiS | 24h | 14.4h |
| 54 | 1.3.2.8.2.2 | Integration Test & Fixes (Dev) |  | 5d | 2006-07-20 | 2006-07-26 | 53 |  |  | 63.57d | 0d |  | GuruswamiS | 40h |  |
| 55 | 1.3.2.8.2.3 | Milestone: Test Fixes on Dev | milestone | 0d | 2006-07-26 | 2006-07-26 | 54 |  |  | 63.57d |  |  | GuruswamiS |  |  |
| 56 | 1.3.2.6 | MileStone: Dev database ready | milestone | 0d | 2006-07-19 | 2006-07-19 | 57 |  |  | 11d |  |  |  |  |  |
| 57 | 1.3.2.10 | **Database design and implementation** |  | 7d | 2006-07-11 A | 2006-07-19 A |  | 100% |  |  |  |  |  | 104h | 104h |
| 58 | 1.3.2.10.1 | Create Db schema |  | 4d | 2006-07-11 A | 2006-07-17 A | 43 | 100% |  |  |  |  | JiangHo [250%] | 80h | 80h |
| 59 | 1.3.2.10.2 | Populate data (GenotypeFinding & SNPAssay) |  | 3d | 2006-07-17 A | 2006-07-19 A | 58 | 100% |  |  |  |  | JiangHo | 24h | 24h |
| 60 | 1.3.3.2 | MileStone: Completed middle-tier implementation | milestone | 0d | 2006-08-04 | 2006-08-04 | 61 |  |  | 30d |  |  |  |  |  |
| 61 | 1.3.2.12 | **Middle-tier implementation** |  | 20d | 2006-07-10 A | 2006-08-04 |  | 25% | 15d | 0d |  |  |  | 160h | 40h |
| 62 | 1.3.2.12.1 | Draft middleware design document - CGEMS |  | 1w | 2006-07-10 A | 2006-07-17 A | 47 | 100% |  |  |  |  | BhatturR | 40h | 40h |
| 63 | 1.3.2.12.2 | Implement CGEMS DTO and service middletier |  | 3w | 2006-07-17 | 2006-08-04 | 62 |  |  | 0d |  |  | BhatturR | 120h |  |
| 64 | 1.3.2.13 | **caBIG Compliance & caGRID** |  | 28d | 2006-06-21 A | 2006-07-28 |  | 64% | 10d | 6.57d | 0d |  |  | 224h | 144h |
| 65 | 1.3.2.13.1 | Fully Annotate Model |  | 2w | 2006-06-21 A | 2006-07-04 A | 43 | 100% |  |  |  |  | ZhangD | 80h | 80h |
| 66 | 1.3.2.13.2 | Process Model thru SIW |  | 8d | 2006-07-05 A | 2006-07-14 A | 65 | 100% |  |  |  |  | ZhangD | 64h | 64h |
| 67 | 1.3.2.13.3 | Register Model in caDSR |  | 2w | 2006-07-17 | 2006-07-28 | 66 |  |  | 6.57d |  |  | NCICB | 80h |  |
| 68 | 1.3.3 | **Iteration 2b - I-SPY Findings** |  | 85.57d | 2006-06-27 A | 2006-10-24 |  | 8% | 78.46d | 0d |  |  |  | 1352h | 128h |
| 69 | 1.5.5.3.2 | Milestone: Clinical Object Model Supports Clinical Queries | milestone | 0d | 2006-09-14 | 2006-09-14 | 70 |  |  | 4d |  |  |  |  |  |
| 70 | 1.3.3.2 | **CG - Model with I-SPY Finding Pkgs** |  | 16d | 2006-06-27 A | 2006-07-18 A |  | 100% |  |  |  |  |  | 128h | 128h |
| 71 | 1.3.3.2.1 | Design CG OM packages |  | 14d | 2006-06-27 A | 2006-07-17 A |  | 100% |  |  |  | start no earlier than 2006-06-15 | GeorgeDa | 112h | 112h |
| 72 | 1.3.3.2.2 | Review OM with the caIntegrator team |  | 1d | 2006-07-17 A | 2006-07-17 A | 71 | 100% |  |  |  |  | GeorgeDa | 8h | 8h |
| 73 | 1.3.3.2.3 | Milestone: Complete CG - OM | milestone | 0d | 2006-07-17 A | 2006-07-17 A | 72 | 100% |  |  |  |  | GeorgeDa |  |  |
| 74 | 1.3.3.2.4 | Refactor FISH into the CG OM package |  | 1d | 2006-07-18 A | 2006-07-18 A | 72 | 100% |  |  |  |  | GeorgeDa | 8h | 8h |
| 75 | 1.3.3.3 | **Generate API using caCORE-SDK** |  | 28d | 2006-07-19 | 2006-08-25 | 70 |  |  | 41.57d |  |  |  | 144h |  |
| 76 | 1.3.3.3.1 | Generate API using caCORE SDK |  | 4w | 2006-07-19 | 2006-08-15 |  |  |  | 41.57d | 0d |  | GeorgeDa [50%] | 80h |  |

| ID | WBS | Task | Type | Duration | Start | Finish | Predecessors | Total slack | Free slack | Resources | Work |
| --- | --- | --- | --- | --- | --- | --- | --- | --- | --- | --- | --- |
| 77 | 1.3.3.3.2 | **Test** |  | 8d | 2006-08-16 | 2006-08-25 | 76 | 41.57d |  |  | 64h |
| 78 | 1.3.3.3.2.1 | Unit Test |  | 3d | 2006-08-16 | 2006-08-18 |  | 41.57d | 0d | GeorgeDa | 24h |
| 79 | 1.3.3.3.2.2 | Integration Test & Fixes (Dev) |  | 5d | 2006-08-21 | 2006-08-25 | 78 | 41.57d | 0d | GeorgeDa | 40h |
| 80 | 1.3.3.3.2.3 | Milestone: Test Fixes on Dev | milestone | 0d | 2006-08-25 | 2006-08-25 | 79 | 41.57d |  | GeorgeDa |  |
| 81 | 1.3.3.4 | **Database design and implementation** |  | 20d | 2006-07-20 | 2006-08-16 | 70, 57 | 48.57d |  |  | 160h |
| 82 | 1.3.3.4.1 | Create Db schema |  | 2w | 2006-07-20 | 2006-08-02 |  | 48.57d | 0d | JiangHo | 80h |
| 83 | 1.3.3.4.2 | Load data |  | 2w | 2006-08-03 | 2006-08-16 | 82 | 48.57d |  | JiangHo | 80h |
| 84 | 1.3.3.5 | **Middle-tier Implementation** |  | 56.57d | 2006-08-07 | 2006-10-24 | 63 | 0d |  |  | 480h |
| 85 | 1.3.3.5.1 | Draft design document (caBIG template) for ISPY |  | 1w | 2006-08-07 | 2006-08-11 |  | 0d |  | BhatturR | 40h |
| 86 | 1.3.3.5.2 | Implement Query Service Layer |  | 5.71w | 2006-08-14 | 2006-09-21 | 85 | 0d |  | BhatturR [70%] | 160h |
| 87 | 1.3.3.5.3 | Implement Middle Tier code to support FISH |  | 8d | 2006-09-21 | 2006-10-03 | 86 | 0d |  | BhatturR | 64h |
| 88 | 1.5.5.4.3 | MileStone: Middle-tier for FISH completed | milestone | 0d | 2006-10-03 | 2006-10-03 | 87 | 1d | 0d |  |  |
| 89 | 1.3.3.5.5 | Implement Middle Tier Code to support IHC |  | 8d | 2006-10-03 | 2006-10-13 | 87 | 1.18d | 0d | GeorgeDa | 64h |
| 90 | 1.5.5.5.3 | MileStone: Middle-tier for IHC completed | milestone | 0d | 2006-10-13 | 2006-10-13 | 89 | 4.18d |  |  |  |
| 91 | 1.3.3.5.7 | Implement Middle Tier Code to support P53 |  | 4d | 2006-10-13 | 2006-10-19 | 89 | 1.18d | 0.18d | GeorgeDa | 32h |
| 92 | 1.5.5.6.3 | MileStone: Middle-tier for P53 completed | milestone | 0d | 2006-10-19 | 2006-10-19 | 91 | 1d | 0d |  |  |
| 93 | 1.3.3.5.9 | Implement Middle Tier Code to support GE |  | 8d | 2006-10-03 | 2006-10-13 | 87 | 0d |  | BhatturR | 64h |
| 94 | 1.5.5.7.3 | MileStone: Middle-tier for GE completed | milestone | 0d | 2006-10-13 | 2006-10-13 | 93 | 5.18d | 0d |  |  |
| 95 | 1.3.3.5.11 | Implement Junit test suite and perform unit test |  | 1w | 2006-10-13 | 2006-10-20 | 93 | 0d |  | BhatturR | 40h |
| 96 | 1.3.3.5.12 | Milestone: Completed Design document |  | 2d | 2006-10-20 | 2006-10-24 | 95 | 0d |  | BhatturR | 16h |
| 97 | 1.3.3.6 | **caBIG compliance & caGRID** |  | 50d | 2006-07-31 | 2006-10-06 | 73, 64 | 6.57d |  |  | 440h |
| 98 | 1.3.3.6.1 | **Registeration of CDEs in caDSR - 2.0 OM** |  | 45d | 2006-07-31 | 2006-09-29 |  | 6.57d |  |  | 400h |
| 99 | 1.3.3.6.1.1 | Fully Annotate Model |  | 3w | 2006-07-31 | 2006-08-18 |  | 6.57d | 0d | ZhangD | 120h |
| 100 | 1.3.3.6.1.2 | Process Model thru SIW |  | 3w | 2006-08-21 | 2006-09-08 | 99 | 11.57d | 0d | ZhangD | 80h |
| 101 | 1.3.3.6.1.3 | Register Model in caDSR |  | 2w | 2006-09-11 | 2006-09-22 | 100 | 21.57d |  | NCICB | 80h |
| 102 | 1.3.3.6.1.4 | Register CGOM 2.0 with caGRID |  | 2w | 2006-09-11 | 2006-09-22 | 100 | 11.57d | 0d | SahniH | 80h |
| 103 | 1.3.3.6.1.5 | Curate additional metadata |  | 1w | 2006-09-25 | 2006-09-29 | 102 | 11.57d | 0d | NCICB | 40h |
| 104 | 1.3.3.6.2 | Establish documentation for VCDE & Arch. Review |  | 1w | 2006-10-02 | 2006-10-06 | 103 | 11.57d | 0d | ZhangD | 40h |
| 105 | 1.3.3.6.3 | MileStone: caBIG VCDE & Arch. Review presentation | milestone | 0d | 2006-10-06 | 2006-10-06 | 104 | 11.57d |  | ZhangD |  |

| ID | WBS | Task | Type | Duration | Start | Finish | Predecessors | Remaining | Total slack | Free slack | Resources |
| --- | --- | --- | --- | --- | --- | --- | --- | --- | --- | --- | --- |
| 106 | 1.3.4 | **Iteration 3** |  | 47d? | 2006-03-28 A | 2006-05-31 |  | 47d? | 103.57d |  |  |
| 107 | 1.3.4.1 | **caIntegratorVista (ETL status portal)** |  | 43d? | 2006-03-28 A | 2006-05-25 |  | 43d? | 107.57d |  |  |
| 108 | 1.3.4.1.1 | **Requirements Gathering** |  | 3d | 2006-03-28 A | 2006-03-30 |  | 3d | 147.57d |  |  |
| 109 | 1.3.4.1.1.1 | Determine Requirements |  | 1d | 2006-03-28 A | 2006-03-28 |  | 1d | 0d |  | SahniH |
| 110 | 1.3.4.1.1.2 | Determine Basic Use Cases |  | 1d | 2006-03-29 A | 2006-03-29 | 109 | 1d | 0d |  | SahniH |
| 111 | 1.3.4.1.1.3 | Prioritize Use Cases |  | 1d | 2006-03-30 A | 2006-03-30 | 109, 110 | 1d | 147.57d | 0d | MadhavaS |
| 112 | 1.3.4.1.1.4 | Milestone: General Requirements Captured | milestone | 0d | 2006-03-30 | 2006-03-30 | 111 |  | 147.57d |  |  |
| 113 | 1.3.4.1.2 | **Implementation** |  | 1d? | 2006-05-25 | 2006-05-25 |  |  | 107.57d |  |  |
| 114 | 1.3.4.1.2.1 | Draft Design document for Study Gateway |  | 1d? | 2006-05-25 | 2006-05-25 |  |  | 107.57d |  |  |
| 115 | 1.3.4.1.2.2 | Implement Study gateway module |  | 1d? | 2006-05-25 | 2006-05-25 |  |  | 107.57d |  |  |
| 116 | 1.3.4.1.2.3 | Develop Unit test and perform testing |  | 1d? | 2006-05-25 | 2006-05-25 |  |  | 107.57d |  |  |
| 117 | 1.3.4.1.2.4 | MileStone: Complete Design Document & study gateway module |  | 1d? | 2006-05-25 | 2006-05-25 |  |  | 107.57d |  |  |
| 118 | 1.3.4.2 | **API Development - caCORE SDK** |  | 5d? | 2006-05-25 | 2006-05-31 |  |  | 103.57d |  |  |
| 119 | 1.3.4.2.1 | Implement hibernate mappings |  | 1d? | 2006-05-25 | 2006-05-25 |  |  | 107.57d |  |  |
| 120 | 1.3.4.2.2 | Update design document |  | 1w | 2006-05-25 | 2006-05-31 |  |  | 103.57d |  |  |
| 121 | 1.3.4.3 | **Middle-tier implementation** |  | 1d? | 2006-05-25 | 2006-05-25 |  |  | 107.57d |  |  |
| 122 | 1.3.4.3.1 | Implement hibernate mappings |  | 1d? | 2006-05-25 | 2006-05-25 |  |  | 107.57d |  |  |
| 123 | 1.3.4.3.2 | Implement Service layer |  | 1d? | 2006-05-25 | 2006-05-25 |  |  | 107.57d |  |  |
| 124 | 1.3.4.3.3 | Implement Junit test suite and perform unit test |  | 1d? | 2006-05-25 | 2006-05-25 |  |  | 107.57d |  |  |
| 125 | 1.3.4.3.4 | Milestone: Updated Design document | milestone | 0d | 2006-05-25 | 2006-05-25 |  |  | 108.57d |  |  |
| 126 | 1.3.4.4 | **Database development** |  | 1d? | 2006-05-25 | 2006-05-25 |  |  | 107.57d |  |  |
| 127 | 1.3.4.4.1 | Develop table creation scripts and data migration |  | 1d? | 2006-05-25 | 2006-05-25 |  |  | 107.57d |  |  |
| 128 | 1.3.4.4.2 | Complete database schema development & data migration |  | 1d? | 2006-05-25 | 2006-05-25 |  |  | 107.57d |  |  |
| 129 | 1.3.4.5 | **Technical guide** |  | 1d? | 2006-05-25 | 2006-05-25 |  |  | 107.57d |  |  |
| 130 | 1.3.4.5.1 | Draft technical guide |  | 1d? | 2006-05-25 | 2006-05-25 |  |  | 107.57d |  |  |
| 131 | 1.3.4.5.2 | Review technical guide with Tech. writer & caIntegrator team |  | 1d? | 2006-05-25 | 2006-05-25 |  |  | 107.57d |  |  |
| 132 | 1.3.4.5.3 | Milestone: Completed technical guide |  | 1d? | 2006-05-25 | 2006-05-25 |  |  | 107.57d |  |  |
| 133 | 1.3.4.6 | Deploy iteration to DEV Server |  | 1d? | 2006-05-25 | 2006-05-25 |  |  | 107.57d |  |  |

| ID | WBS | Task | Type | Duration | Start | Finish | Total slack |
| --- | --- | --- | --- | --- | --- | --- | --- |
| 134 | 1.4 | **Transition** |  | 1d? | 2006-05-25 | 2006-05-25 | 107.57d |
| 135 | 1.4.1 | Implement API Integration test suite |  | 1d? | 2006-05-25 | 2006-05-25 | 107.57d |
| 136 | 1.4.2 | Test all service layer APIs |  | 1d? | 2006-05-25 | 2006-05-25 | 107.57d |
| 137 | 1.4.3 | Milestone: Completed CGOM 2.0 & Service Layer APIs | milestone | 0d | 2006-05-25 | 2006-05-25 | 108.57d |
| 138 | 1.5 | **Evolutionary Cycle 2:** |  | 1d? | 2006-05-25 | 2006-05-25 | 107.57d |
| 139 | 1.5.1 | Iteration 1 |  | 1d? | 2006-05-25 | 2006-05-25 | 107.57d |
