# CGEMS_download

Schedule from MS Project, 2006-10-18 to 2006-11-24.
NCI

## Calendars

- Standard: Mon-Fri 08:00-12:00, 13:00-17:00; Sat-Sun off.

## Resources

| Resource |
| --- |
| Dana Zhang |
| Himanso Sanhi |
| Srini Guruswami |
| Himanso Sahni |
| Alex Jiang |
| Long |
| Ying |
| Jenny Glenn |
| Ye Wu |
| Ying Long |
| Terp systems |
| QA |
| Jenny Glenn/Doc |
| Dana Zhang / Himanso Sahni |
| Systems |
| Doc team /Jenny Glenn |
| Doc Team |
| Jill Hatfield |
| Carolyn |
| Carolyn Klinger |

## Schedule

| ID | WBS | Task | Type | Duration | Start | Finish | Predecessors | Total slack | Free slack | Resources | Work |
| --- | --- | --- | --- | --- | --- | --- | --- | --- | --- | --- | --- |
| 1 | 1 | **CGEMS download release** |  | 28d | 2006-10-18 | 2006-11-24 |  | 0d |  |  | 760h |
| 2 | 1.1 | **set up cgems API locally** |  | 10d | 2006-10-18 | 2006-10-31 |  | 5d |  | Dana Zhang; Himanso Sanhi; Srini Guruswami | 304h |
| 3 | 1.1.1 | modified ant script |  | 2d | 2006-10-18 | 2006-10-19 |  | 5d | 0d |  |  |
| 4 | 1.1.2 | add copy hbm files from caintegrator-spec src folder |  | 1d | 2006-10-20 | 2006-10-20 | 3 | 5d | 0d | Dana Zhang | 8h |
| 5 | 1.1.3 | write ank tast to remove .bean from all hbm files copied |  | 2d | 2006-10-23 | 2006-10-24 | 4 | 5d | 0d | Dana Zhang | 16h |
| 6 | 1.1.4 | add unit test as a ant target |  | 3d | 2006-10-25 | 2006-10-27 | 5 | 14d | 0d | Himanso Sahni | 24h |
| 7 | 1.1.5 | create cgems database synonym to the cgems dev db, filter out two tables: GENOTYPE_FACT & STUDY_PARTICIPANT |  | 2d | 2006-10-30 | 2006-10-31 | 6 | 18d |  | Alex Jiang | 16h |
| 8 | 1.2 | **CGEMS Object Query & Deployment** |  | 28d | 2006-10-18 | 2006-11-24 |  | 0d |  |  | 456h |
| 9 | 1.2.1 | **Test the API locally** |  | 4d | 2006-10-30 | 2006-11-02 |  | 14d |  |  | 48h |
| 10 | 1.2.1.1 | Test Happy.jsp |  | 2d | 2006-10-30 | 2006-10-31 | 6 | 14d | 0d | Dana Zhang | 16h |
| 11 | 1.2.1.2 | test client jar to perform unit testing |  | 2d | 2006-11-01 | 2006-11-02 | 10 | 14d | 0d | Dana Zhang; Himanso Sahni | 32h |
| 12 | 1.2.2 | **Deploy to dev serve** |  | 2d | 2006-11-03 | 2006-11-06 |  | 14d |  |  |  |
| 13 | 1.2.2.1 | move the API to the dev server, and test the api |  | 2d | 2006-11-03 | 2006-11-06 | 11 | 14d |  |  |  |
| 14 | 1.2.3 | **Documentation Support** |  | 9d | 2006-10-25 | 2006-11-06 |  | 5d |  |  | 80h |
| 15 | 1.2.3.1 | Document deployment/app configuration instructions |  | 2d | 2006-11-03 | 2006-11-06 | 11 | 14d |  | Dana Zhang | 16h |
| 16 | 1.2.3.2 | CGEMS Tech Guide Edits |  | 3d | 2006-10-25 | 2006-10-27 | 5 | 5d | 0d | Himanso Sahni; Dana Zhang | 48h |
| 17 | 1.2.3.3 | Java Docs/ EA Docs |  | 2d | 2006-10-30 | 2006-10-31 | 16 | 18d |  | Dana Zhang | 16h |
| 18 | 1.2.4 | **Create Test Plan/Install Guide** |  | 18d | 2006-10-18 | 2006-11-10 |  | 0d |  |  | 184h |
| 19 | 1.2.4.1 | write test plan |  | 10d | 2006-10-18 | 2006-10-31 |  | 0d |  | Jenny Glenn | 80h |
| 20 | 1.2.4.2 | Edit install guide / Tech guide |  | 5d | 2006-11-01 | 2006-11-07 | 19 | 0d |  | Jenny Glenn | 40h |
| 21 | 1.2.4.3 | CGEMS install guide |  | 3d | 2006-11-08 | 2006-11-10 | 20 | 0d |  | Jill Hatfield | 24h |
| 22 | 1.2.4.4 | Tech Guide |  | 5d | 2006-10-30 | 2006-11-03 | 16 | 5d |  | Carolyn Klinger | 40h |
| 23 | 1.2.5 | **Deploy to QA** |  | 20d | 2006-10-18 | 2006-11-14 |  | 8d |  |  | 80h |
| 24 | 1.2.5.1 | send the request in for QA deployment |  | 1d | 2006-10-18 | 2006-10-18 |  | 24d | 0d | Ye Wu | 8h |
| 25 | 1.2.5.2 | Test Client jar/ Happy.jsp on QA |  | 3d | 2006-10-19 | 2006-10-23 | 24 | 24d |  | Jenny Glenn | 24h |
| 26 | 1.2.5.3 | Update Download Page/Bundle Zip files |  | 1.5d | 2006-10-18 | 2006-10-19 |  | 26.5d |  | Dana Zhang; Himanso Sahni | 24h |
| 27 | 1.2.5.4 | Release Notes |  | 1d | 2006-10-18 | 2006-10-18 |  | 27d |  | Himanso Sahni | 8h |
| 28 | 1.2.5.5 | CGEMS install guide/ Tech Guide Final | milestone | 0d | 2006-11-10 | 2006-11-10 | 21, 22 | 0d |  | Jill Hatfield; Carolyn Klinger |  |
| 29 | 1.2.5.6 | Test Download Bundle/Zip File/ Java Docs |  | 2d | 2006-11-13 | 2006-11-14 | 28 | 0d |  | Jenny Glenn | 16h |

| ID | WBS | Task | Duration | Start | Finish | Predecessors | Total slack | Resources | Work |
| --- | --- | --- | --- | --- | --- | --- | --- | --- | --- |
| 30 | 1.2.6 | **Deploy to Stage** | 6d | 2006-11-15 | 2006-11-22 |  | 0d |  | 48h |
| 31 | 1.2.6.1 | send the request in for staging deployment | 2d | 2006-11-15 | 2006-11-16 | 29 | 0d | Systems | 16h |
| 32 | 1.2.6.2 | Test Client jar/ Happy.jsp on staging | 2d | 2006-11-17 | 2006-11-20 | 31 | 0d | Jenny Glenn | 16h |
| 33 | 1.2.6.3 | Test Download Bundle/Zip File/ Java Docs | 2d | 2006-11-21 | 2006-11-22 | 32 | 0d | Jenny Glenn | 16h |
| 34 | 1.2.7 | **Deploy To Production** | 2d | 2006-11-23 | 2006-11-24 |  | 0d |  | 16h |
| 35 | 1.2.7.1 | move the cgmes download package to the prodution site | 2d | 2006-11-23 | 2006-11-24 | 33 | 0d | Systems | 16h |
